# UNO Práctica

How a schedule from MS Project changed from version to version. A marks actual dates.

## Version 1 (saved 2017-06-07, file CUATRO_Practica_(Inicial).mpp)

Note of the change: FIN Seccion 1 de la Parte 2

| ID | WBS | Task | Duration | Start | Finish | Predecessors | Total float |
| --- | --- | --- | --- | --- | --- | --- | --- |
| 1 | 1 | **Hitos del Proyecto** | 250.12d | 2017-08-01 | 2018-12-13 |  | 0d |
| 2 |  | Inicio del Proyecto | 0d | 2017-08-01 | 2017-08-01 |  | 250.12d |
| 3 |  | Definición del Sistema | 0d | 2017-08-14 | 2017-08-14 | 11 | 244.12d |
| 4 |  | 1era Entrega Operativa de Software | 0d | 2018-03-16 | 2018-03-16 | 128 | 136.46d |
| 5 |  | 2a Entrega Operativa de Software | 0d | 2018-05-21 | 2018-05-21 | 184 | 104.12d |
| 6 |  | 3era Entrega Operativa de Software | 0d | 2018-10-17 | 2018-10-17 | 241 | 28.79d |
| 7 |  | 4a Entrega Operativa de Software | 0d | 2018-11-30 | 2018-11-30 | 285 | 6.46d |
| 8 |  | Fin del Proyecto | 0d | 2018-12-13 | 2018-12-13 | 295 | 0d |
| 10 | 2 | **Fase Inicial** | 10.38d | 2017-08-01 | 2017-08-22 |  | 3.71d |
| 11 | 2.1 | **Workflow de Requisitos** | 6d | 2017-08-01 | 2017-08-14 |  | 3.71d |
| 12 | 2.1.1 | **Analizar el Problema** | 4d | 2017-08-01 | 2017-08-09 |  | 5.71d |
| 13 |  | Glorario de Términos | 1d | 2017-08-01 | 2017-08-03 |  | 8.71d |
| 14 |  | Identificar Actores | 3d | 2017-08-01 | 2017-08-08 |  | 6.71d |
| 15 |  | Identificar Casos de Uso | 4d | 2017-08-01 | 2017-08-09 | 14FF | 5.71d |
| 16 | 2.1.2 | **Definición del Sistema** | 5d | 2017-08-01 | 2017-08-10 |  | 3.71d |
| 17 |  | Estructurar Modelo Casos de Uso | 5d | 2017-08-01 | 2017-08-10 |  | 3.71d |
| 18 | 2.1.3 | **Definición de Alcance** | 1d | 2017-08-10 | 2017-08-14 |  | 3.71d |
| 19 |  | Priorizar Casos de Uso | 1d | 2017-08-10 | 2017-08-14 | 17 | 3.71d |
| 20 |  | Administración de Cambios de Requisitos | 1d | 2017-08-07 | 2017-08-08 |  | 6.33d |
| 21 | 2.2 | **Workflow Administración de la Configuración** | 4.5d | 2017-08-14 | 2017-08-22 |  | 239.75d |
| 22 |  | Establecer el Proceso de Admon de la Configuración | 1d | 2017-08-14 | 2017-08-15 |  | 243.25d |
| 23 |  | Establecer el Entorno de Admon de la Configuración | 4d | 2017-08-14 | 2017-08-22 |  | 239.75d |
| 24 | 2.3 | **Workflow Administración del Proyecto** | 6d | 2017-08-07 | 2017-08-17 |  | 241.75d |
| 25 |  | Análisis de Riesgos | 5d | 2017-08-08 | 2017-08-17 | 26 | 241.75d |
| 26 |  | Desarrollar la Planificación del Proyecto | 1d | 2017-08-07 | 2017-08-08 |  | 241.75d |
| 27 | 3 | **Fase de Elaboración** | 140d | 2017-08-14 | 2018-05-21 | 11 | 3.71d |
| 28 | 3.1 | **Iteración 1** | 56.33d | 2017-08-14 | 2017-12-04 |  | 3.71d |
| 29 | 3.1.1 | **Workflow de Requisitos** | 10d | 2017-08-14 | 2017-09-01 |  | 3.71d |
| 30 | 3.1.1.1 | **Analizar el Problema** | 0.5d | 2017-08-14 | 2017-08-15 |  | 13.21d |
| 31 |  | Glorario de Términos | 0.5d | 2017-08-14 | 2017-08-15 |  | 13.21d |
| 32 | 3.1.1.2 | **Definición del Sistema** | 6d | 2017-08-14 | 2017-08-24 |  | 3.71d |
| 33 |  | Detallar Casos de Uso | 5d | 2017-08-14 | 2017-08-23 |  | 3.71d |
| 34 |  | Prototipar Casos de Uso | 6d | 2017-08-14 | 2017-08-24 |  | 7.71d |
| 35 | 3.1.1.3 | **Definición de Alcance** | 0.5d | 2017-08-14 | 2017-08-15 |  | 13.21d |
| 36 |  | Priorizar Casos de Uso | 0.5d | 2017-08-14 | 2017-08-15 |  | 13.21d |
| 37 | 3.1.1.4 | **Refinar la Definición del Sistema** | 10d | 2017-08-14 | 2017-09-01 |  | 3.71d |
| 38 |  | Refinar Casos de Uso | 5d | 2017-08-23 | 2017-09-01 | 33 | 3.71d |
| 39 |  | Refinar Modelo de Caso de Uso | 2.5d | 2017-08-14 | 2017-08-17 |  | 10.71d |
| 40 |  | Administración de Cambios de Requisitos | 0.5d | 2017-08-17 | 2017-08-18 | 39 | 10.71d |
| 41 | 3.1.2 | **Workflow de Análisis** | 22.33d | 2017-09-01 | 2017-10-17 | 29 | 3.71d |
| 42 | 3.1.2.1 | **Análisis del Comportamiento** | 22.33d | 2017-09-01 | 2017-10-17 |  | 3.71d |
| 43 | 3.1.2.1.1 | **Análisis de la Arquitectura** | 7d | 2017-09-01 | 2017-09-15 |  | 3.71d |
| 44 |  | Identifica Clases de Análisis | 5d | 2017-09-01 | 2017-09-12 | 17FS-3d | 3.71d |
| 45 |  | Identificar Paquetes de Análisis | 2d | 2017-09-12 | 2017-09-15 | 44 | 19.04d |
| 46 | 3.1.2.1.2 | **Análisis de Casos de Uso** | 13.33d | 2017-09-11 | 2017-10-06 |  | 3.71d |
| 47 |  | Diagramas de Clases de Análisis | 10d | 2017-09-11 | 2017-09-29 | 44FS-1d | 7.04d |
| 48 |  | Diagramas de Colaboración | 13.33d | 2017-09-11 | 2017-10-06 | 44FS-1d | 3.71d |
| 49 | 3.1.2.1.3 | **Análisis de Paquetes** | 1d | 2017-10-06 | 2017-10-09 |  | 5.71d |
| 50 |  | Paquetes de Análisis | 1d | 2017-10-06 | 2017-10-09 | 47, 48 | 5.71d |
| 51 | 3.1.2.1.4 | **Análisis de Datos** | 3d | 2017-10-06 | 2017-10-12 |  | 3.71d |
| 52 |  | Análisis de la BD | 3d | 2017-10-06 | 2017-10-12 | 47, 48 | 3.71d |
| 53 | 3.1.2.1.5 | **Refinar el Análisis** | 7.33d | 2017-10-03 | 2017-10-17 |  | 3.71d |
| 54 |  | Refinar Diagramas de Clases de Análisis | 1.67d | 2017-10-03 | 2017-10-05 | 47FS+1d | 9.38d |
| 55 |  | Refinar Diagramas de Colaboración | 3.33d | 2017-10-09 | 2017-10-16 | 48FS+1d | 4.38d |
| 56 |  | Refinar BD | 1d | 2017-10-13 | 2017-10-17 | 52FS+1d | 3.71d |
| 57 |  | Refinar Paquetes de Análisis | 1d | 2017-10-11 | 2017-10-12 | 50FS+1d | 5.71d |
| 58 | 3.1.3 | **Workflow de Diseño** | 24d | 2017-10-17 | 2017-12-04 | 41 | 87.38d |
| 59 | 3.1.3.1 | **Diseño de la Arquitectura** | 6d | 2017-10-17 | 2017-10-27 |  | 87.38d |
| 60 |  | Identifica Clases de Diseño | 6d | 2017-10-17 | 2017-10-27 | 54, 55 | 87.38d |
| 61 |  | Identificar Paquetes de Diseño | 3d | 2017-10-17 | 2017-10-23 | 54, 55 | 108.38d |
| 62 | 3.1.3.2 | **Diseño de Casos de Uso** | 13d | 2017-10-27 | 2017-11-23 |  | 87.38d |
| 63 |  | Diagramas de Clases de Diseño | 9d | 2017-10-27 | 2017-11-15 | 60 | 91.38d |
| 64 |  | Diagramas de Colaboración | 13d | 2017-10-27 | 2017-11-23 | 60 | 87.38d |
| 65 |  | Diagrama de Despliegue | 3d | 2017-10-27 | 2017-11-03 | 60 | 101.88d |
| 66 |  | Diagramas de Estado | 2d | 2017-10-27 | 2017-11-01 | 60 | 102.38d |
| 67 | 3.1.3.3 | **Diseño de Paquetes** | 2d | 2017-11-23 | 2017-11-28 |  | 89.88d |
| 68 |  | Paquetes de Diseño | 2d | 2017-11-23 | 2017-11-28 | 63, 64 | 89.88d |
| 69 | 3.1.3.4 | **Diseño de Datos** | 3d | 2017-11-23 | 2017-11-29 |  | 87.38d |
| 70 |  | Diseño de la BD | 3d | 2017-11-23 | 2017-11-29 | 63, 64 | 87.38d |
| 71 | 3.1.3.5 | **Refinar el Diseño** | 16d | 2017-11-01 | 2017-12-04 |  | 87.38d |

| ID | WBS | Task | Duration | Start | Finish | Predecessors | Total float |
| --- | --- | --- | --- | --- | --- | --- | --- |
| 72 |  | Refinar Diagramas de Clases de Diseño | 1.5d | 2017-11-15 | 2017-11-17 | 63 | 94.88d |
| 73 |  | Refinar Diagramas de Colaboración | 1d | 2017-11-23 | 2017-11-24 | 64 | 91.38d |
| 74 |  | Refinar Diagrama de Despliegue | 0.5d | 2017-11-03 | 2017-11-03 | 65 | 101.88d |
| 75 |  | Refinar Diagramas de Estado | 1d | 2017-11-01 | 2017-11-03 | 66 | 102.38d |
| 76 |  | Refinar BD | 2d | 2017-11-29 | 2017-12-04 | 70 | 87.38d |
| 77 |  | Refinar Paquetes de Diseño | 0.5d | 2017-11-28 | 2017-11-29 | 68 | 89.88d |
| 78 | 3.2 | **Iteración 2** | 75.33d | 2017-10-17 | 2018-03-16 | 41 | 3.71d |
| 79 | 3.2.1 | **Workflow de Requisitos** | 10d | 2017-10-17 | 2017-11-06 |  | 3.71d |
| 80 | 3.2.1.1 | **Analizar el Problema** | 0.5d | 2017-10-17 | 2017-10-18 |  | 13.21d |
| 81 |  | Glorario de Términos | 0.5d | 2017-10-17 | 2017-10-18 |  | 13.21d |
| 82 | 3.2.1.2 | **Definición del Sistema** | 6d | 2017-10-17 | 2017-10-27 |  | 3.71d |
| 83 |  | Detallar Casos de Uso | 5d | 2017-10-17 | 2017-10-26 |  | 3.71d |
| 84 |  | Prototipar Casos de Uso | 6d | 2017-10-17 | 2017-10-27 |  | 7.71d |
| 85 | 3.2.1.3 | **Definición de Alcance** | 0.5d | 2017-10-17 | 2017-10-18 |  | 13.21d |
| 86 |  | Priorizar Casos de Uso | 0.5d | 2017-10-17 | 2017-10-18 |  | 13.21d |
| 87 | 3.2.1.4 | **Refinar la Definición del Sistema** | 10d | 2017-10-17 | 2017-11-06 |  | 3.71d |
| 88 |  | Refinar Casos de Uso | 5d | 2017-10-26 | 2017-11-06 | 83 | 3.71d |
| 89 |  | Refinar Modelo de Caso de Uso | 7.33d | 2017-10-17 | 2017-11-01 |  | 5.88d |
| 90 |  | Administración de Cambios de Requisitos | 0.5d | 2017-11-01 | 2017-11-01 | 89 | 5.88d |
| 91 | 3.2.2 | **Workflow de Análisis** | 22.33d | 2017-11-06 | 2017-12-20 | 79 | 3.71d |
| 92 | 3.2.2.1 | **Análisis del Comportamiento** | 22.33d | 2017-11-06 | 2017-12-20 |  | 3.71d |
| 93 | 3.2.2.1.1 | **Análisis de la Arquitectura** | 7d | 2017-11-06 | 2017-11-20 |  | 3.71d |
| 94 |  | Identifica Clases de Análisis | 5d | 2017-11-06 | 2017-11-15 |  | 3.71d |
| 95 |  | Identificar Paquetes de Análisis | 2d | 2017-11-15 | 2017-11-20 | 94 | 19.04d |
| 96 | 3.2.2.1.2 | **Análisis de Casos de Uso** | 13.33d | 2017-11-14 | 2017-12-11 |  | 3.71d |
| 97 |  | Diagramas de Clases de Análisis | 10d | 2017-11-14 | 2017-12-04 | 94FS-1d | 7.04d |
| 98 |  | Diagramas de Colaboración | 13.33d | 2017-11-14 | 2017-12-11 | 94FS-1d | 3.71d |
| 99 | 3.2.2.1.3 | **Análisis de Paquetes** | 1d | 2017-12-11 | 2017-12-13 |  | 5.71d |
| 100 |  | Paquetes de Análisis | 1d | 2017-12-11 | 2017-12-13 | 97, 98 | 5.71d |
| 101 | 3.2.2.1.4 | **Análisis de Datos** | 3d | 2017-12-11 | 2017-12-15 |  | 3.71d |
| 102 |  | Análisis de la BD | 3d | 2017-12-11 | 2017-12-15 | 97, 98 | 3.71d |
| 103 | 3.2.2.1.5 | **Refinar el Análisis** | 7.33d | 2017-12-06 | 2017-12-20 |  | 3.71d |
| 104 |  | Refinar Diagramas de Clases de Análisis | 1.67d | 2017-12-06 | 2017-12-08 | 97FS+1d | 9.38d |
| 105 |  | Refinar Diagramas de Colaboración | 3.33d | 2017-12-13 | 2017-12-19 | 98FS+1d | 4.38d |
| 106 |  | Refinar BD | 1d | 2017-12-19 | 2017-12-20 | 102FS+1d | 3.71d |
| 107 |  | Refinar Paquetes de Análisis | 1d | 2017-12-14 | 2017-12-15 | 100FS+1d | 5.71d |
| 108 | 3.2.3 | **Workflow de Diseño** | 24d | 2017-12-20 | 2018-02-07 | 91 | 36.04d |
| 109 | 3.2.3.1 | **Diseño de la Arquitectura** | 6d | 2017-12-20 | 2018-01-02 |  | 36.04d |
| 110 |  | Identifica Clases de Diseño | 6d | 2017-12-20 | 2018-01-02 | 104, 105 | 36.04d |
| 111 |  | Identificar Paquetes de Diseño | 3d | 2017-12-20 | 2017-12-27 | 104, 105 | 57.04d |
| 112 | 3.2.3.2 | **Diseño de Casos de Uso** | 13d | 2018-01-02 | 2018-01-26 |  | 36.04d |
| 113 |  | Diagramas de Clases de Diseño | 9d | 2018-01-02 | 2018-01-19 | 110 | 40.04d |
| 114 |  | Diagramas de Colaboración | 13d | 2018-01-02 | 2018-01-26 | 110 | 36.04d |
| 115 |  | Diagrama de Despliegue | 3d | 2018-01-02 | 2018-01-08 | 110 | 50.54d |
| 116 |  | Diagramas de Estado | 2d | 2018-01-02 | 2018-01-05 | 110 | 51.04d |
| 117 | 3.2.3.3 | **Diseño de Paquetes** | 2d | 2018-01-26 | 2018-01-31 |  | 38.54d |
| 118 |  | Paquetes de Diseño | 2d | 2018-01-26 | 2018-01-31 | 113, 114 | 38.54d |
| 119 | 3.2.3.4 | **Diseño de Datos** | 3d | 2018-01-26 | 2018-02-02 |  | 36.04d |
| 120 |  | Diseño de la BD | 3d | 2018-01-26 | 2018-02-02 | 113, 114 | 36.04d |
| 121 | 3.2.3.5 | **Refinar el Diseño** | 16d | 2018-01-05 | 2018-02-07 |  | 36.04d |
| 122 |  | Refinar Diagramas de Clases de Diseño | 1.5d | 2018-01-19 | 2018-01-23 | 113 | 43.54d |
| 123 |  | Refinar Diagramas de Colaboración | 1d | 2018-01-26 | 2018-01-30 | 114 | 40.04d |
| 124 |  | Refinar Diagrama de Despliegue | 0.5d | 2018-01-08 | 2018-01-09 | 115 | 50.54d |
| 125 |  | Refinar Diagramas de Estado | 1d | 2018-01-05 | 2018-01-08 | 116 | 51.04d |
| 126 |  | Refinar BD | 2d | 2018-02-02 | 2018-02-07 | 120 | 36.04d |
| 127 |  | Refinar Paquetes de Diseño | 0.5d | 2018-01-31 | 2018-02-01 | 118 | 38.54d |
| 128 | 3.2.4 | **Workflow de Implementación y Pruebas** | 19d | 2018-02-07 | 2018-03-16 | 108 | 36.04d |
| 129 |  | Desarrollo de estructura de aplicación | 15d | 2018-02-13 | 2018-03-14 | 130 | 36.04d |
| 130 |  | Planeación de la integración de Sistemas | 2d | 2018-02-08 | 2018-02-13 | 131 | 36.04d |
| 131 |  | Plan de Pruebas | 1d | 2018-02-07 | 2018-02-08 |  | 36.04d |
| 132 |  | Integración de Sistemas | 1d | 2018-03-14 | 2018-03-16 | 129 | 36.04d |
| 133 |  | Ejecución de Pruebas | 1d | 2018-03-14 | 2018-03-16 | 129 | 36.04d |
| 134 | 3.3 | **Iteración 3** | 75.33d | 2017-12-20 | 2018-05-21 | 91 | 3.71d |
| 135 | 3.3.1 | **Workflow de Requisitos** | 10d | 2017-12-20 | 2018-01-10 |  | 3.71d |
| 136 | 3.3.1.1 | **Analizar el Problema** | 0.5d | 2017-12-20 | 2017-12-21 |  | 13.21d |
| 137 |  | Glorario de Términos | 0.5d | 2017-12-20 | 2017-12-21 |  | 13.21d |
| 138 | 3.3.1.2 | **Definición del Sistema** | 6d | 2017-12-20 | 2018-01-02 |  | 3.71d |
| 139 |  | Detallar Casos de Uso | 5d | 2017-12-20 | 2017-12-29 |  | 3.71d |
| 140 |  | Prototipar Casos de Uso | 6d | 2017-12-20 | 2018-01-02 |  | 7.71d |
| 141 | 3.3.1.3 | **Definición de Alcance** | 0.5d | 2017-12-20 | 2017-12-21 |  | 13.21d |

| ID | WBS | Task | Duration | Start | Finish | Predecessors | Total float |
| --- | --- | --- | --- | --- | --- | --- | --- |
| 142 |  | Priorizar Casos de Uso | 0.5d | 2017-12-20 | 2017-12-21 |  | 13.21d |
| 143 | 3.3.1.4 | **Refinar la Definición del Sistema** | 10d | 2017-12-20 | 2018-01-10 |  | 3.71d |
| 144 |  | Refinar Casos de Uso | 5d | 2017-12-29 | 2018-01-10 | 139 | 3.71d |
| 145 |  | Refinar Modelo de Caso de Uso | 7d | 2017-12-20 | 2018-01-03 |  | 6.21d |
| 146 |  | Administración de Cambios de Requisitos | 0.5d | 2018-01-03 | 2018-01-04 | 145 | 6.21d |
| 147 | 3.3.2 | **Workflow de Análisis** | 22.33d | 2018-01-10 | 2018-02-22 | 135 | 3.71d |
| 148 | 3.3.2.1 | **Análisis del Comportamiento** | 22.33d | 2018-01-10 | 2018-02-22 |  | 3.71d |
| 149 | 3.3.2.1.1 | **Análisis de la Arquitectura** | 7d | 2018-01-10 | 2018-01-24 |  | 3.71d |
| 150 |  | Identifica Clases de Análisis | 5d | 2018-01-10 | 2018-01-19 |  | 3.71d |
| 151 |  | Identificar Paquetes de Análisis | 2d | 2018-01-19 | 2018-01-24 | 150 | 19.04d |
| 152 | 3.3.2.1.2 | **Análisis de Casos de Uso** | 13.33d | 2018-01-17 | 2018-02-13 |  | 3.71d |
| 153 |  | Diagramas de Clases de Análisis | 10d | 2018-01-17 | 2018-02-07 | 150FS-1d | 7.04d |
| 154 |  | Diagramas de Colaboración | 13.33d | 2018-01-17 | 2018-02-13 | 150FS-1d | 3.71d |
| 155 | 3.3.2.1.3 | **Análisis de Paquetes** | 1d | 2018-02-13 | 2018-02-15 |  | 5.71d |
| 156 |  | Paquetes de Análisis | 1d | 2018-02-13 | 2018-02-15 | 153, 154 | 5.71d |
| 157 | 3.3.2.1.4 | **Análisis de Datos** | 3d | 2018-02-13 | 2018-02-20 |  | 3.71d |
| 158 |  | Análisis de la BD | 3d | 2018-02-13 | 2018-02-20 | 153, 154 | 3.71d |
| 159 | 3.3.2.1.5 | **Refinar el Análisis** | 7.33d | 2018-02-08 | 2018-02-22 |  | 3.71d |
| 160 |  | Refinar Diagramas de Clases de Análisis | 1.67d | 2018-02-08 | 2018-02-12 | 153FS+1d | 9.38d |
| 161 |  | Refinar Diagramas de Colaboración | 3.33d | 2018-02-15 | 2018-02-21 | 154FS+1d | 4.38d |
| 162 |  | Refinar BD | 1d | 2018-02-21 | 2018-02-22 | 158FS+1d | 3.71d |
| 163 |  | Refinar Paquetes de Análisis | 1d | 2018-02-16 | 2018-02-20 | 156FS+1d | 5.71d |
| 164 | 3.3.3 | **Workflow de Diseño** | 24d | 2018-02-22 | 2018-04-12 | 147 | 3.71d |
| 165 | 3.3.3.1 | **Diseño de la Arquitectura** | 6d | 2018-02-22 | 2018-03-07 |  | 3.71d |
| 166 |  | Identifica Clases de Diseño | 6d | 2018-02-22 | 2018-03-07 | 160, 161 | 3.71d |
| 167 |  | Identificar Paquetes de Diseño | 3d | 2018-02-22 | 2018-03-01 | 160, 161 | 24.71d |
| 168 | 3.3.3.2 | **Diseño de Casos de Uso** | 13d | 2018-03-07 | 2018-04-03 |  | 3.71d |
| 169 |  | Diagramas de Clases de Diseño | 9d | 2018-03-07 | 2018-03-26 | 166 | 7.71d |
| 170 |  | Diagramas de Colaboración | 13d | 2018-03-07 | 2018-04-03 | 166 | 3.71d |
| 171 |  | Diagrama de Despliegue | 3d | 2018-03-07 | 2018-03-13 | 166 | 18.21d |
| 172 |  | Diagramas de Estado | 2d | 2018-03-07 | 2018-03-12 | 166 | 18.71d |
| 173 | 3.3.3.3 | **Diseño de Paquetes** | 2d | 2018-04-03 | 2018-04-05 |  | 6.21d |
| 174 |  | Paquetes de Diseño | 2d | 2018-04-03 | 2018-04-05 | 169, 170 | 6.21d |
| 175 | 3.3.3.4 | **Diseño de Datos** | 3d | 2018-04-03 | 2018-04-09 |  | 3.71d |
| 176 |  | Diseño de la BD | 3d | 2018-04-03 | 2018-04-09 | 169, 170 | 3.71d |
| 177 | 3.3.3.5 | **Refinar el Diseño** | 16d | 2018-03-12 | 2018-04-12 |  | 3.71d |
| 178 |  | Refinar Diagramas de Clases de Diseño | 1.5d | 2018-03-26 | 2018-03-28 | 169 | 11.21d |
| 179 |  | Refinar Diagramas de Colaboración | 1d | 2018-04-03 | 2018-04-04 | 170 | 7.71d |
| 180 |  | Refinar Diagrama de Despliegue | 0.5d | 2018-03-13 | 2018-03-14 | 171 | 18.21d |
| 181 |  | Refinar Diagramas de Estado | 1d | 2018-03-12 | 2018-03-13 | 172 | 18.71d |
| 182 |  | Refinar BD | 2d | 2018-04-09 | 2018-04-12 | 176 | 3.71d |
| 183 |  | Refinar Paquetes de Diseño | 0.5d | 2018-04-05 | 2018-04-06 | 174 | 6.21d |
| 184 | 3.3.4 | **Workflow de Implementación y Pruebas** | 19d | 2018-04-12 | 2018-05-21 | 164 | 3.71d |
| 185 |  | Desarrollo de estructura de aplicación | 15d | 2018-04-18 | 2018-05-17 | 186 | 3.71d |
| 186 |  | Planeación de la integración de Sistemas | 2d | 2018-04-13 | 2018-04-18 | 187 | 3.71d |
| 187 |  | Plan de Pruebas | 1d | 2018-04-12 | 2018-04-13 |  | 3.71d |
| 188 |  | Integración de Sistemas | 1d | 2018-05-17 | 2018-05-21 | 185 | 3.71d |
| 189 |  | Ejecución de Pruebas | 1d | 2018-05-17 | 2018-05-21 | 185 | 3.71d |
| 190 | 4 | **Fase de Construcción** | 97.67d | 2018-05-21 | 2018-11-30 | 27 | 3.71d |
| 191 | 4.1 | **Iteración 4** | 75.33d | 2018-05-21 | 2018-10-17 | 147 | 3.71d |
| 192 | 4.1.1 | **Workflow de Requisitos** | 10d | 2018-05-21 | 2018-06-08 |  | 3.71d |
| 193 | 4.1.1.1 | **Analizar el Problema** | 0.5d | 2018-05-21 | 2018-05-22 |  | 13.21d |
| 194 |  | Glorario de Términos | 0.5d | 2018-05-21 | 2018-05-22 |  | 13.21d |
| 195 | 4.1.1.2 | **Definición del Sistema** | 6d | 2018-05-21 | 2018-05-31 |  | 3.71d |
| 196 |  | Detallar Casos de Uso | 5d | 2018-05-21 | 2018-05-30 |  | 3.71d |
| 197 |  | Prototipar Casos de Uso | 6d | 2018-05-21 | 2018-05-31 |  | 7.71d |
| 198 | 4.1.1.3 | **Definición de Alcance** | 0.5d | 2018-05-21 | 2018-05-22 |  | 13.21d |
| 199 |  | Priorizar Casos de Uso | 0.5d | 2018-05-21 | 2018-05-22 |  | 13.21d |
| 200 | 4.1.1.4 | **Refinar la Definición del Sistema** | 10d | 2018-05-21 | 2018-06-08 |  | 3.71d |
| 201 |  | Refinar Casos de Uso | 5d | 2018-05-30 | 2018-06-08 | 196 | 3.71d |
| 202 |  | Refinar Modelo de Caso de Uso | 7.08d | 2018-05-21 | 2018-06-04 |  | 6.12d |
| 203 |  | Administración de Cambios de Requisitos | 0.5d | 2018-06-04 | 2018-06-05 | 202 | 6.12d |
| 204 | 4.1.2 | **Workflow de Análisis** | 22.33d | 2018-06-08 | 2018-07-24 | 192 | 3.71d |
| 205 | 4.1.2.1 | **Análisis del Comportamiento** | 22.33d | 2018-06-08 | 2018-07-24 |  | 3.71d |
| 206 | 4.1.2.1.1 | **Análisis de la Arquitectura** | 7d | 2018-06-08 | 2018-06-22 |  | 3.71d |
| 207 |  | Identifica Clases de Análisis | 5d | 2018-06-08 | 2018-06-19 |  | 3.71d |
| 208 |  | Identificar Paquetes de Análisis | 2d | 2018-06-19 | 2018-06-22 | 207 | 19.04d |
| 209 | 4.1.2.1.2 | **Análisis de Casos de Uso** | 13.33d | 2018-06-18 | 2018-07-13 |  | 3.71d |
| 210 |  | Diagramas de Clases de Análisis | 10d | 2018-06-18 | 2018-07-06 | 207FS-1d | 7.04d |
| 211 |  | Diagramas de Colaboración | 13.33d | 2018-06-18 | 2018-07-13 | 207FS-1d | 3.71d |

| ID | WBS | Task | Duration | Start | Finish | Predecessors | Total float |
| --- | --- | --- | --- | --- | --- | --- | --- |
| 212 | 4.1.2.1.3 | **Análisis de Paquetes** | 1d | 2018-07-13 | 2018-07-16 |  | 5.71d |
| 213 |  | Paquetes de Análisis | 1d | 2018-07-13 | 2018-07-16 | 210, 211 | 5.71d |
| 214 | 4.1.2.1.4 | **Análisis de Datos** | 3d | 2018-07-13 | 2018-07-19 |  | 3.71d |
| 215 |  | Análisis de la BD | 3d | 2018-07-13 | 2018-07-19 | 210, 211 | 3.71d |
| 216 | 4.1.2.1.5 | **Refinar el Análisis** | 7.33d | 2018-07-10 | 2018-07-24 |  | 3.71d |
| 217 |  | Refinar Diagramas de Clases de Análisis | 1.67d | 2018-07-10 | 2018-07-12 | 210FS+1d | 9.38d |
| 218 |  | Refinar Diagramas de Colaboración | 3.33d | 2018-07-16 | 2018-07-23 | 211FS+1d | 4.38d |
| 219 |  | Refinar BD | 1d | 2018-07-20 | 2018-07-24 | 215FS+1d | 3.71d |
| 220 |  | Refinar Paquetes de Análisis | 1d | 2018-07-18 | 2018-07-19 | 213FS+1d | 5.71d |
| 221 | 4.1.3 | **Workflow de Diseño** | 24d | 2018-07-24 | 2018-09-10 | 204 | 28.79d |
| 222 | 4.1.3.1 | **Diseño de la Arquitectura** | 6d | 2018-07-24 | 2018-08-03 |  | 28.79d |
| 223 |  | Identifica Clases de Diseño | 6d | 2018-07-24 | 2018-08-03 | 217, 218 | 28.79d |
| 224 |  | Identificar Paquetes de Diseño | 3d | 2018-07-24 | 2018-07-30 | 217, 218 | 49.79d |
| 225 | 4.1.3.2 | **Diseño de Casos de Uso** | 13d | 2018-08-03 | 2018-08-30 |  | 28.79d |
| 226 |  | Diagramas de Clases de Diseño | 9d | 2018-08-03 | 2018-08-22 | 223 | 32.79d |
| 227 |  | Diagramas de Colaboración | 13d | 2018-08-03 | 2018-08-30 | 223 | 28.79d |
| 228 |  | Diagrama de Despliegue | 3d | 2018-08-03 | 2018-08-10 | 223 | 43.29d |
| 229 |  | Diagramas de Estado | 2d | 2018-08-03 | 2018-08-08 | 223 | 43.79d |
| 230 | 4.1.3.3 | **Diseño de Paquetes** | 2d | 2018-08-30 | 2018-09-04 |  | 31.29d |
| 231 |  | Paquetes de Diseño | 2d | 2018-08-30 | 2018-09-04 | 226, 227 | 31.29d |
| 232 | 4.1.3.4 | **Diseño de Datos** | 3d | 2018-08-30 | 2018-09-05 |  | 28.79d |
| 233 |  | Diseño de la BD | 3d | 2018-08-30 | 2018-09-05 | 226, 227 | 28.79d |
| 234 | 4.1.3.5 | **Refinar el Diseño** | 16d | 2018-08-08 | 2018-09-10 |  | 28.79d |
| 235 |  | Refinar Diagramas de Clases de Diseño | 1.5d | 2018-08-22 | 2018-08-24 | 226 | 36.29d |
| 236 |  | Refinar Diagramas de Colaboración | 1d | 2018-08-30 | 2018-08-31 | 227 | 32.79d |
| 237 |  | Refinar Diagrama de Despliegue | 0.5d | 2018-08-10 | 2018-08-10 | 228 | 43.29d |
| 238 |  | Refinar Diagramas de Estado | 1d | 2018-08-08 | 2018-08-10 | 229 | 43.79d |
| 239 |  | Refinar BD | 2d | 2018-09-05 | 2018-09-10 | 233 | 28.79d |
| 240 |  | Refinar Paquetes de Diseño | 0.5d | 2018-09-04 | 2018-09-05 | 231 | 31.29d |
| 241 | 4.1.4 | **Workflow de Implementación y Pruebas** | 19d | 2018-09-10 | 2018-10-17 | 221 | 28.79d |
| 242 |  | Desarrollo de estructura de aplicación | 15d | 2018-09-14 | 2018-10-16 | 243 | 28.79d |
| 243 |  | Planeación de la integración de Sistemas | 2d | 2018-09-12 | 2018-09-14 | 244 | 28.79d |
| 244 |  | Plan de Pruebas | 1d | 2018-09-10 | 2018-09-12 |  | 28.79d |
| 245 |  | Integración de Sistemas | 1d | 2018-10-16 | 2018-10-17 | 242 | 28.79d |
| 246 |  | Ejecución de Pruebas | 1d | 2018-10-16 | 2018-10-17 | 242 | 28.79d |
| 247 | 4.2 | **Iteración 5** | 65.33d | 2018-07-24 | 2018-11-30 | 204 | 3.71d |
| 248 | 4.2.1 | **Workflow de Análisis** | 22.33d | 2018-07-24 | 2018-09-06 |  | 3.71d |
| 249 | 4.2.1.1 | **Análisis del Comportamiento** | 22.33d | 2018-07-24 | 2018-09-06 |  | 3.71d |
| 250 | 4.2.1.1.1 | **Análisis de la Arquitectura** | 7d | 2018-07-24 | 2018-08-07 |  | 3.71d |
| 251 |  | Identifica Clases de Análisis | 5d | 2018-07-24 | 2018-08-02 |  | 3.71d |
| 252 |  | Identificar Paquetes de Análisis | 2d | 2018-08-02 | 2018-08-07 | 251 | 19.04d |
| 253 | 4.2.1.1.2 | **Análisis de Casos de Uso** | 13.33d | 2018-08-01 | 2018-08-28 |  | 3.71d |
| 254 |  | Diagramas de Clases de Análisis | 10d | 2018-08-01 | 2018-08-21 | 251FS-1d | 7.04d |
| 255 |  | Diagramas de Colaboración | 13.33d | 2018-08-01 | 2018-08-28 | 251FS-1d | 3.71d |
| 256 | 4.2.1.1.3 | **Análisis de Paquetes** | 1d | 2018-08-28 | 2018-08-29 |  | 5.71d |
| 257 |  | Paquetes de Análisis | 1d | 2018-08-28 | 2018-08-29 | 254, 255 | 5.71d |
| 258 | 4.2.1.1.4 | **Análisis de Datos** | 3d | 2018-08-28 | 2018-09-03 |  | 3.71d |
| 259 |  | Análisis de la BD | 3d | 2018-08-28 | 2018-09-03 | 254, 255 | 3.71d |
| 260 | 4.2.1.1.5 | **Refinar el Análisis** | 7.33d | 2018-08-22 | 2018-09-06 |  | 3.71d |
| 261 |  | Refinar Diagramas de Clases de Análisis | 1.67d | 2018-08-22 | 2018-08-27 | 254FS+1d | 9.38d |
| 262 |  | Refinar Diagramas de Colaboración | 3.33d | 2018-08-29 | 2018-09-05 | 255FS+1d | 4.38d |
| 263 |  | Refinar BD | 1d | 2018-09-05 | 2018-09-06 | 259FS+1d | 3.71d |
| 264 |  | Refinar Paquetes de Análisis | 1d | 2018-08-31 | 2018-09-03 | 257FS+1d | 5.71d |
| 265 | 4.2.2 | **Workflow de Diseño** | 24d | 2018-09-06 | 2018-10-24 | 248 | 3.71d |
| 266 | 4.2.2.1 | **Diseño de la Arquitectura** | 6d | 2018-09-06 | 2018-09-19 |  | 3.71d |
| 267 |  | Identifica Clases de Diseño | 6d | 2018-09-06 | 2018-09-19 | 261, 262 | 3.71d |
| 268 |  | Identificar Paquetes de Diseño | 3d | 2018-09-06 | 2018-09-12 | 261, 262 | 24.71d |
| 269 | 4.2.2.2 | **Diseño de Casos de Uso** | 13d | 2018-09-19 | 2018-10-15 |  | 3.71d |
| 270 |  | Diagramas de Clases de Diseño | 9d | 2018-09-19 | 2018-10-05 | 267 | 7.71d |
| 271 |  | Diagramas de Colaboración | 13d | 2018-09-19 | 2018-10-15 | 267 | 3.71d |
| 272 |  | Diagrama de Despliegue | 3d | 2018-09-19 | 2018-09-25 | 267 | 18.21d |
| 273 |  | Diagramas de Estado | 2d | 2018-09-19 | 2018-09-21 | 267 | 18.71d |
| 274 | 4.2.2.3 | **Diseño de Paquetes** | 2d | 2018-10-15 | 2018-10-18 |  | 6.21d |
| 275 |  | Paquetes de Diseño | 2d | 2018-10-15 | 2018-10-18 | 270, 271 | 6.21d |
| 276 | 4.2.2.4 | **Diseño de Datos** | 3d | 2018-10-15 | 2018-10-19 |  | 3.71d |
| 277 |  | Diseño de la BD | 3d | 2018-10-15 | 2018-10-19 | 270, 271 | 3.71d |
| 278 | 4.2.2.5 | **Refinar el Diseño** | 16d | 2018-09-21 | 2018-10-24 |  | 3.71d |
| 279 |  | Refinar Diagramas de Clases de Diseño | 1.5d | 2018-10-05 | 2018-10-10 | 270 | 11.21d |
| 280 |  | Refinar Diagramas de Colaboración | 1d | 2018-10-15 | 2018-10-17 | 271 | 7.71d |
| 281 |  | Refinar Diagrama de Despliegue | 0.5d | 2018-09-25 | 2018-09-26 | 272 | 18.21d |

| ID | WBS | Task | Duration | Start | Finish | Predecessors | Total float |
| --- | --- | --- | --- | --- | --- | --- | --- |
| 282 |  | Refinar Diagramas de Estado | 1d | 2018-09-21 | 2018-09-25 | 273 | 18.71d |
| 283 |  | Refinar BD | 2d | 2018-10-19 | 2018-10-24 | 277 | 3.71d |
| 284 |  | Refinar Paquetes de Diseño | 0.5d | 2018-10-18 | 2018-10-19 | 275 | 6.21d |
| 285 | 4.2.3 | **Workflow de Implementación y Pruebas** | 19d | 2018-10-24 | 2018-11-30 | 265 | 3.71d |
| 286 |  | Desarrollo de estructura de aplicación | 15d | 2018-10-31 | 2018-11-29 | 287 | 3.71d |
| 287 |  | Planeación de la integración de Sistemas | 2d | 2018-10-26 | 2018-10-31 | 288 | 3.71d |
| 288 |  | Plan de Pruebas | 1d | 2018-10-24 | 2018-10-26 |  | 3.71d |
| 289 |  | Integración de Sistemas | 1d | 2018-11-29 | 2018-11-30 | 286 | 3.71d |
| 290 |  | Ejecución de Pruebas | 1d | 2018-11-29 | 2018-11-30 | 286 | 3.71d |
| 291 | 5 | **Fase de Transición** | 6.46d | 2018-11-30 | 2018-12-13 | 247 | 0d |
| 292 |  | Instalación del Software | 1d | 2018-12-10 | 2018-12-11 |  | 2d |
| 293 |  | Migración | 4d | 2018-11-30 | 2018-12-06 |  | 3.5d |
| 294 |  | Capacitación | 3d | 2018-12-06 | 2018-12-11 |  | 1.25d |
| 295 |  | Comprobación de Aceptación | 1d | 2018-12-13 | 2018-12-13 |  | 0d |

## Version 2 (saved 2017-06-07, file TRES_Practica.mpp)

Note of the change: se corrige el archivo base

Last finish stays 2018-12-13.

Changed:

| ID | Task | Other |
| --- | --- | --- |
| 1 | **Hitos del Proyecto** | baseline start 2017-11-10 → 2003-11-10; baseline finish 2019-03-26 → 2005-03-23 |
| 2 | Inicio del Proyecto | baseline start 2017-11-10 → 2003-11-10; baseline finish 2017-11-10 → 2003-11-10 |
| 3 | Definición del Sistema | baseline start 2017-11-22 → 2003-11-20; baseline finish 2017-11-22 → 2003-11-20 |
| 4 | 1era Entrega Operativa de Software | baseline start 2018-06-26 → 2004-06-23; baseline finish 2018-06-26 → 2004-06-23 |
| 5 | 2a Entrega Operativa de Software | baseline start 2018-08-29 → 2004-08-26; baseline finish 2018-08-29 → 2004-08-26 |
| 6 | 3era Entrega Operativa de Software | baseline start 2019-01-28 → 2005-01-25; baseline finish 2019-01-28 → 2005-01-25 |
| 7 | 4a Entrega Operativa de Software | baseline start 2019-03-13 → 2005-03-10; baseline finish 2019-03-13 → 2005-03-10 |
| 8 | Fin del Proyecto | baseline start 2019-03-26 → 2005-03-23; baseline finish 2019-03-26 → 2005-03-23 |
| 10 | **Fase Inicial** | baseline start 2017-11-10 → 2003-11-10; baseline finish 2017-12-01 → 2003-11-26 |
| 11 | **Workflow de Requisitos** | baseline start 2017-11-10 → 2003-11-10; baseline finish 2017-11-22 → 2003-11-20 |
| 12 | **Analizar el Problema** | baseline start 2017-11-10 → 2003-11-11; baseline finish 2017-11-17 → 2003-11-18 |
| 13 | Glorario de Términos | baseline start 2017-11-10 → 2003-11-17; baseline finish 2017-11-13 → 2003-11-18 |
| 14 | Identificar Actores | baseline start 2017-11-10 → 2003-11-11; baseline finish 2017-11-16 → 2003-11-17 |
| 15 | Identificar Casos de Uso | baseline start 2017-11-10 → 2003-11-11; baseline finish 2017-11-17 → 2003-11-18 |
| 16 | **Definición del Sistema** | baseline start 2017-11-10 → 2003-11-10; baseline finish 2017-11-21 → 2003-11-19 |
| 17 | Estructurar Modelo Casos de Uso | baseline start 2017-11-10 → 2003-11-10; baseline finish 2017-11-21 → 2003-11-19 |
| 18 | **Definición de Alcance** | baseline start 2017-11-21 → 2003-11-19; baseline finish 2017-11-22 → 2003-11-20 |
| 19 | Priorizar Casos de Uso | baseline start 2017-11-21 → 2003-11-19; baseline finish 2017-11-22 → 2003-11-20 |
| 20 | Administración de Cambios de Requisitos | baseline start 2017-11-13 → 2003-11-19; baseline finish 2017-11-14 → 2003-11-20 |
| 21 | **Workflow Administración de la Configuración** | baseline start 2017-11-22 → 2003-11-19; baseline finish 2017-12-01 → 2003-11-26 |
| 22 | Establecer el Proceso de Admon de la Configuración | baseline start 2017-11-22 → 2003-11-25; baseline finish 2017-11-23 → 2003-11-26 |
| 23 | Establecer el Entorno de Admon de la Configuración | baseline start 2017-11-23 → 2003-11-19; baseline finish 2017-12-01 → 2003-11-26 |
| 24 | **Workflow Administración del Proyecto** | baseline start 2017-11-15 → 2003-11-10; baseline finish 2017-11-27 → 2003-11-20 |
| 25 | Análisis de Riesgos | baseline start 2017-11-16 → 2003-11-11; baseline finish 2017-11-27 → 2003-11-20 |
| 26 | Desarrollar la Planificación del Proyecto | baseline start 2017-11-15 → 2003-11-10; baseline finish 2017-11-16 → 2003-11-11 |
| 27 | **Fase de Elaboración** | baseline start 2017-11-22 → 2003-11-21; baseline finish 2018-08-29 → 2004-08-26 |
| 28 | **Iteración 1** | baseline start 2017-11-22 → 2003-11-21; baseline finish 2018-03-15 → 2004-03-12 |
| 29 | **Workflow de Requisitos** | baseline start 2017-11-22 → 2003-11-21; baseline finish 2017-12-12 → 2003-12-11 |
| 30 | **Analizar el Problema** | baseline start 2017-11-22 → 2003-11-21; baseline finish 2017-11-23 → 2003-11-21 |
| 31 | Glorario de Términos | baseline start 2017-11-22 → 2003-11-21; baseline finish 2017-11-23 → 2003-11-21 |
| 32 | **Definición del Sistema** | baseline start 2017-11-22 → 2003-11-21; baseline finish 2017-12-05 → 2003-12-03 |
| 33 | Detallar Casos de Uso | baseline start 2017-11-22 → 2003-11-21; baseline finish 2017-12-01 → 2003-12-02 |
| 34 | Prototipar Casos de Uso | baseline start 2017-11-22 → 2003-11-21; baseline finish 2017-12-05 → 2003-12-03 |
| 35 | **Definición de Alcance** | baseline start 2017-11-22 → 2003-11-21; baseline finish 2017-11-23 → 2003-11-21 |
| 36 | Priorizar Casos de Uso | baseline start 2017-11-22 → 2003-11-21; baseline finish 2017-11-23 → 2003-11-21 |
| 37 | **Refinar la Definición del Sistema** | baseline start 2017-11-22 → 2003-11-21; baseline finish 2017-12-12 → 2003-12-11 |
| 38 | Refinar Casos de Uso | baseline start 2017-12-01 → 2003-12-02; baseline finish 2017-12-12 → 2003-12-11 |
| 39 | Refinar Modelo de Caso de Uso | baseline start 2017-11-22 → 2003-11-21; baseline finish 2017-11-28 → 2003-11-26 |
| 40 | Administración de Cambios de Requisitos | baseline start 2017-11-28 → 2003-11-26; baseline finish 2017-11-28 → 2003-11-27 |
| 41 | **Workflow de Análisis** | baseline start 2017-12-13 → 2003-12-11; baseline finish 2018-01-25 → 2004-01-26 |
| 42 | **Análisis del Comportamiento** | baseline start 2017-12-13 → 2003-12-11; baseline finish 2018-01-25 → 2004-01-26 |
| 43 | **Análisis de la Arquitectura** | baseline start 2017-12-13 → 2003-12-11; baseline finish 2017-12-26 → 2003-12-25 |
| 44 | Identifica Clases de Análisis | baseline start 2017-12-13 → 2003-12-11; baseline finish 2017-12-21 → 2003-12-22 |
| 45 | Identificar Paquetes de Análisis | baseline start 2017-12-22 → 2003-12-22; baseline finish 2017-12-26 → 2003-12-25 |
| 46 | **Análisis de Casos de Uso** | baseline start 2017-12-20 → 2003-12-19; baseline finish 2018-01-16 → 2004-01-15 |
| 47 | Diagramas de Clases de Análisis | baseline start 2017-12-20 → 2003-12-19; baseline finish 2018-01-09 → 2004-01-08 |
| 48 | Diagramas de Colaboración | baseline start 2017-12-20 → 2003-12-19; baseline finish 2018-01-16 → 2004-01-15 |
| 49 | **Análisis de Paquetes** | baseline start 2018-01-16 → 2004-01-15; baseline finish 2018-01-18 → 2004-01-16 |
| 50 | Paquetes de Análisis | baseline start 2018-01-16 → 2004-01-15; baseline finish 2018-01-18 → 2004-01-16 |
| 51 | **Análisis de Datos** | baseline start 2018-01-16 → 2004-01-15; baseline finish 2018-01-23 → 2004-01-21 |
| 52 | Análisis de la BD | baseline start 2018-01-16 → 2004-01-15; baseline finish 2018-01-23 → 2004-01-21 |
| 53 | **Refinar el Análisis** | baseline start 2018-01-11 → 2004-01-09; baseline finish 2018-01-25 → 2004-01-26 |
| 54 | Refinar Diagramas de Clases de Análisis | baseline start 2018-01-11 → 2004-01-09; baseline finish 2018-01-15 → 2004-01-14 |
| 55 | Refinar Diagramas de Colaboración | baseline start 2018-01-18 → 2004-01-16; baseline finish 2018-01-24 → 2004-01-23 |
| 56 | Refinar BD | baseline start 2018-01-24 → 2004-01-22; baseline finish 2018-01-25 → 2004-01-26 |
| 57 | Refinar Paquetes de Análisis | baseline start 2018-01-19 → 2004-01-20; baseline finish 2018-01-23 → 2004-01-21 |
| 58 | **Workflow de Diseño** | baseline start 2018-01-25 → 2004-01-26; baseline finish 2018-03-15 → 2004-03-12 |
| 59 | **Diseño de la Arquitectura** | baseline start 2018-01-25 → 2004-01-26; baseline finish 2018-02-07 → 2004-02-05 |
| 60 | Identifica Clases de Diseño | baseline start 2018-01-25 → 2004-01-26; baseline finish 2018-02-07 → 2004-02-05 |
| 61 | Identificar Paquetes de Diseño | baseline start 2018-01-25 → 2004-01-26; baseline finish 2018-02-01 → 2004-01-30 |
| 62 | **Diseño de Casos de Uso** | baseline start 2018-02-07 → 2004-02-05; baseline finish 2018-03-06 → 2004-03-03 |
| 63 | Diagramas de Clases de Diseño | baseline start 2018-02-07 → 2004-02-05; baseline finish 2018-02-26 → 2004-02-24 |
| 64 | Diagramas de Colaboración | baseline start 2018-02-07 → 2004-02-05; baseline finish 2018-03-06 → 2004-03-03 |
| 65 | Diagrama de Despliegue | baseline start 2018-02-07 → 2004-02-05; baseline finish 2018-02-13 → 2004-02-12 |
| 66 | Diagramas de Estado | baseline start 2018-02-07 → 2004-02-05; baseline finish 2018-02-12 → 2004-02-10 |
| 67 | **Diseño de Paquetes** | baseline start 2018-03-06 → 2004-03-03; baseline finish 2018-03-08 → 2004-03-08 |
| 68 | Paquetes de Diseño | baseline start 2018-03-06 → 2004-03-03; baseline finish 2018-03-08 → 2004-03-08 |
| 69 | **Diseño de Datos** | baseline start 2018-03-06 → 2004-03-03; baseline finish 2018-03-12 → 2004-03-09 |
| 70 | Diseño de la BD | baseline start 2018-03-06 → 2004-03-03; baseline finish 2018-03-12 → 2004-03-09 |
| 71 | **Refinar el Diseño** | baseline start 2018-02-12 → 2004-02-10; baseline finish 2018-03-15 → 2004-03-12 |

| ID | Task | Other |
| --- | --- | --- |
| 72 | Refinar Diagramas de Clases de Diseño | baseline start 2018-02-26 → 2004-02-24; baseline finish 2018-02-28 → 2004-02-26 |
| 73 | Refinar Diagramas de Colaboración | baseline start 2018-03-06 → 2004-03-03; baseline finish 2018-03-07 → 2004-03-04 |
| 74 | Refinar Diagrama de Despliegue | baseline start 2018-02-13 → 2004-02-12; baseline finish 2018-02-14 → 2004-02-12 |
| 75 | Refinar Diagramas de Estado | baseline start 2018-02-12 → 2004-02-10; baseline finish 2018-02-13 → 2004-02-12 |
| 76 | Refinar BD | baseline start 2018-03-12 → 2004-03-09; baseline finish 2018-03-15 → 2004-03-12 |
| 77 | Refinar Paquetes de Diseño | baseline start 2018-03-08 → 2004-03-08; baseline finish 2018-03-09 → 2004-03-09 |
| 78 | **Iteración 2** | baseline start 2018-01-25 → 2004-01-26; baseline finish 2018-06-26 → 2004-06-23 |
| 79 | **Workflow de Requisitos** | baseline start 2018-01-25 → 2004-01-26; baseline finish 2018-02-15 → 2004-02-13 |
| 80 | **Analizar el Problema** | baseline start 2018-01-25 → 2004-01-26; baseline finish 2018-01-26 → 2004-01-27 |
| 81 | Glorario de Términos | baseline start 2018-01-25 → 2004-01-26; baseline finish 2018-01-26 → 2004-01-27 |
| 82 | **Definición del Sistema** | baseline start 2018-01-25 → 2004-01-26; baseline finish 2018-02-07 → 2004-02-05 |
| 83 | Detallar Casos de Uso | baseline start 2018-01-25 → 2004-01-26; baseline finish 2018-02-06 → 2004-02-04 |
| 84 | Prototipar Casos de Uso | baseline start 2018-01-25 → 2004-01-26; baseline finish 2018-02-07 → 2004-02-05 |
| 85 | **Definición de Alcance** | baseline start 2018-01-25 → 2004-01-26; baseline finish 2018-01-26 → 2004-01-27 |
| 86 | Priorizar Casos de Uso | baseline start 2018-01-25 → 2004-01-26; baseline finish 2018-01-26 → 2004-01-27 |
| 87 | **Refinar la Definición del Sistema** | baseline start 2018-01-25 → 2004-01-26; baseline finish 2018-02-15 → 2004-02-13 |
| 88 | Refinar Casos de Uso | baseline start 2018-02-06 → 2004-02-04; baseline finish 2018-02-15 → 2004-02-13 |
| 89 | Refinar Modelo de Caso de Uso | baseline start 2018-01-25 → 2004-01-26; baseline finish 2018-02-09 → 2004-02-09 |
| 90 | Administración de Cambios de Requisitos | baseline start 2018-02-09 → 2004-02-09; baseline finish 2018-02-09 → 2004-02-10 |
| 91 | **Workflow de Análisis** | baseline start 2018-02-15 → 2004-02-13; baseline finish 2018-03-30 → 2004-03-30 |
| 92 | **Análisis del Comportamiento** | baseline start 2018-02-15 → 2004-02-13; baseline finish 2018-03-30 → 2004-03-30 |
| 93 | **Análisis de la Arquitectura** | baseline start 2018-02-15 → 2004-02-13; baseline finish 2018-03-01 → 2004-02-27 |
| 94 | Identifica Clases de Análisis | baseline start 2018-02-15 → 2004-02-13; baseline finish 2018-02-26 → 2004-02-24 |
| 95 | Identificar Paquetes de Análisis | baseline start 2018-02-26 → 2004-02-24; baseline finish 2018-03-01 → 2004-02-27 |
| 96 | **Análisis de Casos de Uso** | baseline start 2018-02-22 → 2004-02-23; baseline finish 2018-03-21 → 2004-03-19 |
| 97 | Diagramas de Clases de Análisis | baseline start 2018-02-22 → 2004-02-23; baseline finish 2018-03-15 → 2004-03-12 |
| 98 | Diagramas de Colaboración | baseline start 2018-02-22 → 2004-02-23; baseline finish 2018-03-21 → 2004-03-19 |
| 99 | **Análisis de Paquetes** | baseline start 2018-03-21 → 2004-03-19; baseline finish 2018-03-23 → 2004-03-22 |
| 100 | Paquetes de Análisis | baseline start 2018-03-21 → 2004-03-19; baseline finish 2018-03-23 → 2004-03-22 |
| 101 | **Análisis de Datos** | baseline start 2018-03-21 → 2004-03-19; baseline finish 2018-03-28 → 2004-03-25 |
| 102 | Análisis de la BD | baseline start 2018-03-21 → 2004-03-19; baseline finish 2018-03-28 → 2004-03-25 |
| 103 | **Refinar el Análisis** | baseline start 2018-03-16 → 2004-03-16; baseline finish 2018-03-30 → 2004-03-30 |
| 104 | Refinar Diagramas de Clases de Análisis | baseline start 2018-03-16 → 2004-03-16; baseline finish 2018-03-20 → 2004-03-18 |
| 105 | Refinar Diagramas de Colaboración | baseline start 2018-03-23 → 2004-03-22; baseline finish 2018-03-29 → 2004-03-29 |
| 106 | Refinar BD | baseline start 2018-03-29 → 2004-03-26; baseline finish 2018-03-30 → 2004-03-30 |
| 107 | Refinar Paquetes de Análisis | baseline start 2018-03-26 → 2004-03-24; baseline finish 2018-03-28 → 2004-03-25 |
| 108 | **Workflow de Diseño** | baseline start 2018-03-30 → 2004-03-30; baseline finish 2018-05-18 → 2004-05-17 |
| 109 | **Diseño de la Arquitectura** | baseline start 2018-03-30 → 2004-03-30; baseline finish 2018-04-12 → 2004-04-09 |
| 110 | Identifica Clases de Diseño | baseline start 2018-03-30 → 2004-03-30; baseline finish 2018-04-12 → 2004-04-09 |
| 111 | Identificar Paquetes de Diseño | baseline start 2018-03-30 → 2004-03-30; baseline finish 2018-04-06 → 2004-04-05 |
| 112 | **Diseño de Casos de Uso** | baseline start 2018-04-12 → 2004-04-09; baseline finish 2018-05-09 → 2004-05-06 |
| 113 | Diagramas de Clases de Diseño | baseline start 2018-04-12 → 2004-04-09; baseline finish 2018-05-01 → 2004-04-28 |
| 114 | Diagramas de Colaboración | baseline start 2018-04-12 → 2004-04-09; baseline finish 2018-05-09 → 2004-05-06 |
| 115 | Diagrama de Despliegue | baseline start 2018-04-12 → 2004-04-09; baseline finish 2018-04-18 → 2004-04-16 |
| 116 | Diagramas de Estado | baseline start 2018-04-12 → 2004-04-09; baseline finish 2018-04-17 → 2004-04-14 |
| 117 | **Diseño de Paquetes** | baseline start 2018-05-09 → 2004-05-06; baseline finish 2018-05-11 → 2004-05-11 |
| 118 | Paquetes de Diseño | baseline start 2018-05-09 → 2004-05-06; baseline finish 2018-05-11 → 2004-05-11 |
| 119 | **Diseño de Datos** | baseline start 2018-05-09 → 2004-05-06; baseline finish 2018-05-15 → 2004-05-12 |
| 120 | Diseño de la BD | baseline start 2018-05-09 → 2004-05-06; baseline finish 2018-05-15 → 2004-05-12 |
| 121 | **Refinar el Diseño** | baseline start 2018-04-17 → 2004-04-14; baseline finish 2018-05-18 → 2004-05-17 |
| 122 | Refinar Diagramas de Clases de Diseño | baseline start 2018-05-01 → 2004-04-28; baseline finish 2018-05-03 → 2004-04-30 |
| 123 | Refinar Diagramas de Colaboración | baseline start 2018-05-09 → 2004-05-06; baseline finish 2018-05-10 → 2004-05-07 |
| 124 | Refinar Diagrama de Despliegue | baseline start 2018-04-18 → 2004-04-16; baseline finish 2018-04-19 → 2004-04-16 |
| 125 | Refinar Diagramas de Estado | baseline start 2018-04-17 → 2004-04-14; baseline finish 2018-04-18 → 2004-04-16 |
| 126 | Refinar BD | baseline start 2018-05-15 → 2004-05-12; baseline finish 2018-05-18 → 2004-05-17 |
| 127 | Refinar Paquetes de Diseño | baseline start 2018-05-11 → 2004-05-11; baseline finish 2018-05-14 → 2004-05-12 |
| 128 | **Workflow de Implementación y Pruebas** | baseline start 2018-05-18 → 2004-05-17; baseline finish 2018-06-26 → 2004-06-23 |
| 129 | Desarrollo de estructura de aplicación | baseline start 2018-05-24 → 2004-05-21; baseline finish 2018-06-22 → 2004-06-22 |
| 130 | Planeación de la integración de Sistemas | baseline start 2018-05-21 → 2004-05-19; baseline finish 2018-05-24 → 2004-05-21 |
| 131 | Plan de Pruebas | baseline start 2018-05-18 → 2004-05-17; baseline finish 2018-05-21 → 2004-05-19 |
| 132 | Integración de Sistemas | baseline start 2018-06-22 → 2004-06-22; baseline finish 2018-06-26 → 2004-06-23 |
| 133 | Ejecución de Pruebas | baseline start 2018-06-22 → 2004-06-22; baseline finish 2018-06-26 → 2004-06-23 |
| 134 | **Iteración 3** | baseline start 2018-03-30 → 2004-03-30; baseline finish 2018-08-29 → 2004-08-26 |
| 135 | **Workflow de Requisitos** | baseline start 2018-03-30 → 2004-03-30; baseline finish 2018-04-20 → 2004-04-19 |
| 136 | **Analizar el Problema** | baseline start 2018-03-30 → 2004-03-30; baseline finish 2018-04-02 → 2004-03-31 |
| 137 | Glorario de Términos | baseline start 2018-03-30 → 2004-03-30; baseline finish 2018-04-02 → 2004-03-31 |
| 138 | **Definición del Sistema** | baseline start 2018-03-30 → 2004-03-30; baseline finish 2018-04-12 → 2004-04-09 |
| 139 | Detallar Casos de Uso | baseline start 2018-03-30 → 2004-03-30; baseline finish 2018-04-11 → 2004-04-08 |
| 140 | Prototipar Casos de Uso | baseline start 2018-03-30 → 2004-03-30; baseline finish 2018-04-12 → 2004-04-09 |
| 141 | **Definición de Alcance** | baseline start 2018-03-30 → 2004-03-30; baseline finish 2018-04-02 → 2004-03-31 |

| ID | Task | Other |
| --- | --- | --- |
| 142 | Priorizar Casos de Uso | baseline start 2018-03-30 → 2004-03-30; baseline finish 2018-04-02 → 2004-03-31 |
| 143 | **Refinar la Definición del Sistema** | baseline start 2018-03-30 → 2004-03-30; baseline finish 2018-04-20 → 2004-04-19 |
| 144 | Refinar Casos de Uso | baseline start 2018-04-11 → 2004-04-08; baseline finish 2018-04-20 → 2004-04-19 |
| 145 | Refinar Modelo de Caso de Uso | baseline start 2018-03-30 → 2004-03-30; baseline finish 2018-04-13 → 2004-04-13 |
| 146 | Administración de Cambios de Requisitos | baseline start 2018-04-13 → 2004-04-13; baseline finish 2018-04-16 → 2004-04-14 |
| 147 | **Workflow de Análisis** | baseline start 2018-04-20 → 2004-04-19; baseline finish 2018-06-05 → 2004-06-02 |
| 148 | **Análisis del Comportamiento** | baseline start 2018-04-20 → 2004-04-19; baseline finish 2018-06-05 → 2004-06-02 |
| 149 | **Análisis de la Arquitectura** | baseline start 2018-04-20 → 2004-04-19; baseline finish 2018-05-04 → 2004-05-03 |
| 150 | Identifica Clases de Análisis | baseline start 2018-04-20 → 2004-04-19; baseline finish 2018-05-01 → 2004-04-28 |
| 151 | Identificar Paquetes de Análisis | baseline start 2018-05-01 → 2004-04-28; baseline finish 2018-05-04 → 2004-05-03 |
| 152 | **Análisis de Casos de Uso** | baseline start 2018-04-27 → 2004-04-27; baseline finish 2018-05-24 → 2004-05-24 |
| 153 | Diagramas de Clases de Análisis | baseline start 2018-04-27 → 2004-04-27; baseline finish 2018-05-18 → 2004-05-17 |
| 154 | Diagramas de Colaboración | baseline start 2018-04-27 → 2004-04-27; baseline finish 2018-05-24 → 2004-05-24 |
| 155 | **Análisis de Paquetes** | baseline start 2018-05-25 → 2004-05-24; baseline finish 2018-05-28 → 2004-05-25 |
| 156 | Paquetes de Análisis | baseline start 2018-05-25 → 2004-05-24; baseline finish 2018-05-28 → 2004-05-25 |
| 157 | **Análisis de Datos** | baseline start 2018-05-25 → 2004-05-24; baseline finish 2018-05-31 → 2004-05-28 |
| 158 | Análisis de la BD | baseline start 2018-05-25 → 2004-05-24; baseline finish 2018-05-31 → 2004-05-28 |
| 159 | **Refinar el Análisis** | baseline start 2018-05-21 → 2004-05-19; baseline finish 2018-06-05 → 2004-06-02 |
| 160 | Refinar Diagramas de Clases de Análisis | baseline start 2018-05-21 → 2004-05-19; baseline finish 2018-05-24 → 2004-05-21 |
| 161 | Refinar Diagramas de Colaboración | baseline start 2018-05-28 → 2004-05-26; baseline finish 2018-06-04 → 2004-06-01 |
| 162 | Refinar BD | baseline start 2018-06-01 → 2004-06-01; baseline finish 2018-06-05 → 2004-06-02 |
| 163 | Refinar Paquetes de Análisis | baseline start 2018-05-30 → 2004-05-27; baseline finish 2018-05-31 → 2004-05-28 |
| 164 | **Workflow de Diseño** | baseline start 2018-06-05 → 2004-06-02; baseline finish 2018-07-23 → 2004-07-20 |
| 165 | **Diseño de la Arquitectura** | baseline start 2018-06-05 → 2004-06-02; baseline finish 2018-06-15 → 2004-06-15 |
| 166 | Identifica Clases de Diseño | baseline start 2018-06-05 → 2004-06-02; baseline finish 2018-06-15 → 2004-06-15 |
| 167 | Identificar Paquetes de Diseño | baseline start 2018-06-05 → 2004-06-02; baseline finish 2018-06-11 → 2004-06-08 |
| 168 | **Diseño de Casos de Uso** | baseline start 2018-06-15 → 2004-06-15; baseline finish 2018-07-12 → 2004-07-09 |
| 169 | Diagramas de Clases de Diseño | baseline start 2018-06-15 → 2004-06-15; baseline finish 2018-07-04 → 2004-07-01 |
| 170 | Diagramas de Colaboración | baseline start 2018-06-15 → 2004-06-15; baseline finish 2018-07-12 → 2004-07-09 |
| 171 | Diagrama de Despliegue | baseline start 2018-06-15 → 2004-06-15; baseline finish 2018-06-21 → 2004-06-21 |
| 172 | Diagramas de Estado | baseline start 2018-06-15 → 2004-06-15; baseline finish 2018-06-20 → 2004-06-17 |
| 173 | **Diseño de Paquetes** | baseline start 2018-07-12 → 2004-07-09; baseline finish 2018-07-17 → 2004-07-14 |
| 174 | Paquetes de Diseño | baseline start 2018-07-12 → 2004-07-09; baseline finish 2018-07-17 → 2004-07-14 |
| 175 | **Diseño de Datos** | baseline start 2018-07-12 → 2004-07-09; baseline finish 2018-07-18 → 2004-07-15 |
| 176 | Diseño de la BD | baseline start 2018-07-12 → 2004-07-09; baseline finish 2018-07-18 → 2004-07-15 |
| 177 | **Refinar el Diseño** | baseline start 2018-06-20 → 2004-06-18; baseline finish 2018-07-23 → 2004-07-20 |
| 178 | Refinar Diagramas de Clases de Diseño | baseline start 2018-07-04 → 2004-07-02; baseline finish 2018-07-06 → 2004-07-06 |
| 179 | Refinar Diagramas de Colaboración | baseline start 2018-07-12 → 2004-07-09; baseline finish 2018-07-13 → 2004-07-13 |
| 180 | Refinar Diagrama de Despliegue | baseline start 2018-06-22 → 2004-06-21; baseline finish 2018-06-22 → 2004-06-22 |
| 181 | Refinar Diagramas de Estado | baseline start 2018-06-20 → 2004-06-18; baseline finish 2018-06-21 → 2004-06-21 |
| 182 | Refinar BD | baseline start 2018-07-18 → 2004-07-16; baseline finish 2018-07-23 → 2004-07-20 |
| 183 | Refinar Paquetes de Diseño | baseline start 2018-07-17 → 2004-07-14; baseline finish 2018-07-17 → 2004-07-15 |
| 184 | **Workflow de Implementación y Pruebas** | baseline start 2018-07-23 → 2004-07-21; baseline finish 2018-08-29 → 2004-08-26 |
| 185 | Desarrollo de estructura de aplicación | baseline start 2018-07-27 → 2004-07-27; baseline finish 2018-08-28 → 2004-08-25 |
| 186 | Planeación de la integración de Sistemas | baseline start 2018-07-25 → 2004-07-22; baseline finish 2018-07-27 → 2004-07-27 |
| 187 | Plan de Pruebas | baseline start 2018-07-23 → 2004-07-21; baseline finish 2018-07-24 → 2004-07-22 |
| 188 | Integración de Sistemas | baseline start 2018-08-28 → 2004-08-25; baseline finish 2018-08-29 → 2004-08-26 |
| 189 | Ejecución de Pruebas | baseline start 2018-08-28 → 2004-08-25; baseline finish 2018-08-29 → 2004-08-26 |
| 190 | **Fase de Construcción** | baseline start 2018-08-29 → 2004-08-27; baseline finish 2019-03-13 → 2005-03-10 |
| 191 | **Iteración 4** | baseline start 2018-08-29 → 2004-08-27; baseline finish 2019-01-28 → 2005-01-25 |
| 192 | **Workflow de Requisitos** | baseline start 2018-08-29 → 2004-08-27; baseline finish 2018-09-18 → 2004-09-16 |
| 193 | **Analizar el Problema** | baseline start 2018-08-29 → 2004-08-27; baseline finish 2018-08-30 → 2004-08-27 |
| 194 | Glorario de Términos | baseline start 2018-08-29 → 2004-08-27; baseline finish 2018-08-30 → 2004-08-27 |
| 195 | **Definición del Sistema** | baseline start 2018-08-29 → 2004-08-27; baseline finish 2018-09-11 → 2004-09-08 |
| 196 | Detallar Casos de Uso | baseline start 2018-08-29 → 2004-08-27; baseline finish 2018-09-07 → 2004-09-07 |
| 197 | Prototipar Casos de Uso | baseline start 2018-08-29 → 2004-08-27; baseline finish 2018-09-11 → 2004-09-08 |
| 198 | **Definición de Alcance** | baseline start 2018-08-29 → 2004-08-27; baseline finish 2018-08-30 → 2004-08-27 |
| 199 | Priorizar Casos de Uso | baseline start 2018-08-29 → 2004-08-27; baseline finish 2018-08-30 → 2004-08-27 |
| 200 | **Refinar la Definición del Sistema** | baseline start 2018-08-29 → 2004-08-27; baseline finish 2018-09-18 → 2004-09-16 |
| 201 | Refinar Casos de Uso | baseline start 2018-09-07 → 2004-09-07; baseline finish 2018-09-18 → 2004-09-16 |
| 202 | Refinar Modelo de Caso de Uso | baseline start 2018-08-29 → 2004-08-27; baseline finish 2018-09-12 → 2004-09-10 |
| 203 | Administración de Cambios de Requisitos | baseline start 2018-09-12 → 2004-09-10; baseline finish 2018-09-13 → 2004-09-10 |
| 204 | **Workflow de Análisis** | baseline start 2018-09-19 → 2004-09-16; baseline finish 2018-11-01 → 2004-11-01 |
| 205 | **Análisis del Comportamiento** | baseline start 2018-09-19 → 2004-09-16; baseline finish 2018-11-01 → 2004-11-01 |
| 206 | **Análisis de la Arquitectura** | baseline start 2018-09-19 → 2004-09-16; baseline finish 2018-10-02 → 2004-09-30 |
| 207 | Identifica Clases de Análisis | baseline start 2018-09-19 → 2004-09-16; baseline finish 2018-09-27 → 2004-09-27 |
| 208 | Identificar Paquetes de Análisis | baseline start 2018-09-28 → 2004-09-27; baseline finish 2018-10-02 → 2004-09-30 |
| 209 | **Análisis de Casos de Uso** | baseline start 2018-09-26 → 2004-09-24; baseline finish 2018-10-23 → 2004-10-21 |
| 210 | Diagramas de Clases de Análisis | baseline start 2018-09-26 → 2004-09-24; baseline finish 2018-10-16 → 2004-10-14 |
| 211 | Diagramas de Colaboración | baseline start 2018-09-26 → 2004-09-24; baseline finish 2018-10-23 → 2004-10-21 |

| ID | Task | Other |
| --- | --- | --- |
| 212 | **Análisis de Paquetes** | baseline start 2018-10-23 → 2004-10-21; baseline finish 2018-10-25 → 2004-10-22 |
| 213 | Paquetes de Análisis | baseline start 2018-10-23 → 2004-10-21; baseline finish 2018-10-25 → 2004-10-22 |
| 214 | **Análisis de Datos** | baseline start 2018-10-23 → 2004-10-21; baseline finish 2018-10-30 → 2004-10-27 |
| 215 | Análisis de la BD | baseline start 2018-10-23 → 2004-10-21; baseline finish 2018-10-30 → 2004-10-27 |
| 216 | **Refinar el Análisis** | baseline start 2018-10-18 → 2004-10-15; baseline finish 2018-11-01 → 2004-11-01 |
| 217 | Refinar Diagramas de Clases de Análisis | baseline start 2018-10-18 → 2004-10-15; baseline finish 2018-10-22 → 2004-10-20 |
| 218 | Refinar Diagramas de Colaboración | baseline start 2018-10-25 → 2004-10-22; baseline finish 2018-10-31 → 2004-10-29 |
| 219 | Refinar BD | baseline start 2018-10-31 → 2004-10-28; baseline finish 2018-11-01 → 2004-11-01 |
| 220 | Refinar Paquetes de Análisis | baseline start 2018-10-26 → 2004-10-26; baseline finish 2018-10-30 → 2004-10-27 |
| 221 | **Workflow de Diseño** | baseline start 2018-11-01 → 2004-11-01; baseline finish 2018-12-20 → 2004-12-17 |
| 222 | **Diseño de la Arquitectura** | baseline start 2018-11-01 → 2004-11-01; baseline finish 2018-11-14 → 2004-11-11 |
| 223 | Identifica Clases de Diseño | baseline start 2018-11-01 → 2004-11-01; baseline finish 2018-11-14 → 2004-11-11 |
| 224 | Identificar Paquetes de Diseño | baseline start 2018-11-01 → 2004-11-01; baseline finish 2018-11-08 → 2004-11-05 |
| 225 | **Diseño de Casos de Uso** | baseline start 2018-11-14 → 2004-11-11; baseline finish 2018-12-11 → 2004-12-08 |
| 226 | Diagramas de Clases de Diseño | baseline start 2018-11-14 → 2004-11-11; baseline finish 2018-12-03 → 2004-11-30 |
| 227 | Diagramas de Colaboración | baseline start 2018-11-14 → 2004-11-11; baseline finish 2018-12-11 → 2004-12-08 |
| 228 | Diagrama de Despliegue | baseline start 2018-11-14 → 2004-11-11; baseline finish 2018-11-20 → 2004-11-18 |
| 229 | Diagramas de Estado | baseline start 2018-11-14 → 2004-11-11; baseline finish 2018-11-19 → 2004-11-16 |
| 230 | **Diseño de Paquetes** | baseline start 2018-12-11 → 2004-12-08; baseline finish 2018-12-13 → 2004-12-13 |
| 231 | Paquetes de Diseño | baseline start 2018-12-11 → 2004-12-08; baseline finish 2018-12-13 → 2004-12-13 |
| 232 | **Diseño de Datos** | baseline start 2018-12-11 → 2004-12-08; baseline finish 2018-12-17 → 2004-12-14 |
| 233 | Diseño de la BD | baseline start 2018-12-11 → 2004-12-08; baseline finish 2018-12-17 → 2004-12-14 |
| 234 | **Refinar el Diseño** | baseline start 2018-11-19 → 2004-11-16; baseline finish 2018-12-20 → 2004-12-17 |
| 235 | Refinar Diagramas de Clases de Diseño | baseline start 2018-12-03 → 2004-11-30; baseline finish 2018-12-05 → 2004-12-02 |
| 236 | Refinar Diagramas de Colaboración | baseline start 2018-12-11 → 2004-12-08; baseline finish 2018-12-12 → 2004-12-09 |
| 237 | Refinar Diagrama de Despliegue | baseline start 2018-11-20 → 2004-11-18; baseline finish 2018-11-21 → 2004-11-18 |
| 238 | Refinar Diagramas de Estado | baseline start 2018-11-19 → 2004-11-16; baseline finish 2018-11-20 → 2004-11-18 |
| 239 | Refinar BD | baseline start 2018-12-17 → 2004-12-14; baseline finish 2018-12-20 → 2004-12-17 |
| 240 | Refinar Paquetes de Diseño | baseline start 2018-12-13 → 2004-12-13; baseline finish 2018-12-14 → 2004-12-14 |
| 241 | **Workflow de Implementación y Pruebas** | baseline start 2018-12-20 → 2004-12-17; baseline finish 2019-01-28 → 2005-01-25 |
| 242 | Desarrollo de estructura de aplicación | baseline start 2018-12-26 → 2004-12-23; baseline finish 2019-01-24 → 2005-01-24 |
| 243 | Planeación de la integración de Sistemas | baseline start 2018-12-21 → 2004-12-21; baseline finish 2018-12-26 → 2004-12-23 |
| 244 | Plan de Pruebas | baseline start 2018-12-20 → 2004-12-17; baseline finish 2018-12-21 → 2004-12-21 |
| 245 | Integración de Sistemas | baseline start 2019-01-24 → 2005-01-24; baseline finish 2019-01-28 → 2005-01-25 |
| 246 | Ejecución de Pruebas | baseline start 2019-01-24 → 2005-01-24; baseline finish 2019-01-28 → 2005-01-25 |
| 247 | **Iteración 5** | baseline start 2018-11-01 → 2004-11-01; baseline finish 2019-03-13 → 2005-03-10 |
| 248 | **Workflow de Análisis** | baseline start 2018-11-01 → 2004-11-01; baseline finish 2018-12-17 → 2004-12-15 |
| 249 | **Análisis del Comportamiento** | baseline start 2018-11-01 → 2004-11-01; baseline finish 2018-12-17 → 2004-12-15 |
| 250 | **Análisis de la Arquitectura** | baseline start 2018-11-01 → 2004-11-01; baseline finish 2018-11-15 → 2004-11-15 |
| 251 | Identifica Clases de Análisis | baseline start 2018-11-01 → 2004-11-01; baseline finish 2018-11-13 → 2004-11-10 |
| 252 | Identificar Paquetes de Análisis | baseline start 2018-11-13 → 2004-11-10; baseline finish 2018-11-15 → 2004-11-15 |
| 253 | **Análisis de Casos de Uso** | baseline start 2018-11-09 → 2004-11-09; baseline finish 2018-12-06 → 2004-12-03 |
| 254 | Diagramas de Clases de Análisis | baseline start 2018-11-09 → 2004-11-09; baseline finish 2018-11-29 → 2004-11-29 |
| 255 | Diagramas de Colaboración | baseline start 2018-11-09 → 2004-11-09; baseline finish 2018-12-06 → 2004-12-03 |
| 256 | **Análisis de Paquetes** | baseline start 2018-12-06 → 2004-12-03; baseline finish 2018-12-07 → 2004-12-07 |
| 257 | Paquetes de Análisis | baseline start 2018-12-06 → 2004-12-03; baseline finish 2018-12-07 → 2004-12-07 |
| 258 | **Análisis de Datos** | baseline start 2018-12-06 → 2004-12-03; baseline finish 2018-12-12 → 2004-12-10 |
| 259 | Análisis de la BD | baseline start 2018-12-06 → 2004-12-03; baseline finish 2018-12-12 → 2004-12-10 |
| 260 | **Refinar el Análisis** | baseline start 2018-12-03 → 2004-11-30; baseline finish 2018-12-17 → 2004-12-15 |
| 261 | Refinar Diagramas de Clases de Análisis | baseline start 2018-12-03 → 2004-11-30; baseline finish 2018-12-05 → 2004-12-02 |
| 262 | Refinar Diagramas de Colaboración | baseline start 2018-12-07 → 2004-12-07; baseline finish 2018-12-14 → 2004-12-14 |
| 263 | Refinar BD | baseline start 2018-12-14 → 2004-12-13; baseline finish 2018-12-17 → 2004-12-15 |
| 264 | Refinar Paquetes de Análisis | baseline start 2018-12-11 → 2004-12-08; baseline finish 2018-12-12 → 2004-12-10 |
| 265 | **Workflow de Diseño** | baseline start 2018-12-17 → 2004-12-15; baseline finish 2019-02-01 → 2005-02-01 |
| 266 | **Diseño de la Arquitectura** | baseline start 2018-12-17 → 2004-12-15; baseline finish 2018-12-28 → 2004-12-27 |
| 267 | Identifica Clases de Diseño | baseline start 2018-12-17 → 2004-12-15; baseline finish 2018-12-28 → 2004-12-27 |
| 268 | Identificar Paquetes de Diseño | baseline start 2018-12-17 → 2004-12-15; baseline finish 2018-12-21 → 2004-12-21 |
| 269 | **Diseño de Casos de Uso** | baseline start 2018-12-28 → 2004-12-27; baseline finish 2019-01-23 → 2005-01-21 |
| 270 | Diagramas de Clases de Diseño | baseline start 2018-12-28 → 2004-12-27; baseline finish 2019-01-16 → 2005-01-13 |
| 271 | Diagramas de Colaboración | baseline start 2018-12-28 → 2004-12-27; baseline finish 2019-01-23 → 2005-01-21 |
| 272 | Diagrama de Despliegue | baseline start 2018-12-28 → 2004-12-27; baseline finish 2019-01-03 → 2004-12-31 |
| 273 | Diagramas de Estado | baseline start 2018-12-28 → 2004-12-27; baseline finish 2019-01-02 → 2004-12-30 |
| 274 | **Diseño de Paquetes** | baseline start 2019-01-23 → 2005-01-21; baseline finish 2019-01-28 → 2005-01-26 |
| 275 | Paquetes de Diseño | baseline start 2019-01-23 → 2005-01-21; baseline finish 2019-01-28 → 2005-01-26 |
| 276 | **Diseño de Datos** | baseline start 2019-01-23 → 2005-01-21; baseline finish 2019-01-30 → 2005-01-27 |
| 277 | Diseño de la BD | baseline start 2019-01-23 → 2005-01-21; baseline finish 2019-01-30 → 2005-01-27 |
| 278 | **Refinar el Diseño** | baseline start 2019-01-02 → 2004-12-30; baseline finish 2019-02-01 → 2005-02-01 |
| 279 | Refinar Diagramas de Clases de Diseño | baseline start 2019-01-16 → 2005-01-13; baseline finish 2019-01-18 → 2005-01-17 |
| 280 | Refinar Diagramas de Colaboración | baseline start 2019-01-23 → 2005-01-21; baseline finish 2019-01-25 → 2005-01-24 |
| 281 | Refinar Diagrama de Despliegue | baseline start 2019-01-03 → 2004-12-31; baseline finish 2019-01-04 → 2005-01-03 |

| ID | Task | Other |
| --- | --- | --- |
| 282 | Refinar Diagramas de Estado | baseline start 2019-01-02 → 2004-12-30; baseline finish 2019-01-03 → 2004-12-31 |
| 283 | Refinar BD | baseline start 2019-01-30 → 2005-01-27; baseline finish 2019-02-01 → 2005-02-01 |
| 284 | Refinar Paquetes de Diseño | baseline start 2019-01-28 → 2005-01-26; baseline finish 2019-01-29 → 2005-01-26 |
| 285 | **Workflow de Implementación y Pruebas** | baseline start 2019-02-01 → 2005-02-01; baseline finish 2019-03-13 → 2005-03-10 |
| 286 | Desarrollo de estructura de aplicación | baseline start 2019-02-08 → 2005-02-07; baseline finish 2019-03-11 → 2005-03-09 |
| 287 | Planeación de la integración de Sistemas | baseline start 2019-02-05 → 2005-02-02; baseline finish 2019-02-08 → 2005-02-07 |
| 288 | Plan de Pruebas | baseline start 2019-02-01 → 2005-02-01; baseline finish 2019-02-05 → 2005-02-02 |
| 289 | Integración de Sistemas | baseline start 2019-03-11 → 2005-03-09; baseline finish 2019-03-13 → 2005-03-10 |
| 290 | Ejecución de Pruebas | baseline start 2019-03-11 → 2005-03-09; baseline finish 2019-03-13 → 2005-03-10 |
| 291 | **Fase de Transición** | baseline start 2019-03-13 → 2005-03-10; baseline finish 2019-03-26 → 2005-03-23 |
| 292 | Instalación del Software | baseline start 2019-03-22 → 2005-03-21; baseline finish 2019-03-25 → 2005-03-22 |
| 293 | Migración | baseline start 2019-03-13 → 2005-03-10; baseline finish 2019-03-19 → 2005-03-16 |
| 294 | Capacitación | baseline start 2019-03-19 → 2005-03-16; baseline finish 2019-03-22 → 2005-03-21 |
| 295 | Comprobación de Aceptación | baseline start 2019-03-25 → 2005-03-22; baseline finish 2019-03-26 → 2005-03-23 |

## Version 3 (saved 2018-04-16, file TRES_Practica.mpp)

Note of the change: se crea directorio para la practica 2

Last finish stays 2018-12-13.

Changed:

| ID | Task | Start | Finish | Duration | Total float |
| --- | --- | --- | --- | --- | --- |
| 10 | **Fase Inicial** |  | 2017-08-22 → 2017-08-17 (-5d) | 10.38d → 8.38d |  |
| 13 | Glorario de Términos | 2017-08-01 → 2017-08-08 (+7d) | 2017-08-03 → 2017-08-09 (+6d) |  | 8.71d → 5.83d |
| 20 | Administración de Cambios de Requisitos | 2017-08-07 → 2017-08-09 (+2d) | 2017-08-08 → 2017-08-11 (+3d) |  | 6.33d → 4.46d |
| 21 | **Workflow Administración de la Configuración** | 2017-08-14 → 2017-08-10 (-4d) | 2017-08-22 → 2017-08-17 (-5d) | 4.5d → 4d | 239.75d → 241.75d |
| 22 | Establecer el Proceso de Admon de la Configuración | 2017-08-14 → 2017-08-16 (+2d) | 2017-08-15 → 2017-08-17 (+2d) |  | 243.25d → 241.75d |
| 23 | Establecer el Entorno de Admon de la Configuración | 2017-08-14 → 2017-08-10 (-4d) | 2017-08-22 → 2017-08-17 (-5d) |  | 239.75d → 241.75d |
| 24 | **Workflow Administración del Proyecto** | 2017-08-07 → 2017-08-01 (-6d) | 2017-08-17 → 2017-08-14 (-3d) |  | 241.75d → 244.12d |
| 25 | Análisis de Riesgos | 2017-08-08 → 2017-08-03 (-5d) | 2017-08-17 → 2017-08-14 (-3d) |  | 241.75d → 244.12d |
| 26 | Desarrollar la Planificación del Proyecto | 2017-08-07 → 2017-08-01 (-6d) | 2017-08-08 → 2017-08-03 (-5d) |  | 241.75d → 244.12d |
| 292 | Instalación del Software | 2018-12-10 → 2018-12-12 (+2d) | 2018-12-11 → 2018-12-12 (+1d) |  | 2d → 0.75d |

## Version 4 (saved 2018-04-17, file TRES_Practica (inicial).mpp)

Note of the change: termino seccion 2 y se agrego otro archivo de msproject

Last finish stays 2018-12-13.

Changed:

| ID | Task | Start | Finish | Duration | Total float | Other |
| --- | --- | --- | --- | --- | --- | --- |
| 10 | **Fase Inicial** |  | 2017-08-17 → 2017-08-22 (+5d) | 8.38d → 10.38d |  |  |
| 13 | Glorario de Términos | 2017-08-08 → 2017-08-01 (-7d) | 2017-08-09 → 2017-08-03 (-6d) |  | 5.83d → 8.71d |  |
| 15 | Workflow Administración de la Configuración |  |  |  |  | was named Identificar Casos de Uso |
| 20 | Administración de Cambios de Requisitos | 2017-08-09 → 2017-08-07 (-2d) | 2017-08-11 → 2017-08-08 (-3d) |  | 4.46d → 6.33d |  |
| 21 | **Workflow Administración de la Configuración** | 2017-08-10 → 2017-08-14 (+4d) | 2017-08-17 → 2017-08-22 (+5d) | 4d → 4.5d | 241.75d → 239.75d |  |
| 22 | Establecer el Proceso de Admon de la Configuración | 2017-08-16 → 2017-08-14 (-2d) | 2017-08-17 → 2017-08-15 (-2d) |  | 241.75d → 243.25d |  |
| 23 | Establecer el Entorno de Admon de la Configuración | 2017-08-10 → 2017-08-14 (+4d) | 2017-08-17 → 2017-08-22 (+5d) |  | 241.75d → 239.75d |  |
| 24 | **Workflow Administración del Proyecto** | 2017-08-01 → 2017-08-07 (+6d) | 2017-08-14 → 2017-08-17 (+3d) |  | 244.12d → 241.75d |  |
| 25 | Análisis de Riesgos | 2017-08-03 → 2017-08-08 (+5d) | 2017-08-14 → 2017-08-17 (+3d) |  | 244.12d → 241.75d |  |
| 26 | Desarrollar la Planificación del Proyecto | 2017-08-01 → 2017-08-07 (+6d) | 2017-08-03 → 2017-08-08 (+5d) |  | 244.12d → 241.75d |  |
| 292 | Instalación del Software | 2018-12-12 → 2018-12-10 (-2d) | 2018-12-12 → 2018-12-11 (-1d) |  | 0.75d → 2d |  |

## Version 5 (saved 2018-04-17, file TRES_Practica.mpp)

Note of the change: fin de la seccion 4

Last finish stays 2018-12-13.

Changed:

| ID | Task | Start | Finish | Duration | Total float |
| --- | --- | --- | --- | --- | --- |
| 1 | **Hitos del Proyecto** |  | 2018-12-13 → 2018-12-07 (-6d) | 250.12d → 247.21d | 0d → 2.58d |
| 8 | Fin del Proyecto | 2018-12-13 → 2018-12-07 (-6d) | 2018-12-13 → 2018-12-07 (-6d) |  | 0d → 2.58d |
| 10 | **Fase Inicial** |  | 2017-08-22 → 2017-08-16 (-6d) | 10.38d → 7.88d | 3.71d → 2.21d |
| 20 | Administración de Cambios de Requisitos | 2017-08-07 → 2017-08-01 (-6d) | 2017-08-08 → 2017-08-04 (-4d) |  |  |
| 21 | **Workflow Administración de la Configuración** | 2017-08-14 → 2017-08-07 (-7d) | 2017-08-22 → 2017-08-14 (-8d) | 4.5d → 4d | 239.75d → 243.42d |
| 22 | Establecer el Proceso de Admon de la Configuración | 2017-08-14 → 2017-08-11 (-3d) | 2017-08-15 → 2017-08-14 (-1d) |  | 243.25d → 243.42d |
| 23 | Establecer el Entorno de Admon de la Configuración | 2017-08-14 → 2017-08-07 (-7d) | 2017-08-22 → 2017-08-14 (-8d) |  | 239.75d → 243.42d |
| 24 | **Workflow Administración del Proyecto** | 2017-08-07 → 2017-08-04 (-3d) | 2017-08-17 → 2017-08-16 (-1d) |  | 241.75d → 241.92d |
| 25 | Análisis de Riesgos | 2017-08-08 → 2017-08-07 (-1d) | 2017-08-17 → 2017-08-16 (-1d) |  | 241.75d → 241.92d |
| 26 | Desarrollar la Planificación del Proyecto | 2017-08-07 → 2017-08-04 (-3d) | 2017-08-08 → 2017-08-07 (-1d) |  | 241.75d → 241.92d |
| 291 | **Fase de Transición** |  |  | 6.46d → 6.12d |  |
| 292 | Instalación del Software | 2018-12-10 → 2018-12-05 (-5d) | 2018-12-11 → 2018-12-06 (-5d) |  | 2d → 3.17d |
| 293 | Migración | 2018-11-30 → 2018-12-05 (+5d) | 2018-12-06 → 2018-12-13 (+7d) |  | 3.5d → 0d |
| 294 | Capacitación | 2018-12-06 → 2018-11-30 (-6d) | 2018-12-11 → 2018-12-05 (-6d) |  | 1.25d → 3.88d |
| 295 | Comprobación de Aceptación | 2018-12-13 → 2018-12-05 (-8d) | 2018-12-13 → 2018-12-07 (-6d) |  | 0d → 2.58d |

## Version 6 (saved 2018-04-18, file TRES_Practica (Final).mpp)

Note of the change: fin se la seccion 6

Last finish stays 2018-12-13.

Changed:

| ID | Task | Other |
| --- | --- | --- |
| 1 | **Hitos del Proyecto** | baseline start 2003-11-10 → 2017-08-01; baseline finish 2005-03-23 → 2018-12-07 |
| 2 | Inicio del Proyecto | baseline start 2003-11-10 → 2017-08-01; baseline finish 2003-11-10 → 2017-08-01 |
| 3 | Definición del Sistema | baseline start 2003-11-20 → 2017-08-14; baseline finish 2003-11-20 → 2017-08-14 |
| 4 | 1era Entrega Operativa de Software | baseline start 2004-06-23 → 2018-03-16; baseline finish 2004-06-23 → 2018-03-16 |
| 5 | 2a Entrega Operativa de Software | baseline start 2004-08-26 → 2018-05-21; baseline finish 2004-08-26 → 2018-05-21 |
| 6 | 3era Entrega Operativa de Software | baseline start 2005-01-25 → 2018-10-17; baseline finish 2005-01-25 → 2018-10-17 |
| 7 | 4a Entrega Operativa de Software | baseline start 2005-03-10 → 2018-11-30; baseline finish 2005-03-10 → 2018-11-30 |
| 8 | Fin del Proyecto | baseline start 2005-03-23 → 2018-12-07; baseline finish 2005-03-23 → 2018-12-07 |
| 10 | **Fase Inicial** | baseline start 2003-11-10 → 2017-08-01; baseline finish 2003-11-26 → 2017-08-16 |
| 11 | **Workflow de Requisitos** | baseline start 2003-11-10 → 2017-08-01; baseline finish 2003-11-20 → 2017-08-14 |
| 12 | **Analizar el Problema** | baseline start 2003-11-11 → 2017-08-01; baseline finish 2003-11-18 → 2017-08-09 |
| 13 | Glorario de Términos | baseline start 2003-11-17 → 2017-08-01; baseline finish 2003-11-18 → 2017-08-03 |
| 14 | Identificar Actores | baseline start 2003-11-11 → 2017-08-01; baseline finish 2003-11-17 → 2017-08-08 |
| 15 | Workflow Administración de la Configuración | baseline start 2003-11-11 → 2017-08-01; baseline finish 2003-11-18 → 2017-08-09 |
| 16 | **Definición del Sistema** | baseline start 2003-11-10 → 2017-08-01; baseline finish 2003-11-19 → 2017-08-10 |
| 17 | Estructurar Modelo Casos de Uso | baseline start 2003-11-10 → 2017-08-01; baseline finish 2003-11-19 → 2017-08-10 |
| 18 | **Definición de Alcance** | baseline start 2003-11-19 → 2017-08-10; baseline finish 2003-11-20 → 2017-08-14 |
| 19 | Priorizar Casos de Uso | baseline start 2003-11-19 → 2017-08-10; baseline finish 2003-11-20 → 2017-08-14 |
| 20 | Administración de Cambios de Requisitos | baseline start 2003-11-19 → 2017-08-01; baseline finish 2003-11-20 → 2017-08-04 |
| 21 | **Workflow Administración de la Configuración** | baseline start 2003-11-19 → 2017-08-07; baseline finish 2003-11-26 → 2017-08-14 |
| 22 | Establecer el Proceso de Admon de la Configuración | baseline start 2003-11-25 → 2017-08-11; baseline finish 2003-11-26 → 2017-08-14 |
| 23 | Establecer el Entorno de Admon de la Configuración | baseline start 2003-11-19 → 2017-08-07; baseline finish 2003-11-26 → 2017-08-14 |
| 24 | **Workflow Administración del Proyecto** | baseline start 2003-11-10 → 2017-08-04; baseline finish 2003-11-20 → 2017-08-16 |
| 25 | Análisis de Riesgos | baseline start 2003-11-11 → 2017-08-07; baseline finish 2003-11-20 → 2017-08-16 |
| 26 | Desarrollar la Planificación del Proyecto | baseline start 2003-11-10 → 2017-08-04; baseline finish 2003-11-11 → 2017-08-07 |
| 27 | **Fase de Elaboración** | baseline start 2003-11-21 → 2017-08-14; baseline finish 2004-08-26 → 2018-05-21 |
| 28 | **Iteración 1** | baseline start 2003-11-21 → 2017-08-14; baseline finish 2004-03-12 → 2017-12-04 |
| 29 | **Workflow de Requisitos** | baseline start 2003-11-21 → 2017-08-14; baseline finish 2003-12-11 → 2017-09-01 |
| 30 | **Analizar el Problema** | baseline start 2003-11-21 → 2017-08-14; baseline finish 2003-11-21 → 2017-08-15 |
| 31 | Glorario de Términos | baseline start 2003-11-21 → 2017-08-14; baseline finish 2003-11-21 → 2017-08-15 |
| 32 | **Definición del Sistema** | baseline start 2003-11-21 → 2017-08-14; baseline finish 2003-12-03 → 2017-08-24 |
| 33 | Detallar Casos de Uso | baseline start 2003-11-21 → 2017-08-14; baseline finish 2003-12-02 → 2017-08-23 |
| 34 | Prototipar Casos de Uso | baseline start 2003-11-21 → 2017-08-14; baseline finish 2003-12-03 → 2017-08-24 |
| 35 | **Definición de Alcance** | baseline start 2003-11-21 → 2017-08-14; baseline finish 2003-11-21 → 2017-08-15 |
| 36 | Priorizar Casos de Uso | baseline start 2003-11-21 → 2017-08-14; baseline finish 2003-11-21 → 2017-08-15 |
| 37 | **Refinar la Definición del Sistema** | baseline start 2003-11-21 → 2017-08-14; baseline finish 2003-12-11 → 2017-09-01 |
| 38 | Refinar Casos de Uso | baseline start 2003-12-02 → 2017-08-23; baseline finish 2003-12-11 → 2017-09-01 |
| 39 | Refinar Modelo de Caso de Uso | baseline start 2003-11-21 → 2017-08-14; baseline finish 2003-11-26 → 2017-08-17 |
| 40 | Administración de Cambios de Requisitos | baseline start 2003-11-26 → 2017-08-17; baseline finish 2003-11-27 → 2017-08-18 |
| 41 | **Workflow de Análisis** | baseline start 2003-12-11 → 2017-09-01; baseline finish 2004-01-26 → 2017-10-17 |
| 42 | **Análisis del Comportamiento** | baseline start 2003-12-11 → 2017-09-01; baseline finish 2004-01-26 → 2017-10-17 |
| 43 | **Análisis de la Arquitectura** | baseline start 2003-12-11 → 2017-09-01; baseline finish 2003-12-25 → 2017-09-15 |
| 44 | Identifica Clases de Análisis | baseline start 2003-12-11 → 2017-09-01; baseline finish 2003-12-22 → 2017-09-12 |
| 45 | Identificar Paquetes de Análisis | baseline start 2003-12-22 → 2017-09-12; baseline finish 2003-12-25 → 2017-09-15 |
| 46 | **Análisis de Casos de Uso** | baseline start 2003-12-19 → 2017-09-11; baseline finish 2004-01-15 → 2017-10-06 |
| 47 | Diagramas de Clases de Análisis | baseline start 2003-12-19 → 2017-09-11; baseline finish 2004-01-08 → 2017-09-29 |
| 48 | Diagramas de Colaboración | baseline start 2003-12-19 → 2017-09-11; baseline finish 2004-01-15 → 2017-10-06 |
| 49 | **Análisis de Paquetes** | baseline start 2004-01-15 → 2017-10-06; baseline finish 2004-01-16 → 2017-10-09 |
| 50 | Paquetes de Análisis | baseline start 2004-01-15 → 2017-10-06; baseline finish 2004-01-16 → 2017-10-09 |
| 51 | **Análisis de Datos** | baseline start 2004-01-15 → 2017-10-06; baseline finish 2004-01-21 → 2017-10-12 |
| 52 | Análisis de la BD | baseline start 2004-01-15 → 2017-10-06; baseline finish 2004-01-21 → 2017-10-12 |
| 53 | **Refinar el Análisis** | baseline start 2004-01-09 → 2017-10-03; baseline finish 2004-01-26 → 2017-10-17 |
| 54 | Refinar Diagramas de Clases de Análisis | baseline start 2004-01-09 → 2017-10-03; baseline finish 2004-01-14 → 2017-10-05 |
| 55 | Refinar Diagramas de Colaboración | baseline start 2004-01-16 → 2017-10-09; baseline finish 2004-01-23 → 2017-10-16 |
| 56 | Refinar BD | baseline start 2004-01-22 → 2017-10-13; baseline finish 2004-01-26 → 2017-10-17 |
| 57 | Refinar Paquetes de Análisis | baseline start 2004-01-20 → 2017-10-11; baseline finish 2004-01-21 → 2017-10-12 |
| 58 | **Workflow de Diseño** | baseline start 2004-01-26 → 2017-10-17; baseline finish 2004-03-12 → 2017-12-04 |
| 59 | **Diseño de la Arquitectura** | baseline start 2004-01-26 → 2017-10-17; baseline finish 2004-02-05 → 2017-10-27 |
| 60 | Identifica Clases de Diseño | baseline start 2004-01-26 → 2017-10-17; baseline finish 2004-02-05 → 2017-10-27 |
| 61 | Identificar Paquetes de Diseño | baseline start 2004-01-26 → 2017-10-17; baseline finish 2004-01-30 → 2017-10-23 |
| 62 | **Diseño de Casos de Uso** | baseline start 2004-02-05 → 2017-10-27; baseline finish 2004-03-03 → 2017-11-23 |
| 63 | Diagramas de Clases de Diseño | baseline start 2004-02-05 → 2017-10-27; baseline finish 2004-02-24 → 2017-11-15 |
| 64 | Diagramas de Colaboración | baseline start 2004-02-05 → 2017-10-27; baseline finish 2004-03-03 → 2017-11-23 |
| 65 | Diagrama de Despliegue | baseline start 2004-02-05 → 2017-10-27; baseline finish 2004-02-12 → 2017-11-03 |
| 66 | Diagramas de Estado | baseline start 2004-02-05 → 2017-10-27; baseline finish 2004-02-10 → 2017-11-01 |
| 67 | **Diseño de Paquetes** | baseline start 2004-03-03 → 2017-11-23; baseline finish 2004-03-08 → 2017-11-28 |
| 68 | Paquetes de Diseño | baseline start 2004-03-03 → 2017-11-23; baseline finish 2004-03-08 → 2017-11-28 |
| 69 | **Diseño de Datos** | baseline start 2004-03-03 → 2017-11-23; baseline finish 2004-03-09 → 2017-11-29 |
| 70 | Diseño de la BD | baseline start 2004-03-03 → 2017-11-23; baseline finish 2004-03-09 → 2017-11-29 |
| 71 | **Refinar el Diseño** | baseline start 2004-02-10 → 2017-11-01; baseline finish 2004-03-12 → 2017-12-04 |

| ID | Task | Other |
| --- | --- | --- |
| 72 | Refinar Diagramas de Clases de Diseño | baseline start 2004-02-24 → 2017-11-15; baseline finish 2004-02-26 → 2017-11-17 |
| 73 | Refinar Diagramas de Colaboración | baseline start 2004-03-03 → 2017-11-23; baseline finish 2004-03-04 → 2017-11-24 |
| 74 | Refinar Diagrama de Despliegue | baseline start 2004-02-12 → 2017-11-03; baseline finish 2004-02-12 → 2017-11-03 |
| 75 | Refinar Diagramas de Estado | baseline start 2004-02-10 → 2017-11-01; baseline finish 2004-02-12 → 2017-11-03 |
| 76 | Refinar BD | baseline start 2004-03-09 → 2017-11-29; baseline finish 2004-03-12 → 2017-12-04 |
| 77 | Refinar Paquetes de Diseño | baseline start 2004-03-08 → 2017-11-28; baseline finish 2004-03-09 → 2017-11-29 |
| 78 | **Iteración 2** | baseline start 2004-01-26 → 2017-10-17; baseline finish 2004-06-23 → 2018-03-16 |
| 79 | **Workflow de Requisitos** | baseline start 2004-01-26 → 2017-10-17; baseline finish 2004-02-13 → 2017-11-06 |
| 80 | **Analizar el Problema** | baseline start 2004-01-26 → 2017-10-17; baseline finish 2004-01-27 → 2017-10-18 |
| 81 | Glorario de Términos | baseline start 2004-01-26 → 2017-10-17; baseline finish 2004-01-27 → 2017-10-18 |
| 82 | **Definición del Sistema** | baseline start 2004-01-26 → 2017-10-17; baseline finish 2004-02-05 → 2017-10-27 |
| 83 | Detallar Casos de Uso | baseline start 2004-01-26 → 2017-10-17; baseline finish 2004-02-04 → 2017-10-26 |
| 84 | Prototipar Casos de Uso | baseline start 2004-01-26 → 2017-10-17; baseline finish 2004-02-05 → 2017-10-27 |
| 85 | **Definición de Alcance** | baseline start 2004-01-26 → 2017-10-17; baseline finish 2004-01-27 → 2017-10-18 |
| 86 | Priorizar Casos de Uso | baseline start 2004-01-26 → 2017-10-17; baseline finish 2004-01-27 → 2017-10-18 |
| 87 | **Refinar la Definición del Sistema** | baseline start 2004-01-26 → 2017-10-17; baseline finish 2004-02-13 → 2017-11-06 |
| 88 | Refinar Casos de Uso | baseline start 2004-02-04 → 2017-10-26; baseline finish 2004-02-13 → 2017-11-06 |
| 89 | Refinar Modelo de Caso de Uso | baseline start 2004-01-26 → 2017-10-17; baseline finish 2004-02-09 → 2017-11-01 |
| 90 | Administración de Cambios de Requisitos | baseline start 2004-02-09 → 2017-11-01; baseline finish 2004-02-10 → 2017-11-01 |
| 91 | **Workflow de Análisis** | baseline start 2004-02-13 → 2017-11-06; baseline finish 2004-03-30 → 2017-12-20 |
| 92 | **Análisis del Comportamiento** | baseline start 2004-02-13 → 2017-11-06; baseline finish 2004-03-30 → 2017-12-20 |
| 93 | **Análisis de la Arquitectura** | baseline start 2004-02-13 → 2017-11-06; baseline finish 2004-02-27 → 2017-11-20 |
| 94 | Identifica Clases de Análisis | baseline start 2004-02-13 → 2017-11-06; baseline finish 2004-02-24 → 2017-11-15 |
| 95 | Identificar Paquetes de Análisis | baseline start 2004-02-24 → 2017-11-15; baseline finish 2004-02-27 → 2017-11-20 |
| 96 | **Análisis de Casos de Uso** | baseline start 2004-02-23 → 2017-11-14; baseline finish 2004-03-19 → 2017-12-11 |
| 97 | Diagramas de Clases de Análisis | baseline start 2004-02-23 → 2017-11-14; baseline finish 2004-03-12 → 2017-12-04 |
| 98 | Diagramas de Colaboración | baseline start 2004-02-23 → 2017-11-14; baseline finish 2004-03-19 → 2017-12-11 |
| 99 | **Análisis de Paquetes** | baseline start 2004-03-19 → 2017-12-11; baseline finish 2004-03-22 → 2017-12-13 |
| 100 | Paquetes de Análisis | baseline start 2004-03-19 → 2017-12-11; baseline finish 2004-03-22 → 2017-12-13 |
| 101 | **Análisis de Datos** | baseline start 2004-03-19 → 2017-12-11; baseline finish 2004-03-25 → 2017-12-15 |
| 102 | Análisis de la BD | baseline start 2004-03-19 → 2017-12-11; baseline finish 2004-03-25 → 2017-12-15 |
| 103 | **Refinar el Análisis** | baseline start 2004-03-16 → 2017-12-06; baseline finish 2004-03-30 → 2017-12-20 |
| 104 | Refinar Diagramas de Clases de Análisis | baseline start 2004-03-16 → 2017-12-06; baseline finish 2004-03-18 → 2017-12-08 |
| 105 | Refinar Diagramas de Colaboración | baseline start 2004-03-22 → 2017-12-13; baseline finish 2004-03-29 → 2017-12-19 |
| 106 | Refinar BD | baseline start 2004-03-26 → 2017-12-19; baseline finish 2004-03-30 → 2017-12-20 |
| 107 | Refinar Paquetes de Análisis | baseline start 2004-03-24 → 2017-12-14; baseline finish 2004-03-25 → 2017-12-15 |
| 108 | **Workflow de Diseño** | baseline start 2004-03-30 → 2017-12-20; baseline finish 2004-05-17 → 2018-02-07 |
| 109 | **Diseño de la Arquitectura** | baseline start 2004-03-30 → 2017-12-20; baseline finish 2004-04-09 → 2018-01-02 |
| 110 | Identifica Clases de Diseño | baseline start 2004-03-30 → 2017-12-20; baseline finish 2004-04-09 → 2018-01-02 |
| 111 | Identificar Paquetes de Diseño | baseline start 2004-03-30 → 2017-12-20; baseline finish 2004-04-05 → 2017-12-27 |
| 112 | **Diseño de Casos de Uso** | baseline start 2004-04-09 → 2018-01-02; baseline finish 2004-05-06 → 2018-01-26 |
| 113 | Diagramas de Clases de Diseño | baseline start 2004-04-09 → 2018-01-02; baseline finish 2004-04-28 → 2018-01-19 |
| 114 | Diagramas de Colaboración | baseline start 2004-04-09 → 2018-01-02; baseline finish 2004-05-06 → 2018-01-26 |
| 115 | Diagrama de Despliegue | baseline start 2004-04-09 → 2018-01-02; baseline finish 2004-04-16 → 2018-01-08 |
| 116 | Diagramas de Estado | baseline start 2004-04-09 → 2018-01-02; baseline finish 2004-04-14 → 2018-01-05 |
| 117 | **Diseño de Paquetes** | baseline start 2004-05-06 → 2018-01-26; baseline finish 2004-05-11 → 2018-01-31 |
| 118 | Paquetes de Diseño | baseline start 2004-05-06 → 2018-01-26; baseline finish 2004-05-11 → 2018-01-31 |
| 119 | **Diseño de Datos** | baseline start 2004-05-06 → 2018-01-26; baseline finish 2004-05-12 → 2018-02-02 |
| 120 | Diseño de la BD | baseline start 2004-05-06 → 2018-01-26; baseline finish 2004-05-12 → 2018-02-02 |
| 121 | **Refinar el Diseño** | baseline start 2004-04-14 → 2018-01-05; baseline finish 2004-05-17 → 2018-02-07 |
| 122 | Refinar Diagramas de Clases de Diseño | baseline start 2004-04-28 → 2018-01-19; baseline finish 2004-04-30 → 2018-01-23 |
| 123 | Refinar Diagramas de Colaboración | baseline start 2004-05-06 → 2018-01-26; baseline finish 2004-05-07 → 2018-01-30 |
| 124 | Refinar Diagrama de Despliegue | baseline start 2004-04-16 → 2018-01-08; baseline finish 2004-04-16 → 2018-01-09 |
| 125 | Refinar Diagramas de Estado | baseline start 2004-04-14 → 2018-01-05; baseline finish 2004-04-16 → 2018-01-08 |
| 126 | Refinar BD | baseline start 2004-05-12 → 2018-02-02; baseline finish 2004-05-17 → 2018-02-07 |
| 127 | Refinar Paquetes de Diseño | baseline start 2004-05-11 → 2018-01-31; baseline finish 2004-05-12 → 2018-02-01 |
| 128 | **Workflow de Implementación y Pruebas** | baseline start 2004-05-17 → 2018-02-07; baseline finish 2004-06-23 → 2018-03-16 |
| 129 | Desarrollo de estructura de aplicación | baseline start 2004-05-21 → 2018-02-13; baseline finish 2004-06-22 → 2018-03-14 |
| 130 | Planeación de la integración de Sistemas | baseline start 2004-05-19 → 2018-02-08; baseline finish 2004-05-21 → 2018-02-13 |
| 131 | Plan de Pruebas | baseline start 2004-05-17 → 2018-02-07; baseline finish 2004-05-19 → 2018-02-08 |
| 132 | Integración de Sistemas | baseline start 2004-06-22 → 2018-03-14; baseline finish 2004-06-23 → 2018-03-16 |
| 133 | Ejecución de Pruebas | baseline start 2004-06-22 → 2018-03-14; baseline finish 2004-06-23 → 2018-03-16 |
| 134 | **Iteración 3** | baseline start 2004-03-30 → 2017-12-20; baseline finish 2004-08-26 → 2018-05-21 |
| 135 | **Workflow de Requisitos** | baseline start 2004-03-30 → 2017-12-20; baseline finish 2004-04-19 → 2018-01-10 |
| 136 | **Analizar el Problema** | baseline start 2004-03-30 → 2017-12-20; baseline finish 2004-03-31 → 2017-12-21 |
| 137 | Glorario de Términos | baseline start 2004-03-30 → 2017-12-20; baseline finish 2004-03-31 → 2017-12-21 |
| 138 | **Definición del Sistema** | baseline start 2004-03-30 → 2017-12-20; baseline finish 2004-04-09 → 2018-01-02 |
| 139 | Detallar Casos de Uso | baseline start 2004-03-30 → 2017-12-20; baseline finish 2004-04-08 → 2017-12-29 |
| 140 | Prototipar Casos de Uso | baseline start 2004-03-30 → 2017-12-20; baseline finish 2004-04-09 → 2018-01-02 |
| 141 | **Definición de Alcance** | baseline start 2004-03-30 → 2017-12-20; baseline finish 2004-03-31 → 2017-12-21 |

| ID | Task | Other |
| --- | --- | --- |
| 142 | Priorizar Casos de Uso | baseline start 2004-03-30 → 2017-12-20; baseline finish 2004-03-31 → 2017-12-21 |
| 143 | **Refinar la Definición del Sistema** | baseline start 2004-03-30 → 2017-12-20; baseline finish 2004-04-19 → 2018-01-10 |
| 144 | Refinar Casos de Uso | baseline start 2004-04-08 → 2017-12-29; baseline finish 2004-04-19 → 2018-01-10 |
| 145 | Refinar Modelo de Caso de Uso | baseline start 2004-03-30 → 2017-12-20; baseline finish 2004-04-13 → 2018-01-03 |
| 146 | Administración de Cambios de Requisitos | baseline start 2004-04-13 → 2018-01-03; baseline finish 2004-04-14 → 2018-01-04 |
| 147 | **Workflow de Análisis** | baseline start 2004-04-19 → 2018-01-10; baseline finish 2004-06-02 → 2018-02-22 |
| 148 | **Análisis del Comportamiento** | baseline start 2004-04-19 → 2018-01-10; baseline finish 2004-06-02 → 2018-02-22 |
| 149 | **Análisis de la Arquitectura** | baseline start 2004-04-19 → 2018-01-10; baseline finish 2004-05-03 → 2018-01-24 |
| 150 | Identifica Clases de Análisis | baseline start 2004-04-19 → 2018-01-10; baseline finish 2004-04-28 → 2018-01-19 |
| 151 | Identificar Paquetes de Análisis | baseline start 2004-04-28 → 2018-01-19; baseline finish 2004-05-03 → 2018-01-24 |
| 152 | **Análisis de Casos de Uso** | baseline start 2004-04-27 → 2018-01-17; baseline finish 2004-05-24 → 2018-02-13 |
| 153 | Diagramas de Clases de Análisis | baseline start 2004-04-27 → 2018-01-17; baseline finish 2004-05-17 → 2018-02-07 |
| 154 | Diagramas de Colaboración | baseline start 2004-04-27 → 2018-01-17; baseline finish 2004-05-24 → 2018-02-13 |
| 155 | **Análisis de Paquetes** | baseline start 2004-05-24 → 2018-02-13; baseline finish 2004-05-25 → 2018-02-15 |
| 156 | Paquetes de Análisis | baseline start 2004-05-24 → 2018-02-13; baseline finish 2004-05-25 → 2018-02-15 |
| 157 | **Análisis de Datos** | baseline start 2004-05-24 → 2018-02-13; baseline finish 2004-05-28 → 2018-02-20 |
| 158 | Análisis de la BD | baseline start 2004-05-24 → 2018-02-13; baseline finish 2004-05-28 → 2018-02-20 |
| 159 | **Refinar el Análisis** | baseline start 2004-05-19 → 2018-02-08; baseline finish 2004-06-02 → 2018-02-22 |
| 160 | Refinar Diagramas de Clases de Análisis | baseline start 2004-05-19 → 2018-02-08; baseline finish 2004-05-21 → 2018-02-12 |
| 161 | Refinar Diagramas de Colaboración | baseline start 2004-05-26 → 2018-02-15; baseline finish 2004-06-01 → 2018-02-21 |
| 162 | Refinar BD | baseline start 2004-06-01 → 2018-02-21; baseline finish 2004-06-02 → 2018-02-22 |
| 163 | Refinar Paquetes de Análisis | baseline start 2004-05-27 → 2018-02-16; baseline finish 2004-05-28 → 2018-02-20 |
| 164 | **Workflow de Diseño** | baseline start 2004-06-02 → 2018-02-22; baseline finish 2004-07-20 → 2018-04-12 |
| 165 | **Diseño de la Arquitectura** | baseline start 2004-06-02 → 2018-02-22; baseline finish 2004-06-15 → 2018-03-07 |
| 166 | Identifica Clases de Diseño | baseline start 2004-06-02 → 2018-02-22; baseline finish 2004-06-15 → 2018-03-07 |
| 167 | Identificar Paquetes de Diseño | baseline start 2004-06-02 → 2018-02-22; baseline finish 2004-06-08 → 2018-03-01 |
| 168 | **Diseño de Casos de Uso** | baseline start 2004-06-15 → 2018-03-07; baseline finish 2004-07-09 → 2018-04-03 |
| 169 | Diagramas de Clases de Diseño | baseline start 2004-06-15 → 2018-03-07; baseline finish 2004-07-01 → 2018-03-26 |
| 170 | Diagramas de Colaboración | baseline start 2004-06-15 → 2018-03-07; baseline finish 2004-07-09 → 2018-04-03 |
| 171 | Diagrama de Despliegue | baseline start 2004-06-15 → 2018-03-07; baseline finish 2004-06-21 → 2018-03-13 |
| 172 | Diagramas de Estado | baseline start 2004-06-15 → 2018-03-07; baseline finish 2004-06-17 → 2018-03-12 |
| 173 | **Diseño de Paquetes** | baseline start 2004-07-09 → 2018-04-03; baseline finish 2004-07-14 → 2018-04-05 |
| 174 | Paquetes de Diseño | baseline start 2004-07-09 → 2018-04-03; baseline finish 2004-07-14 → 2018-04-05 |
| 175 | **Diseño de Datos** | baseline start 2004-07-09 → 2018-04-03; baseline finish 2004-07-15 → 2018-04-09 |
| 176 | Diseño de la BD | baseline start 2004-07-09 → 2018-04-03; baseline finish 2004-07-15 → 2018-04-09 |
| 177 | **Refinar el Diseño** | baseline start 2004-06-18 → 2018-03-12; baseline finish 2004-07-20 → 2018-04-12 |
| 178 | Refinar Diagramas de Clases de Diseño | baseline start 2004-07-02 → 2018-03-26; baseline finish 2004-07-06 → 2018-03-28 |
| 179 | Refinar Diagramas de Colaboración | baseline start 2004-07-09 → 2018-04-03; baseline finish 2004-07-13 → 2018-04-04 |
| 180 | Refinar Diagrama de Despliegue | baseline start 2004-06-21 → 2018-03-13; baseline finish 2004-06-22 → 2018-03-14 |
| 181 | Refinar Diagramas de Estado | baseline start 2004-06-18 → 2018-03-12; baseline finish 2004-06-21 → 2018-03-13 |
| 182 | Refinar BD | baseline start 2004-07-16 → 2018-04-09; baseline finish 2004-07-20 → 2018-04-12 |
| 183 | Refinar Paquetes de Diseño | baseline start 2004-07-14 → 2018-04-05; baseline finish 2004-07-15 → 2018-04-06 |
| 184 | **Workflow de Implementación y Pruebas** | baseline start 2004-07-21 → 2018-04-12; baseline finish 2004-08-26 → 2018-05-21 |
| 185 | Desarrollo de estructura de aplicación | baseline start 2004-07-27 → 2018-04-18; baseline finish 2004-08-25 → 2018-05-17 |
| 186 | Planeación de la integración de Sistemas | baseline start 2004-07-22 → 2018-04-13; baseline finish 2004-07-27 → 2018-04-18 |
| 187 | Plan de Pruebas | baseline start 2004-07-21 → 2018-04-12; baseline finish 2004-07-22 → 2018-04-13 |
| 188 | Integración de Sistemas | baseline start 2004-08-25 → 2018-05-17; baseline finish 2004-08-26 → 2018-05-21 |
| 189 | Ejecución de Pruebas | baseline start 2004-08-25 → 2018-05-17; baseline finish 2004-08-26 → 2018-05-21 |
| 190 | **Fase de Construcción** | baseline start 2004-08-27 → 2018-05-21; baseline finish 2005-03-10 → 2018-11-30 |
| 191 | **Iteración 4** | baseline start 2004-08-27 → 2018-05-21; baseline finish 2005-01-25 → 2018-10-17 |
| 192 | **Workflow de Requisitos** | baseline start 2004-08-27 → 2018-05-21; baseline finish 2004-09-16 → 2018-06-08 |
| 193 | **Analizar el Problema** | baseline start 2004-08-27 → 2018-05-21; baseline finish 2004-08-27 → 2018-05-22 |
| 194 | Glorario de Términos | baseline start 2004-08-27 → 2018-05-21; baseline finish 2004-08-27 → 2018-05-22 |
| 195 | **Definición del Sistema** | baseline start 2004-08-27 → 2018-05-21; baseline finish 2004-09-08 → 2018-05-31 |
| 196 | Detallar Casos de Uso | baseline start 2004-08-27 → 2018-05-21; baseline finish 2004-09-07 → 2018-05-30 |
| 197 | Prototipar Casos de Uso | baseline start 2004-08-27 → 2018-05-21; baseline finish 2004-09-08 → 2018-05-31 |
| 198 | **Definición de Alcance** | baseline start 2004-08-27 → 2018-05-21; baseline finish 2004-08-27 → 2018-05-22 |
| 199 | Priorizar Casos de Uso | baseline start 2004-08-27 → 2018-05-21; baseline finish 2004-08-27 → 2018-05-22 |
| 200 | **Refinar la Definición del Sistema** | baseline start 2004-08-27 → 2018-05-21; baseline finish 2004-09-16 → 2018-06-08 |
| 201 | Refinar Casos de Uso | baseline start 2004-09-07 → 2018-05-30; baseline finish 2004-09-16 → 2018-06-08 |
| 202 | Refinar Modelo de Caso de Uso | baseline start 2004-08-27 → 2018-05-21; baseline finish 2004-09-10 → 2018-06-04 |
| 203 | Administración de Cambios de Requisitos | baseline start 2004-09-10 → 2018-06-04; baseline finish 2004-09-10 → 2018-06-05 |
| 204 | **Workflow de Análisis** | baseline start 2004-09-16 → 2018-06-08; baseline finish 2004-11-01 → 2018-07-24 |
| 205 | **Análisis del Comportamiento** | baseline start 2004-09-16 → 2018-06-08; baseline finish 2004-11-01 → 2018-07-24 |
| 206 | **Análisis de la Arquitectura** | baseline start 2004-09-16 → 2018-06-08; baseline finish 2004-09-30 → 2018-06-22 |
| 207 | Identifica Clases de Análisis | baseline start 2004-09-16 → 2018-06-08; baseline finish 2004-09-27 → 2018-06-19 |
| 208 | Identificar Paquetes de Análisis | baseline start 2004-09-27 → 2018-06-19; baseline finish 2004-09-30 → 2018-06-22 |
| 209 | **Análisis de Casos de Uso** | baseline start 2004-09-24 → 2018-06-18; baseline finish 2004-10-21 → 2018-07-13 |
| 210 | Diagramas de Clases de Análisis | baseline start 2004-09-24 → 2018-06-18; baseline finish 2004-10-14 → 2018-07-06 |
| 211 | Diagramas de Colaboración | baseline start 2004-09-24 → 2018-06-18; baseline finish 2004-10-21 → 2018-07-13 |

| ID | Task | Other |
| --- | --- | --- |
| 212 | **Análisis de Paquetes** | baseline start 2004-10-21 → 2018-07-13; baseline finish 2004-10-22 → 2018-07-16 |
| 213 | Paquetes de Análisis | baseline start 2004-10-21 → 2018-07-13; baseline finish 2004-10-22 → 2018-07-16 |
| 214 | **Análisis de Datos** | baseline start 2004-10-21 → 2018-07-13; baseline finish 2004-10-27 → 2018-07-19 |
| 215 | Análisis de la BD | baseline start 2004-10-21 → 2018-07-13; baseline finish 2004-10-27 → 2018-07-19 |
| 216 | **Refinar el Análisis** | baseline start 2004-10-15 → 2018-07-10; baseline finish 2004-11-01 → 2018-07-24 |
| 217 | Refinar Diagramas de Clases de Análisis | baseline start 2004-10-15 → 2018-07-10; baseline finish 2004-10-20 → 2018-07-12 |
| 218 | Refinar Diagramas de Colaboración | baseline start 2004-10-22 → 2018-07-16; baseline finish 2004-10-29 → 2018-07-23 |
| 219 | Refinar BD | baseline start 2004-10-28 → 2018-07-20; baseline finish 2004-11-01 → 2018-07-24 |
| 220 | Refinar Paquetes de Análisis | baseline start 2004-10-26 → 2018-07-18; baseline finish 2004-10-27 → 2018-07-19 |
| 221 | **Workflow de Diseño** | baseline start 2004-11-01 → 2018-07-24; baseline finish 2004-12-17 → 2018-09-10 |
| 222 | **Diseño de la Arquitectura** | baseline start 2004-11-01 → 2018-07-24; baseline finish 2004-11-11 → 2018-08-03 |
| 223 | Identifica Clases de Diseño | baseline start 2004-11-01 → 2018-07-24; baseline finish 2004-11-11 → 2018-08-03 |
| 224 | Identificar Paquetes de Diseño | baseline start 2004-11-01 → 2018-07-24; baseline finish 2004-11-05 → 2018-07-30 |
| 225 | **Diseño de Casos de Uso** | baseline start 2004-11-11 → 2018-08-03; baseline finish 2004-12-08 → 2018-08-30 |
| 226 | Diagramas de Clases de Diseño | baseline start 2004-11-11 → 2018-08-03; baseline finish 2004-11-30 → 2018-08-22 |
| 227 | Diagramas de Colaboración | baseline start 2004-11-11 → 2018-08-03; baseline finish 2004-12-08 → 2018-08-30 |
| 228 | Diagrama de Despliegue | baseline start 2004-11-11 → 2018-08-03; baseline finish 2004-11-18 → 2018-08-10 |
| 229 | Diagramas de Estado | baseline start 2004-11-11 → 2018-08-03; baseline finish 2004-11-16 → 2018-08-08 |
| 230 | **Diseño de Paquetes** | baseline start 2004-12-08 → 2018-08-30; baseline finish 2004-12-13 → 2018-09-04 |
| 231 | Paquetes de Diseño | baseline start 2004-12-08 → 2018-08-30; baseline finish 2004-12-13 → 2018-09-04 |
| 232 | **Diseño de Datos** | baseline start 2004-12-08 → 2018-08-30; baseline finish 2004-12-14 → 2018-09-05 |
| 233 | Diseño de la BD | baseline start 2004-12-08 → 2018-08-30; baseline finish 2004-12-14 → 2018-09-05 |
| 234 | **Refinar el Diseño** | baseline start 2004-11-16 → 2018-08-08; baseline finish 2004-12-17 → 2018-09-10 |
| 235 | Refinar Diagramas de Clases de Diseño | baseline start 2004-11-30 → 2018-08-22; baseline finish 2004-12-02 → 2018-08-24 |
| 236 | Refinar Diagramas de Colaboración | baseline start 2004-12-08 → 2018-08-30; baseline finish 2004-12-09 → 2018-08-31 |
| 237 | Refinar Diagrama de Despliegue | baseline start 2004-11-18 → 2018-08-10; baseline finish 2004-11-18 → 2018-08-10 |
| 238 | Refinar Diagramas de Estado | baseline start 2004-11-16 → 2018-08-08; baseline finish 2004-11-18 → 2018-08-10 |
| 239 | Refinar BD | baseline start 2004-12-14 → 2018-09-05; baseline finish 2004-12-17 → 2018-09-10 |
| 240 | Refinar Paquetes de Diseño | baseline start 2004-12-13 → 2018-09-04; baseline finish 2004-12-14 → 2018-09-05 |
| 241 | **Workflow de Implementación y Pruebas** | baseline start 2004-12-17 → 2018-09-10; baseline finish 2005-01-25 → 2018-10-17 |
| 242 | Desarrollo de estructura de aplicación | baseline start 2004-12-23 → 2018-09-14; baseline finish 2005-01-24 → 2018-10-16 |
| 243 | Planeación de la integración de Sistemas | baseline start 2004-12-21 → 2018-09-12; baseline finish 2004-12-23 → 2018-09-14 |
| 244 | Plan de Pruebas | baseline start 2004-12-17 → 2018-09-10; baseline finish 2004-12-21 → 2018-09-12 |
| 245 | Integración de Sistemas | baseline start 2005-01-24 → 2018-10-16; baseline finish 2005-01-25 → 2018-10-17 |
| 246 | Ejecución de Pruebas | baseline start 2005-01-24 → 2018-10-16; baseline finish 2005-01-25 → 2018-10-17 |
| 247 | **Iteración 5** | baseline start 2004-11-01 → 2018-07-24; baseline finish 2005-03-10 → 2018-11-30 |
| 248 | **Workflow de Análisis** | baseline start 2004-11-01 → 2018-07-24; baseline finish 2004-12-15 → 2018-09-06 |
| 249 | **Análisis del Comportamiento** | baseline start 2004-11-01 → 2018-07-24; baseline finish 2004-12-15 → 2018-09-06 |
| 250 | **Análisis de la Arquitectura** | baseline start 2004-11-01 → 2018-07-24; baseline finish 2004-11-15 → 2018-08-07 |
| 251 | Identifica Clases de Análisis | baseline start 2004-11-01 → 2018-07-24; baseline finish 2004-11-10 → 2018-08-02 |
| 252 | Identificar Paquetes de Análisis | baseline start 2004-11-10 → 2018-08-02; baseline finish 2004-11-15 → 2018-08-07 |
| 253 | **Análisis de Casos de Uso** | baseline start 2004-11-09 → 2018-08-01; baseline finish 2004-12-03 → 2018-08-28 |
| 254 | Diagramas de Clases de Análisis | baseline start 2004-11-09 → 2018-08-01; baseline finish 2004-11-29 → 2018-08-21 |
| 255 | Diagramas de Colaboración | baseline start 2004-11-09 → 2018-08-01; baseline finish 2004-12-03 → 2018-08-28 |
| 256 | **Análisis de Paquetes** | baseline start 2004-12-03 → 2018-08-28; baseline finish 2004-12-07 → 2018-08-29 |
| 257 | Paquetes de Análisis | baseline start 2004-12-03 → 2018-08-28; baseline finish 2004-12-07 → 2018-08-29 |
| 258 | **Análisis de Datos** | baseline start 2004-12-03 → 2018-08-28; baseline finish 2004-12-10 → 2018-09-03 |
| 259 | Análisis de la BD | baseline start 2004-12-03 → 2018-08-28; baseline finish 2004-12-10 → 2018-09-03 |
| 260 | **Refinar el Análisis** | baseline start 2004-11-30 → 2018-08-22; baseline finish 2004-12-15 → 2018-09-06 |
| 261 | Refinar Diagramas de Clases de Análisis | baseline start 2004-11-30 → 2018-08-22; baseline finish 2004-12-02 → 2018-08-27 |
| 262 | Refinar Diagramas de Colaboración | baseline start 2004-12-07 → 2018-08-29; baseline finish 2004-12-14 → 2018-09-05 |
| 263 | Refinar BD | baseline start 2004-12-13 → 2018-09-05; baseline finish 2004-12-15 → 2018-09-06 |
| 264 | Refinar Paquetes de Análisis | baseline start 2004-12-08 → 2018-08-31; baseline finish 2004-12-10 → 2018-09-03 |
| 265 | **Workflow de Diseño** | baseline start 2004-12-15 → 2018-09-06; baseline finish 2005-02-01 → 2018-10-24 |
| 266 | **Diseño de la Arquitectura** | baseline start 2004-12-15 → 2018-09-06; baseline finish 2004-12-27 → 2018-09-19 |
| 267 | Identifica Clases de Diseño | baseline start 2004-12-15 → 2018-09-06; baseline finish 2004-12-27 → 2018-09-19 |
| 268 | Identificar Paquetes de Diseño | baseline start 2004-12-15 → 2018-09-06; baseline finish 2004-12-21 → 2018-09-12 |
| 269 | **Diseño de Casos de Uso** | baseline start 2004-12-27 → 2018-09-19; baseline finish 2005-01-21 → 2018-10-15 |
| 270 | Diagramas de Clases de Diseño | baseline start 2004-12-27 → 2018-09-19; baseline finish 2005-01-13 → 2018-10-05 |
| 271 | Diagramas de Colaboración | baseline start 2004-12-27 → 2018-09-19; baseline finish 2005-01-21 → 2018-10-15 |
| 272 | Diagrama de Despliegue | baseline start 2004-12-27 → 2018-09-19; baseline finish 2004-12-31 → 2018-09-25 |
| 273 | Diagramas de Estado | baseline start 2004-12-27 → 2018-09-19; baseline finish 2004-12-30 → 2018-09-21 |
| 274 | **Diseño de Paquetes** | baseline start 2005-01-21 → 2018-10-15; baseline finish 2005-01-26 → 2018-10-18 |
| 275 | Paquetes de Diseño | baseline start 2005-01-21 → 2018-10-15; baseline finish 2005-01-26 → 2018-10-18 |
| 276 | **Diseño de Datos** | baseline start 2005-01-21 → 2018-10-15; baseline finish 2005-01-27 → 2018-10-19 |
| 277 | Diseño de la BD | baseline start 2005-01-21 → 2018-10-15; baseline finish 2005-01-27 → 2018-10-19 |
| 278 | **Refinar el Diseño** | baseline start 2004-12-30 → 2018-09-21; baseline finish 2005-02-01 → 2018-10-24 |
| 279 | Refinar Diagramas de Clases de Diseño | baseline start 2005-01-13 → 2018-10-05; baseline finish 2005-01-17 → 2018-10-10 |
| 280 | Refinar Diagramas de Colaboración | baseline start 2005-01-21 → 2018-10-15; baseline finish 2005-01-24 → 2018-10-17 |
| 281 | Refinar Diagrama de Despliegue | baseline start 2004-12-31 → 2018-09-25; baseline finish 2005-01-03 → 2018-09-26 |

| ID | Task | Other |
| --- | --- | --- |
| 282 | Refinar Diagramas de Estado | baseline start 2004-12-30 → 2018-09-21; baseline finish 2004-12-31 → 2018-09-25 |
| 283 | Refinar BD | baseline start 2005-01-27 → 2018-10-19; baseline finish 2005-02-01 → 2018-10-24 |
| 284 | Refinar Paquetes de Diseño | baseline start 2005-01-26 → 2018-10-18; baseline finish 2005-01-26 → 2018-10-19 |
| 285 | **Workflow de Implementación y Pruebas** | baseline start 2005-02-01 → 2018-10-24; baseline finish 2005-03-10 → 2018-11-30 |
| 286 | Desarrollo de estructura de aplicación | baseline start 2005-02-07 → 2018-10-31; baseline finish 2005-03-09 → 2018-11-29 |
| 287 | Planeación de la integración de Sistemas | baseline start 2005-02-02 → 2018-10-26; baseline finish 2005-02-07 → 2018-10-31 |
| 288 | Plan de Pruebas | baseline start 2005-02-01 → 2018-10-24; baseline finish 2005-02-02 → 2018-10-26 |
| 289 | Integración de Sistemas | baseline start 2005-03-09 → 2018-11-29; baseline finish 2005-03-10 → 2018-11-30 |
| 290 | Ejecución de Pruebas | baseline start 2005-03-09 → 2018-11-29; baseline finish 2005-03-10 → 2018-11-30 |
| 291 | **Fase de Transición** | baseline start 2005-03-10 → 2018-11-30; baseline finish 2005-03-23 → 2018-12-13 |
| 292 | Instalación del Software | baseline start 2005-03-21 → 2018-12-05; baseline finish 2005-03-22 → 2018-12-06 |
| 293 | Migración | baseline start 2005-03-10 → 2018-12-05; baseline finish 2005-03-16 → 2018-12-13 |
| 294 | Capacitación | baseline start 2005-03-16 → 2018-11-30; baseline finish 2005-03-21 → 2018-12-05 |
| 295 | Comprobación de Aceptación | baseline start 2005-03-22 → 2018-12-05; baseline finish 2005-03-23 → 2018-12-07 |

## Version 7 (saved 2018-04-18, file CUATRO_Practica_(Final).mpp)

Note of the change: FIN Seccion 1 de la Parte 2

Last finish 2018-12-13 → 2018-12-19 (+6d).

Changed:

| ID | Task | Start | Finish | Duration | Complete | Total float | Other |
| --- | --- | --- | --- | --- | --- | --- | --- |
| 1 | **Hitos del Proyecto** |  | 2018-12-07 → 2018-12-11 (+4d) | 247.21d → 248.46d |  | 2.58d → 4.25d | baseline start 2017-08-01 → 2017-11-10; baseline finish 2018-12-07 → 2019-03-26 |
| 2 | Inicio del Proyecto |  |  |  |  | 249.79d → 252.71d | baseline start 2017-08-01 → 2017-11-10; baseline finish 2017-08-01 → 2017-11-10 |
| 3 | Definición del Sistema | 2017-08-14 → 2017-08-21 (+7d) | 2017-08-14 → 2017-08-21 (+7d) |  |  | 243.79d → 243.08d | baseline start 2017-08-14 → 2017-11-22; baseline finish 2017-08-14 → 2017-11-22 |
| 4 | 1era Entrega Operativa de Software | 2018-03-16 → 2018-03-23 (+7d) | 2018-03-16 → 2018-03-23 (+7d) |  |  | 136.12d → 135.42d | baseline start 2018-03-16 → 2018-06-26; baseline finish 2018-03-16 → 2018-06-26 |
| 5 | 2a Entrega Operativa de Software | 2018-05-21 → 2018-05-28 (+7d) | 2018-05-21 → 2018-05-28 (+7d) |  |  | 103.79d → 103.08d | baseline start 2018-05-21 → 2018-08-29; baseline finish 2018-05-21 → 2018-08-29 |
| 6 | 3era Entrega Operativa de Software | 2018-10-17 → 2018-10-25 (+8d) | 2018-10-17 → 2018-10-25 (+8d) |  |  | 28.46d → 27.75d | baseline start 2018-10-17 → 2019-01-28; baseline finish 2018-10-17 → 2019-01-28 |
| 7 | 4a Entrega Operativa de Software | 2018-11-30 → 2018-12-07 (+7d) | 2018-11-30 → 2018-12-07 (+7d) |  |  | 6.12d → 5.42d | baseline start 2018-11-30 → 2019-03-13; baseline finish 2018-11-30 → 2019-03-13 |
| 8 | Fin del Proyecto | 2018-12-07 → 2018-12-11 (+4d) | 2018-12-07 → 2018-12-11 (+4d) |  |  | 2.58d → 4.25d | baseline start 2018-12-07 → 2019-03-26; baseline finish 2018-12-07 → 2019-03-26 |
| 10 | **Fase Inicial** |  | 2017-08-16 → 2017-08-21 (+5d) | 7.88d → 9.62d |  | 2.21d → 3.43d | baseline start 2017-08-01 → 2017-11-10; baseline finish 2017-08-16 → 2017-12-01 |
| 11 | **Workflow de Requisitos** |  | 2017-08-14 → 2017-08-21 (+7d) | 6d → 9.62d |  | 2.21d → 0.56d | baseline start 2017-08-01 → 2017-11-10; baseline finish 2017-08-14 → 2017-11-22 |
| 12 | **Analizar el Problema** |  | 2017-08-09 → 2017-08-11 (+2d) | 4d → 5.88d |  | 4.21d → 4.31d | baseline start 2017-08-01 → 2017-11-10; baseline finish 2017-08-09 → 2017-11-17 |
| 13 | Glorario de Términos |  |  |  |  | 7.21d → 9.18d | baseline start 2017-08-01 → 2017-11-10; baseline finish 2017-08-03 → 2017-11-13 |
| 14 | Identificar Actores |  |  |  |  | 5.21d → 7.18d | baseline start 2017-08-01 → 2017-11-10; baseline finish 2017-08-08 → 2017-11-16 |
| 15 | Identificar Casos de Uso |  | 2017-08-09 → 2017-08-11 (+2d) | 4d → 5.88d |  | 4.21d → 4.31d | was named Workflow Administración de la Configuración; constraint none → finish no earlier than 2017-08-11; baseline start 2017-08-01 → 2017-11-10; baseline finish 2017-08-09 → 2017-11-17 |
| 16 | **Definición del Sistema** | 2017-08-01 → 2017-08-08 (+7d) | 2017-08-10 → 2017-08-17 (+7d) | 5d → 5.75d |  | 2.21d → 0.56d | baseline start 2017-08-01 → 2017-11-10; baseline finish 2017-08-10 → 2017-11-21 |
| 17 | Estructurar Modelo Casos de Uso | 2017-08-01 → 2017-08-08 (+7d) | 2017-08-10 → 2017-08-17 (+7d) | 5d → 5.75d |  | 2.21d → 0.56d | constraint none → finish no earlier than 2017-08-17; baseline start 2017-08-01 → 2017-11-10; baseline finish 2017-08-10 → 2017-11-21 |
| 18 | **Definición de Alcance** | 2017-08-10 → 2017-08-18 (+8d) | 2017-08-14 → 2017-08-21 (+7d) |  |  | 2.21d → 0.56d | baseline start 2017-08-10 → 2017-11-21; baseline finish 2017-08-14 → 2017-11-22 |
| 19 | Priorizar Casos de Uso | 2017-08-10 → 2017-08-18 (+8d) | 2017-08-14 → 2017-08-21 (+7d) |  |  | 2.21d → 0.56d | baseline start 2017-08-10 → 2017-11-21; baseline finish 2017-08-14 → 2017-11-22 |
| 20 | Administración de Cambios de Requisitos |  |  |  |  | 6.33d → 8.31d | baseline start 2017-08-01 → 2017-11-13; baseline finish 2017-08-04 → 2017-11-14 |
| 21 | **Workflow Administración de la Configuración** |  | 2017-08-14 → 2017-08-17 (+3d) | 4d → 6d |  | 243.42d → 244.33d | baseline start 2017-08-07 → 2017-11-22; baseline finish 2017-08-14 → 2017-12-01 |
| 22 | Establecer el Proceso de Admon de la Configuración |  |  |  |  | 243.42d → 246.33d | baseline start 2017-08-11 → 2017-11-22; baseline finish 2017-08-14 → 2017-11-23 |
| 23 | Establecer el Entorno de Admon de la Configuración |  | 2017-08-14 → 2017-08-17 (+3d) | 4d → 6d |  | 243.42d → 244.33d | baseline start 2017-08-07 → 2017-11-23; baseline finish 2017-08-14 → 2017-12-01 |
| 24 | **Workflow Administración del Proyecto** |  |  |  |  | 241.92d → 244.83d | baseline start 2017-08-04 → 2017-11-15; baseline finish 2017-08-16 → 2017-11-27 |
| 25 | Análisis de Riesgos |  |  |  |  | 241.92d → 244.83d | baseline start 2017-08-07 → 2017-11-16; baseline finish 2017-08-16 → 2017-11-27 |
| 26 | Desarrollar la Planificación del Proyecto |  |  |  |  | 241.92d → 244.83d | baseline start 2017-08-04 → 2017-11-15; baseline finish 2017-08-07 → 2017-11-16 |
| 27 | **Fase de Elaboración** | 2017-08-14 → 2017-08-21 A (+7d) | 2018-05-21 → 2018-05-28 (+7d) |  |  | 2.21d → 0d | baseline start 2017-08-14 → 2017-11-22; baseline finish 2018-05-21 → 2018-08-29 |
| 28 | **Iteración 1** | 2017-08-14 → 2017-08-21 A (+7d) | 2017-12-04 → 2017-12-12 (+8d) |  | 0% → 1% | 2.21d → 83.67d | baseline start 2017-08-14 → 2017-11-22; baseline finish 2017-12-04 → 2018-03-15 |
| 29 | **Workflow de Requisitos** | 2017-08-14 → 2017-08-21 A (+7d) | 2017-09-01 → 2017-09-08 (+7d) |  | 0% → 8% | 2.21d → 0d | baseline start 2017-08-14 → 2017-11-22; baseline finish 2017-09-01 → 2017-12-12 |
| 30 | **Analizar el Problema** | 2017-08-14 → 2017-08-21 (+7d) | 2017-08-15 → 2017-08-22 (+7d) |  |  | 11.71d → 9.5d | baseline start 2017-08-14 → 2017-11-22; baseline finish 2017-08-15 → 2017-11-23 |
| 31 | Glorario de Términos | 2017-08-14 → 2017-08-21 (+7d) | 2017-08-15 → 2017-08-22 (+7d) |  |  | 11.71d → 9.5d | baseline start 2017-08-14 → 2017-11-22; baseline finish 2017-08-15 → 2017-11-23 |
| 32 | **Definición del Sistema** | 2017-08-14 → 2017-08-21 (+7d) | 2017-08-24 → 2017-08-31 (+7d) |  |  | 2.21d → 1.5d | baseline start 2017-08-14 → 2017-11-22; baseline finish 2017-08-24 → 2017-12-05 |
| 33 | Detallar Casos de Uso | 2017-08-14 → 2017-08-21 (+7d) | 2017-08-23 → 2017-08-30 (+7d) |  |  | 2.21d → 1.5d | baseline start 2017-08-14 → 2017-11-22; baseline finish 2017-08-23 → 2017-12-01 |
| 34 | Prototipar Casos de Uso | 2017-08-14 → 2017-08-21 (+7d) | 2017-08-24 → 2017-08-31 (+7d) |  |  | 6.21d → 4d | baseline start 2017-08-14 → 2017-11-22; baseline finish 2017-08-24 → 2017-12-05 |
| 35 | **Definición de Alcance** | 2017-08-14 → 2017-08-21 (+7d) | 2017-08-15 → 2017-08-22 (+7d) |  |  | 11.71d → 9.5d | baseline start 2017-08-14 → 2017-11-22; baseline finish 2017-08-15 → 2017-11-23 |
| 36 | Priorizar Casos de Uso | 2017-08-14 → 2017-08-21 (+7d) | 2017-08-15 → 2017-08-22 (+7d) |  |  | 11.71d → 9.5d | baseline start 2017-08-14 → 2017-11-22; baseline finish 2017-08-15 → 2017-11-23 |
| 37 | **Refinar la Definición del Sistema** | 2017-08-14 → 2017-08-21 A (+7d) | 2017-09-01 → 2017-09-08 (+7d) |  | 0% → 20% | 2.21d → 0d | baseline start 2017-08-14 → 2017-11-22; baseline finish 2017-09-01 → 2017-12-12 |
| 38 | Refinar Casos de Uso | 2017-08-23 → 2017-08-30 A (+7d) | 2017-09-01 → 2017-09-08 (+7d) |  | 0% → 30% | 2.21d → 0d | baseline start 2017-08-23 → 2017-12-01; baseline finish 2017-09-01 → 2017-12-12 |
| 39 | Refinar Modelo de Caso de Uso | 2017-08-14 → 2017-08-21 (+7d) | 2017-08-17 → 2017-08-24 (+7d) |  |  | 9.21d → 7d | baseline start 2017-08-14 → 2017-11-22; baseline finish 2017-08-17 → 2017-11-28 |
| 40 | Administración de Cambios de Requisitos | 2017-08-17 → 2017-08-25 (+8d) | 2017-08-18 → 2017-08-25 (+7d) |  |  | 9.21d → 7d | baseline start 2017-08-17 → 2017-11-28; baseline finish 2017-08-18 → 2017-11-28 |
| 41 | **Workflow de Análisis** | 2017-09-01 → 2017-09-08 (+7d) | 2017-10-17 → 2017-10-24 (+7d) |  |  | 2.21d → 0d | baseline start 2017-09-01 → 2017-12-13; baseline finish 2017-10-17 → 2018-01-25 |
| 42 | **Análisis del Comportamiento** | 2017-09-01 → 2017-09-08 (+7d) | 2017-10-17 → 2017-10-24 (+7d) |  |  | 2.21d → 0d | baseline start 2017-09-01 → 2017-12-13; baseline finish 2017-10-17 → 2018-01-25 |
| 43 | **Análisis de la Arquitectura** | 2017-09-01 → 2017-09-08 (+7d) | 2017-09-15 → 2017-09-22 (+7d) |  |  | 2.21d → 0d | baseline start 2017-09-01 → 2017-12-13; baseline finish 2017-09-15 → 2017-12-26 |
| 44 | Identifica Clases de Análisis | 2017-09-01 → 2017-09-08 (+7d) | 2017-09-12 → 2017-09-19 (+7d) |  |  | 2.21d → 0d | baseline start 2017-09-01 → 2017-12-13; baseline finish 2017-09-12 → 2017-12-21 |
| 45 | Identificar Paquetes de Análisis | 2017-09-12 → 2017-09-20 (+8d) | 2017-09-15 → 2017-09-22 (+7d) |  |  | 17.54d → 15.33d | baseline start 2017-09-12 → 2017-12-22; baseline finish 2017-09-15 → 2017-12-26 |
| 46 | **Análisis de Casos de Uso** | 2017-09-11 → 2017-09-18 (+7d) | 2017-10-06 → 2017-10-13 (+7d) |  |  | 2.21d → 0d | baseline start 2017-09-11 → 2017-12-20; baseline finish 2017-10-06 → 2018-01-16 |
| 47 | Diagramas de Clases de Análisis | 2017-09-11 → 2017-09-18 (+7d) | 2017-09-29 → 2017-10-06 (+7d) |  |  | 5.54d → 3.33d | baseline start 2017-09-11 → 2017-12-20; baseline finish 2017-09-29 → 2018-01-09 |
| 48 | Diagramas de Colaboración | 2017-09-11 → 2017-09-18 (+7d) | 2017-10-06 → 2017-10-13 (+7d) |  |  | 2.21d → 0d | baseline start 2017-09-11 → 2017-12-20; baseline finish 2017-10-06 → 2018-01-16 |
| 49 | **Análisis de Paquetes** | 2017-10-06 → 2017-10-13 (+7d) | 2017-10-09 → 2017-10-17 (+8d) |  |  | 4.21d → 2d | baseline start 2017-10-06 → 2018-01-16; baseline finish 2017-10-09 → 2018-01-18 |
| 50 | Paquetes de Análisis | 2017-10-06 → 2017-10-13 (+7d) | 2017-10-09 → 2017-10-17 (+8d) |  |  | 4.21d → 2d | baseline start 2017-10-06 → 2018-01-16; baseline finish 2017-10-09 → 2018-01-18 |
| 51 | **Análisis de Datos** | 2017-10-06 → 2017-10-13 (+7d) | 2017-10-12 → 2017-10-19 (+7d) |  |  | 2.21d → 0d | baseline start 2017-10-06 → 2018-01-16; baseline finish 2017-10-12 → 2018-01-23 |
| 52 | Análisis de la BD | 2017-10-06 → 2017-10-13 (+7d) | 2017-10-12 → 2017-10-19 (+7d) |  |  | 2.21d → 0d | baseline start 2017-10-06 → 2018-01-16; baseline finish 2017-10-12 → 2018-01-23 |
| 53 | **Refinar el Análisis** | 2017-10-03 → 2017-10-10 (+7d) | 2017-10-17 → 2017-10-24 (+7d) |  |  | 2.21d → 0d | baseline start 2017-10-03 → 2018-01-11; baseline finish 2017-10-17 → 2018-01-25 |
| 54 | Refinar Diagramas de Clases de Análisis | 2017-10-03 → 2017-10-10 (+7d) | 2017-10-05 → 2017-10-12 (+7d) |  |  | 7.88d → 5.67d | baseline start 2017-10-03 → 2018-01-11; baseline finish 2017-10-05 → 2018-01-15 |
| 55 | Refinar Diagramas de Colaboración | 2017-10-09 → 2017-10-17 (+8d) | 2017-10-16 → 2017-10-23 (+7d) |  |  | 2.88d → 0.67d | baseline start 2017-10-09 → 2018-01-18; baseline finish 2017-10-16 → 2018-01-24 |
| 56 | Refinar BD | 2017-10-13 → 2017-10-23 (+10d) | 2017-10-17 → 2017-10-24 (+7d) |  |  | 2.21d → 0d | baseline start 2017-10-13 → 2018-01-24; baseline finish 2017-10-17 → 2018-01-25 |
| 57 | Refinar Paquetes de Análisis | 2017-10-11 → 2017-10-18 (+7d) | 2017-10-12 → 2017-10-19 (+7d) |  |  | 4.21d → 2d | baseline start 2017-10-11 → 2018-01-19; baseline finish 2017-10-12 → 2018-01-23 |
| 58 | **Workflow de Diseño** | 2017-10-17 → 2017-10-24 (+7d) | 2017-12-04 → 2017-12-12 (+8d) |  |  | 85.88d → 83.67d | baseline start 2017-10-17 → 2018-01-25; baseline finish 2017-12-04 → 2018-03-15 |
| 59 | **Diseño de la Arquitectura** | 2017-10-17 → 2017-10-24 (+7d) | 2017-10-27 → 2017-11-06 (+10d) |  |  | 85.88d → 83.67d | baseline start 2017-10-17 → 2018-01-25; baseline finish 2017-10-27 → 2018-02-07 |
| 60 | Identifica Clases de Diseño | 2017-10-17 → 2017-10-24 (+7d) | 2017-10-27 → 2017-11-06 (+10d) |  |  | 85.88d → 83.67d | baseline start 2017-10-17 → 2018-01-25; baseline finish 2017-10-27 → 2018-02-07 |
| 61 | Identificar Paquetes de Diseño | 2017-10-17 → 2017-10-24 (+7d) | 2017-10-23 → 2017-10-31 (+8d) |  |  | 106.88d → 104.67d | baseline start 2017-10-17 → 2018-01-25; baseline finish 2017-10-23 → 2018-02-01 |
| 62 | **Diseño de Casos de Uso** | 2017-10-27 → 2017-11-06 (+10d) | 2017-11-23 → 2017-11-30 (+7d) |  |  | 85.88d → 83.67d | baseline start 2017-10-27 → 2018-02-07; baseline finish 2017-11-23 → 2018-03-06 |
| 63 | Diagramas de Clases de Diseño | 2017-10-27 → 2017-11-06 (+10d) | 2017-11-15 → 2017-11-23 (+8d) |  |  | 89.88d → 87.67d | baseline start 2017-10-27 → 2018-02-07; baseline finish 2017-11-15 → 2018-02-26 |
| 64 | Diagramas de Colaboración | 2017-10-27 → 2017-11-06 (+10d) | 2017-11-23 → 2017-11-30 (+7d) |  |  | 85.88d → 83.67d | baseline start 2017-10-27 → 2018-02-07; baseline finish 2017-11-23 → 2018-03-06 |
| 65 | Diagrama de Despliegue | 2017-10-27 → 2017-11-06 (+10d) | 2017-11-03 → 2017-11-10 (+7d) |  |  | 100.38d → 98.17d | baseline start 2017-10-27 → 2018-02-07; baseline finish 2017-11-03 → 2018-02-13 |
| 66 | Diagramas de Estado | 2017-10-27 → 2017-11-06 (+10d) | 2017-11-01 → 2017-11-09 (+8d) |  |  | 100.88d → 98.67d | baseline start 2017-10-27 → 2018-02-07; baseline finish 2017-11-01 → 2018-02-12 |
| 67 | **Diseño de Paquetes** | 2017-11-23 → 2017-11-30 (+7d) | 2017-11-28 → 2017-12-05 (+7d) |  |  | 88.38d → 86.17d | baseline start 2017-11-23 → 2018-03-06; baseline finish 2017-11-28 → 2018-03-08 |
| 68 | Paquetes de Diseño | 2017-11-23 → 2017-11-30 (+7d) | 2017-11-28 → 2017-12-05 (+7d) |  |  | 88.38d → 86.17d | baseline start 2017-11-23 → 2018-03-06; baseline finish 2017-11-28 → 2018-03-08 |
| 69 | **Diseño de Datos** | 2017-11-23 → 2017-11-30 (+7d) | 2017-11-29 → 2017-12-07 (+8d) |  |  | 85.88d → 83.67d | baseline start 2017-11-23 → 2018-03-06; baseline finish 2017-11-29 → 2018-03-12 |
| 70 | Diseño de la BD | 2017-11-23 → 2017-11-30 (+7d) | 2017-11-29 → 2017-12-07 (+8d) |  |  | 85.88d → 83.67d | baseline start 2017-11-23 → 2018-03-06; baseline finish 2017-11-29 → 2018-03-12 |
| 71 | **Refinar el Diseño** | 2017-11-01 → 2017-11-09 (+8d) | 2017-12-04 → 2017-12-12 (+8d) |  |  | 85.88d → 83.67d | baseline start 2017-11-01 → 2018-02-12; baseline finish 2017-12-04 → 2018-03-15 |

| ID | Task | Start | Finish | Total float | Other |
| --- | --- | --- | --- | --- | --- |
| 72 | Refinar Diagramas de Clases de Diseño | 2017-11-15 → 2017-11-23 (+8d) | 2017-11-17 → 2017-11-27 (+10d) | 93.38d → 91.17d | baseline start 2017-11-15 → 2018-02-26; baseline finish 2017-11-17 → 2018-02-28 |
| 73 | Refinar Diagramas de Colaboración | 2017-11-23 → 2017-11-30 (+7d) | 2017-11-24 → 2017-12-04 (+10d) | 89.88d → 87.67d | baseline start 2017-11-23 → 2018-03-06; baseline finish 2017-11-24 → 2018-03-07 |
| 74 | Refinar Diagrama de Despliegue | 2017-11-03 → 2017-11-10 (+7d) | 2017-11-03 → 2017-11-13 (+10d) | 100.38d → 98.17d | baseline start 2017-11-03 → 2018-02-13; baseline finish 2017-11-03 → 2018-02-14 |
| 75 | Refinar Diagramas de Estado | 2017-11-01 → 2017-11-09 (+8d) | 2017-11-03 → 2017-11-10 (+7d) | 100.88d → 98.67d | baseline start 2017-11-01 → 2018-02-12; baseline finish 2017-11-03 → 2018-02-13 |
| 76 | Refinar BD | 2017-11-29 → 2017-12-07 (+8d) | 2017-12-04 → 2017-12-12 (+8d) | 85.88d → 83.67d | baseline start 2017-11-29 → 2018-03-12; baseline finish 2017-12-04 → 2018-03-15 |
| 77 | Refinar Paquetes de Diseño | 2017-11-28 → 2017-12-05 (+7d) | 2017-11-29 → 2017-12-06 (+7d) | 88.38d → 86.17d | baseline start 2017-11-28 → 2018-03-08; baseline finish 2017-11-29 → 2018-03-09 |
| 78 | **Iteración 2** | 2017-10-17 → 2017-10-24 (+7d) | 2018-03-16 → 2018-03-23 (+7d) | 2.21d → 0d | baseline start 2017-10-17 → 2018-01-25; baseline finish 2018-03-16 → 2018-06-26 |
| 79 | **Workflow de Requisitos** | 2017-10-17 → 2017-10-24 (+7d) | 2017-11-06 → 2017-11-14 (+8d) | 2.21d → 0d | baseline start 2017-10-17 → 2018-01-25; baseline finish 2017-11-06 → 2018-02-15 |
| 80 | **Analizar el Problema** | 2017-10-17 → 2017-10-24 (+7d) | 2017-10-18 → 2017-10-25 (+7d) | 11.71d → 9.5d | baseline start 2017-10-17 → 2018-01-25; baseline finish 2017-10-18 → 2018-01-26 |
| 81 | Glorario de Términos | 2017-10-17 → 2017-10-24 (+7d) | 2017-10-18 → 2017-10-25 (+7d) | 11.71d → 9.5d | baseline start 2017-10-17 → 2018-01-25; baseline finish 2017-10-18 → 2018-01-26 |
| 82 | **Definición del Sistema** | 2017-10-17 → 2017-10-24 (+7d) | 2017-10-27 → 2017-11-06 (+10d) | 2.21d → 0d | baseline start 2017-10-17 → 2018-01-25; baseline finish 2017-10-27 → 2018-02-07 |
| 83 | Detallar Casos de Uso | 2017-10-17 → 2017-10-24 (+7d) | 2017-10-26 → 2017-11-02 (+7d) | 2.21d → 0d | baseline start 2017-10-17 → 2018-01-25; baseline finish 2017-10-26 → 2018-02-06 |
| 84 | Prototipar Casos de Uso | 2017-10-17 → 2017-10-24 (+7d) | 2017-10-27 → 2017-11-06 (+10d) | 6.21d → 4d | baseline start 2017-10-17 → 2018-01-25; baseline finish 2017-10-27 → 2018-02-07 |
| 85 | **Definición de Alcance** | 2017-10-17 → 2017-10-24 (+7d) | 2017-10-18 → 2017-10-25 (+7d) | 11.71d → 9.5d | baseline start 2017-10-17 → 2018-01-25; baseline finish 2017-10-18 → 2018-01-26 |
| 86 | Priorizar Casos de Uso | 2017-10-17 → 2017-10-24 (+7d) | 2017-10-18 → 2017-10-25 (+7d) | 11.71d → 9.5d | baseline start 2017-10-17 → 2018-01-25; baseline finish 2017-10-18 → 2018-01-26 |
| 87 | **Refinar la Definición del Sistema** | 2017-10-17 → 2017-10-24 (+7d) | 2017-11-06 → 2017-11-14 (+8d) | 2.21d → 0d | baseline start 2017-10-17 → 2018-01-25; baseline finish 2017-11-06 → 2018-02-15 |
| 88 | Refinar Casos de Uso | 2017-10-26 → 2017-11-02 (+7d) | 2017-11-06 → 2017-11-14 (+8d) | 2.21d → 0d | baseline start 2017-10-26 → 2018-02-06; baseline finish 2017-11-06 → 2018-02-15 |
| 89 | Refinar Modelo de Caso de Uso | 2017-10-17 → 2017-10-24 (+7d) | 2017-11-01 → 2017-11-08 (+7d) | 4.38d → 2.17d | baseline start 2017-10-17 → 2018-01-25; baseline finish 2017-11-01 → 2018-02-09 |
| 90 | Administración de Cambios de Requisitos | 2017-11-01 → 2017-11-08 (+7d) | 2017-11-01 → 2017-11-08 (+7d) | 4.38d → 2.17d | baseline start 2017-11-01 → 2018-02-09; baseline finish 2017-11-01 → 2018-02-09 |
| 91 | **Workflow de Análisis** | 2017-11-06 → 2017-11-14 (+8d) | 2017-12-20 → 2017-12-27 (+7d) | 2.21d → 0d | baseline start 2017-11-06 → 2018-02-15; baseline finish 2017-12-20 → 2018-03-30 |
| 92 | **Análisis del Comportamiento** | 2017-11-06 → 2017-11-14 (+8d) | 2017-12-20 → 2017-12-27 (+7d) | 2.21d → 0d | baseline start 2017-11-06 → 2018-02-15; baseline finish 2017-12-20 → 2018-03-30 |
| 93 | **Análisis de la Arquitectura** | 2017-11-06 → 2017-11-14 (+8d) | 2017-11-20 → 2017-11-28 (+8d) | 2.21d → 0d | baseline start 2017-11-06 → 2018-02-15; baseline finish 2017-11-20 → 2018-03-01 |
| 94 | Identifica Clases de Análisis | 2017-11-06 → 2017-11-14 (+8d) | 2017-11-15 → 2017-11-23 (+8d) | 2.21d → 0d | baseline start 2017-11-06 → 2018-02-15; baseline finish 2017-11-15 → 2018-02-26 |
| 95 | Identificar Paquetes de Análisis | 2017-11-15 → 2017-11-23 (+8d) | 2017-11-20 → 2017-11-28 (+8d) | 17.54d → 15.33d | baseline start 2017-11-15 → 2018-02-26; baseline finish 2017-11-20 → 2018-03-01 |
| 96 | **Análisis de Casos de Uso** | 2017-11-14 → 2017-11-21 (+7d) | 2017-12-11 → 2017-12-18 (+7d) | 2.21d → 0d | baseline start 2017-11-14 → 2018-02-22; baseline finish 2017-12-11 → 2018-03-21 |
| 97 | Diagramas de Clases de Análisis | 2017-11-14 → 2017-11-21 (+7d) | 2017-12-04 → 2017-12-12 (+8d) | 5.54d → 3.33d | baseline start 2017-11-14 → 2018-02-22; baseline finish 2017-12-04 → 2018-03-15 |
| 98 | Diagramas de Colaboración | 2017-11-14 → 2017-11-21 (+7d) | 2017-12-11 → 2017-12-18 (+7d) | 2.21d → 0d | baseline start 2017-11-14 → 2018-02-22; baseline finish 2017-12-11 → 2018-03-21 |
| 99 | **Análisis de Paquetes** | 2017-12-11 → 2017-12-18 (+7d) | 2017-12-13 → 2017-12-20 (+7d) | 4.21d → 2d | baseline start 2017-12-11 → 2018-03-21; baseline finish 2017-12-13 → 2018-03-23 |
| 100 | Paquetes de Análisis | 2017-12-11 → 2017-12-18 (+7d) | 2017-12-13 → 2017-12-20 (+7d) | 4.21d → 2d | baseline start 2017-12-11 → 2018-03-21; baseline finish 2017-12-13 → 2018-03-23 |
| 101 | **Análisis de Datos** | 2017-12-11 → 2017-12-18 (+7d) | 2017-12-15 → 2017-12-22 (+7d) | 2.21d → 0d | baseline start 2017-12-11 → 2018-03-21; baseline finish 2017-12-15 → 2018-03-28 |
| 102 | Análisis de la BD | 2017-12-11 → 2017-12-18 (+7d) | 2017-12-15 → 2017-12-22 (+7d) | 2.21d → 0d | baseline start 2017-12-11 → 2018-03-21; baseline finish 2017-12-15 → 2018-03-28 |
| 103 | **Refinar el Análisis** | 2017-12-06 → 2017-12-13 (+7d) | 2017-12-20 → 2017-12-27 (+7d) | 2.21d → 0d | baseline start 2017-12-06 → 2018-03-16; baseline finish 2017-12-20 → 2018-03-30 |
| 104 | Refinar Diagramas de Clases de Análisis | 2017-12-06 → 2017-12-13 (+7d) | 2017-12-08 → 2017-12-15 (+7d) | 7.88d → 5.67d | baseline start 2017-12-06 → 2018-03-16; baseline finish 2017-12-08 → 2018-03-20 |
| 105 | Refinar Diagramas de Colaboración | 2017-12-13 → 2017-12-20 (+7d) | 2017-12-19 → 2017-12-26 (+7d) | 2.88d → 0.67d | baseline start 2017-12-13 → 2018-03-23; baseline finish 2017-12-19 → 2018-03-29 |
| 106 | Refinar BD | 2017-12-19 → 2017-12-26 (+7d) | 2017-12-20 → 2017-12-27 (+7d) | 2.21d → 0d | baseline start 2017-12-19 → 2018-03-29; baseline finish 2017-12-20 → 2018-03-30 |
| 107 | Refinar Paquetes de Análisis | 2017-12-14 → 2017-12-21 (+7d) | 2017-12-15 → 2017-12-22 (+7d) | 4.21d → 2d | baseline start 2017-12-14 → 2018-03-26; baseline finish 2017-12-15 → 2018-03-28 |
| 108 | **Workflow de Diseño** | 2017-12-20 → 2017-12-27 (+7d) | 2018-02-07 → 2018-02-14 (+7d) | 34.54d → 32.33d | baseline start 2017-12-20 → 2018-03-30; baseline finish 2018-02-07 → 2018-05-18 |
| 109 | **Diseño de la Arquitectura** | 2017-12-20 → 2017-12-27 (+7d) | 2018-01-02 → 2018-01-09 (+7d) | 34.54d → 32.33d | baseline start 2017-12-20 → 2018-03-30; baseline finish 2018-01-02 → 2018-04-12 |
| 110 | Identifica Clases de Diseño | 2017-12-20 → 2017-12-27 (+7d) | 2018-01-02 → 2018-01-09 (+7d) | 34.54d → 32.33d | baseline start 2017-12-20 → 2018-03-30; baseline finish 2018-01-02 → 2018-04-12 |
| 111 | Identificar Paquetes de Diseño | 2017-12-20 → 2017-12-27 (+7d) | 2017-12-27 → 2018-01-03 (+7d) | 55.54d → 53.33d | baseline start 2017-12-20 → 2018-03-30; baseline finish 2017-12-27 → 2018-04-06 |
| 112 | **Diseño de Casos de Uso** | 2018-01-02 → 2018-01-09 (+7d) | 2018-01-26 → 2018-02-02 (+7d) | 34.54d → 32.33d | baseline start 2018-01-02 → 2018-04-12; baseline finish 2018-01-26 → 2018-05-09 |
| 113 | Diagramas de Clases de Diseño | 2018-01-02 → 2018-01-09 (+7d) | 2018-01-19 → 2018-01-26 (+7d) | 38.54d → 36.33d | baseline start 2018-01-02 → 2018-04-12; baseline finish 2018-01-19 → 2018-05-01 |
| 114 | Diagramas de Colaboración | 2018-01-02 → 2018-01-09 (+7d) | 2018-01-26 → 2018-02-02 (+7d) | 34.54d → 32.33d | baseline start 2018-01-02 → 2018-04-12; baseline finish 2018-01-26 → 2018-05-09 |
| 115 | Diagrama de Despliegue | 2018-01-02 → 2018-01-09 (+7d) | 2018-01-08 → 2018-01-15 (+7d) | 49.04d → 46.83d | baseline start 2018-01-02 → 2018-04-12; baseline finish 2018-01-08 → 2018-04-18 |
| 116 | Diagramas de Estado | 2018-01-02 → 2018-01-09 (+7d) | 2018-01-05 → 2018-01-12 (+7d) | 49.54d → 47.33d | baseline start 2018-01-02 → 2018-04-12; baseline finish 2018-01-05 → 2018-04-17 |
| 117 | **Diseño de Paquetes** | 2018-01-26 → 2018-02-02 (+7d) | 2018-01-31 → 2018-02-07 (+7d) | 37.04d → 34.83d | baseline start 2018-01-26 → 2018-05-09; baseline finish 2018-01-31 → 2018-05-11 |
| 118 | Paquetes de Diseño | 2018-01-26 → 2018-02-02 (+7d) | 2018-01-31 → 2018-02-07 (+7d) | 37.04d → 34.83d | baseline start 2018-01-26 → 2018-05-09; baseline finish 2018-01-31 → 2018-05-11 |
| 119 | **Diseño de Datos** | 2018-01-26 → 2018-02-02 (+7d) | 2018-02-02 → 2018-02-09 (+7d) | 34.54d → 32.33d | baseline start 2018-01-26 → 2018-05-09; baseline finish 2018-02-02 → 2018-05-15 |
| 120 | Diseño de la BD | 2018-01-26 → 2018-02-02 (+7d) | 2018-02-02 → 2018-02-09 (+7d) | 34.54d → 32.33d | baseline start 2018-01-26 → 2018-05-09; baseline finish 2018-02-02 → 2018-05-15 |
| 121 | **Refinar el Diseño** | 2018-01-05 → 2018-01-12 (+7d) | 2018-02-07 → 2018-02-14 (+7d) | 34.54d → 32.33d | baseline start 2018-01-05 → 2018-04-17; baseline finish 2018-02-07 → 2018-05-18 |
| 122 | Refinar Diagramas de Clases de Diseño | 2018-01-19 → 2018-01-26 (+7d) | 2018-01-23 → 2018-01-30 (+7d) | 42.04d → 39.83d | baseline start 2018-01-19 → 2018-05-01; baseline finish 2018-01-23 → 2018-05-03 |
| 123 | Refinar Diagramas de Colaboración | 2018-01-26 → 2018-02-02 (+7d) | 2018-01-30 → 2018-02-06 (+7d) | 38.54d → 36.33d | baseline start 2018-01-26 → 2018-05-09; baseline finish 2018-01-30 → 2018-05-10 |
| 124 | Refinar Diagrama de Despliegue | 2018-01-08 → 2018-01-15 (+7d) | 2018-01-09 → 2018-01-16 (+7d) | 49.04d → 46.83d | baseline start 2018-01-08 → 2018-04-18; baseline finish 2018-01-09 → 2018-04-19 |
| 125 | Refinar Diagramas de Estado | 2018-01-05 → 2018-01-12 (+7d) | 2018-01-08 → 2018-01-15 (+7d) | 49.54d → 47.33d | baseline start 2018-01-05 → 2018-04-17; baseline finish 2018-01-08 → 2018-04-18 |
| 126 | Refinar BD | 2018-02-02 → 2018-02-09 (+7d) | 2018-02-07 → 2018-02-14 (+7d) | 34.54d → 32.33d | baseline start 2018-02-02 → 2018-05-15; baseline finish 2018-02-07 → 2018-05-18 |
| 127 | Refinar Paquetes de Diseño | 2018-01-31 → 2018-02-07 (+7d) | 2018-02-01 → 2018-02-08 (+7d) | 37.04d → 34.83d | baseline start 2018-01-31 → 2018-05-11; baseline finish 2018-02-01 → 2018-05-14 |
| 128 | **Workflow de Implementación y Pruebas** | 2018-02-07 → 2018-02-14 (+7d) | 2018-03-16 → 2018-03-23 (+7d) | 34.54d → 32.33d | baseline start 2018-02-07 → 2018-05-18; baseline finish 2018-03-16 → 2018-06-26 |
| 129 | Desarrollo de estructura de aplicación | 2018-02-13 → 2018-02-20 (+7d) | 2018-03-14 → 2018-03-21 (+7d) | 34.54d → 32.33d | baseline start 2018-02-13 → 2018-05-24; baseline finish 2018-03-14 → 2018-06-22 |
| 130 | Planeación de la integración de Sistemas | 2018-02-08 → 2018-02-15 (+7d) | 2018-02-13 → 2018-02-20 (+7d) | 34.54d → 32.33d | baseline start 2018-02-08 → 2018-05-21; baseline finish 2018-02-13 → 2018-05-24 |
| 131 | Plan de Pruebas | 2018-02-07 → 2018-02-14 (+7d) | 2018-02-08 → 2018-02-15 (+7d) | 34.54d → 32.33d | baseline start 2018-02-07 → 2018-05-18; baseline finish 2018-02-08 → 2018-05-21 |
| 132 | Integración de Sistemas | 2018-03-14 → 2018-03-21 (+7d) | 2018-03-16 → 2018-03-23 (+7d) | 34.54d → 32.33d | baseline start 2018-03-14 → 2018-06-22; baseline finish 2018-03-16 → 2018-06-26 |
| 133 | Ejecución de Pruebas | 2018-03-14 → 2018-03-21 (+7d) | 2018-03-16 → 2018-03-23 (+7d) | 34.54d → 32.33d | baseline start 2018-03-14 → 2018-06-22; baseline finish 2018-03-16 → 2018-06-26 |
| 134 | **Iteración 3** | 2017-12-20 → 2017-12-27 (+7d) | 2018-05-21 → 2018-05-28 (+7d) | 2.21d → 0d | baseline start 2017-12-20 → 2018-03-30; baseline finish 2018-05-21 → 2018-08-29 |
| 135 | **Workflow de Requisitos** | 2017-12-20 → 2017-12-27 (+7d) | 2018-01-10 → 2018-01-17 (+7d) | 2.21d → 0d | baseline start 2017-12-20 → 2018-03-30; baseline finish 2018-01-10 → 2018-04-20 |
| 136 | **Analizar el Problema** | 2017-12-20 → 2017-12-27 (+7d) | 2017-12-21 → 2017-12-28 (+7d) | 11.71d → 9.5d | baseline start 2017-12-20 → 2018-03-30; baseline finish 2017-12-21 → 2018-04-02 |
| 137 | Glorario de Términos | 2017-12-20 → 2017-12-27 (+7d) | 2017-12-21 → 2017-12-28 (+7d) | 11.71d → 9.5d | baseline start 2017-12-20 → 2018-03-30; baseline finish 2017-12-21 → 2018-04-02 |
| 138 | **Definición del Sistema** | 2017-12-20 → 2017-12-27 (+7d) | 2018-01-02 → 2018-01-09 (+7d) | 2.21d → 0d | baseline start 2017-12-20 → 2018-03-30; baseline finish 2018-01-02 → 2018-04-12 |
| 139 | Detallar Casos de Uso | 2017-12-20 → 2017-12-27 (+7d) | 2017-12-29 → 2018-01-05 (+7d) | 2.21d → 0d | baseline start 2017-12-20 → 2018-03-30; baseline finish 2017-12-29 → 2018-04-11 |
| 140 | Prototipar Casos de Uso | 2017-12-20 → 2017-12-27 (+7d) | 2018-01-02 → 2018-01-09 (+7d) | 6.21d → 4d | baseline start 2017-12-20 → 2018-03-30; baseline finish 2018-01-02 → 2018-04-12 |
| 141 | **Definición de Alcance** | 2017-12-20 → 2017-12-27 (+7d) | 2017-12-21 → 2017-12-28 (+7d) | 11.71d → 9.5d | baseline start 2017-12-20 → 2018-03-30; baseline finish 2017-12-21 → 2018-04-02 |

| ID | Task | Start | Finish | Total float | Other |
| --- | --- | --- | --- | --- | --- |
| 142 | Priorizar Casos de Uso | 2017-12-20 → 2017-12-27 (+7d) | 2017-12-21 → 2017-12-28 (+7d) | 11.71d → 9.5d | baseline start 2017-12-20 → 2018-03-30; baseline finish 2017-12-21 → 2018-04-02 |
| 143 | **Refinar la Definición del Sistema** | 2017-12-20 → 2017-12-27 (+7d) | 2018-01-10 → 2018-01-17 (+7d) | 2.21d → 0d | baseline start 2017-12-20 → 2018-03-30; baseline finish 2018-01-10 → 2018-04-20 |
| 144 | Refinar Casos de Uso | 2017-12-29 → 2018-01-05 (+7d) | 2018-01-10 → 2018-01-17 (+7d) | 2.21d → 0d | baseline start 2017-12-29 → 2018-04-11; baseline finish 2018-01-10 → 2018-04-20 |
| 145 | Refinar Modelo de Caso de Uso | 2017-12-20 → 2017-12-27 (+7d) | 2018-01-03 → 2018-01-10 (+7d) | 4.71d → 2.5d | baseline start 2017-12-20 → 2018-03-30; baseline finish 2018-01-03 → 2018-04-13 |
| 146 | Administración de Cambios de Requisitos | 2018-01-03 → 2018-01-10 (+7d) | 2018-01-04 → 2018-01-11 (+7d) | 4.71d → 2.5d | baseline start 2018-01-03 → 2018-04-13; baseline finish 2018-01-04 → 2018-04-16 |
| 147 | **Workflow de Análisis** | 2018-01-10 → 2018-01-17 (+7d) | 2018-02-22 → 2018-03-01 (+7d) | 2.21d → 0d | baseline start 2018-01-10 → 2018-04-20; baseline finish 2018-02-22 → 2018-06-05 |
| 148 | **Análisis del Comportamiento** | 2018-01-10 → 2018-01-17 (+7d) | 2018-02-22 → 2018-03-01 (+7d) | 2.21d → 0d | baseline start 2018-01-10 → 2018-04-20; baseline finish 2018-02-22 → 2018-06-05 |
| 149 | **Análisis de la Arquitectura** | 2018-01-10 → 2018-01-17 (+7d) | 2018-01-24 → 2018-01-31 (+7d) | 2.21d → 0d | baseline start 2018-01-10 → 2018-04-20; baseline finish 2018-01-24 → 2018-05-04 |
| 150 | Identifica Clases de Análisis | 2018-01-10 → 2018-01-17 (+7d) | 2018-01-19 → 2018-01-26 (+7d) | 2.21d → 0d | baseline start 2018-01-10 → 2018-04-20; baseline finish 2018-01-19 → 2018-05-01 |
| 151 | Identificar Paquetes de Análisis | 2018-01-19 → 2018-01-26 (+7d) | 2018-01-24 → 2018-01-31 (+7d) | 17.54d → 15.33d | baseline start 2018-01-19 → 2018-05-01; baseline finish 2018-01-24 → 2018-05-04 |
| 152 | **Análisis de Casos de Uso** | 2018-01-17 → 2018-01-24 (+7d) | 2018-02-13 → 2018-02-20 (+7d) | 2.21d → 0d | baseline start 2018-01-17 → 2018-04-27; baseline finish 2018-02-13 → 2018-05-24 |
| 153 | Diagramas de Clases de Análisis | 2018-01-17 → 2018-01-24 (+7d) | 2018-02-07 → 2018-02-14 (+7d) | 5.54d → 3.33d | baseline start 2018-01-17 → 2018-04-27; baseline finish 2018-02-07 → 2018-05-18 |
| 154 | Diagramas de Colaboración | 2018-01-17 → 2018-01-24 (+7d) | 2018-02-13 → 2018-02-20 (+7d) | 2.21d → 0d | baseline start 2018-01-17 → 2018-04-27; baseline finish 2018-02-13 → 2018-05-24 |
| 155 | **Análisis de Paquetes** | 2018-02-13 → 2018-02-21 (+8d) | 2018-02-15 → 2018-02-22 (+7d) | 4.21d → 2d | baseline start 2018-02-13 → 2018-05-25; baseline finish 2018-02-15 → 2018-05-28 |
| 156 | Paquetes de Análisis | 2018-02-13 → 2018-02-21 (+8d) | 2018-02-15 → 2018-02-22 (+7d) | 4.21d → 2d | baseline start 2018-02-13 → 2018-05-25; baseline finish 2018-02-15 → 2018-05-28 |
| 157 | **Análisis de Datos** | 2018-02-13 → 2018-02-21 (+8d) | 2018-02-20 → 2018-02-27 (+7d) | 2.21d → 0d | baseline start 2018-02-13 → 2018-05-25; baseline finish 2018-02-20 → 2018-05-31 |
| 158 | Análisis de la BD | 2018-02-13 → 2018-02-21 (+8d) | 2018-02-20 → 2018-02-27 (+7d) | 2.21d → 0d | baseline start 2018-02-13 → 2018-05-25; baseline finish 2018-02-20 → 2018-05-31 |
| 159 | **Refinar el Análisis** | 2018-02-08 → 2018-02-15 (+7d) | 2018-02-22 → 2018-03-01 (+7d) | 2.21d → 0d | baseline start 2018-02-08 → 2018-05-21; baseline finish 2018-02-22 → 2018-06-05 |
| 160 | Refinar Diagramas de Clases de Análisis | 2018-02-08 → 2018-02-15 (+7d) | 2018-02-12 → 2018-02-20 (+8d) | 7.88d → 5.67d | baseline start 2018-02-08 → 2018-05-21; baseline finish 2018-02-12 → 2018-05-24 |
| 161 | Refinar Diagramas de Colaboración | 2018-02-15 → 2018-02-22 (+7d) | 2018-02-21 → 2018-03-01 (+8d) | 2.88d → 0.67d | baseline start 2018-02-15 → 2018-05-28; baseline finish 2018-02-21 → 2018-06-04 |
| 162 | Refinar BD | 2018-02-21 → 2018-02-28 (+7d) | 2018-02-22 → 2018-03-01 (+7d) | 2.21d → 0d | baseline start 2018-02-21 → 2018-06-01; baseline finish 2018-02-22 → 2018-06-05 |
| 163 | Refinar Paquetes de Análisis | 2018-02-16 → 2018-02-23 (+7d) | 2018-02-20 → 2018-02-27 (+7d) | 4.21d → 2d | baseline start 2018-02-16 → 2018-05-30; baseline finish 2018-02-20 → 2018-05-31 |
| 164 | **Workflow de Diseño** | 2018-02-22 → 2018-03-02 (+8d) | 2018-04-12 → 2018-04-19 (+7d) | 2.21d → 0d | baseline start 2018-02-22 → 2018-06-05; baseline finish 2018-04-12 → 2018-07-23 |
| 165 | **Diseño de la Arquitectura** | 2018-02-22 → 2018-03-02 (+8d) | 2018-03-07 → 2018-03-14 (+7d) | 2.21d → 0d | baseline start 2018-02-22 → 2018-06-05; baseline finish 2018-03-07 → 2018-06-15 |
| 166 | Identifica Clases de Diseño | 2018-02-22 → 2018-03-02 (+8d) | 2018-03-07 → 2018-03-14 (+7d) | 2.21d → 0d | baseline start 2018-02-22 → 2018-06-05; baseline finish 2018-03-07 → 2018-06-15 |
| 167 | Identificar Paquetes de Diseño | 2018-02-22 → 2018-03-02 (+8d) | 2018-03-01 → 2018-03-08 (+7d) | 23.21d → 21d | baseline start 2018-02-22 → 2018-06-05; baseline finish 2018-03-01 → 2018-06-11 |
| 168 | **Diseño de Casos de Uso** | 2018-03-07 → 2018-03-14 (+7d) | 2018-04-03 → 2018-04-10 (+7d) | 2.21d → 0d | baseline start 2018-03-07 → 2018-06-15; baseline finish 2018-04-03 → 2018-07-12 |
| 169 | Diagramas de Clases de Diseño | 2018-03-07 → 2018-03-14 (+7d) | 2018-03-26 → 2018-04-02 (+7d) | 6.21d → 4d | baseline start 2018-03-07 → 2018-06-15; baseline finish 2018-03-26 → 2018-07-04 |
| 170 | Diagramas de Colaboración | 2018-03-07 → 2018-03-14 (+7d) | 2018-04-03 → 2018-04-10 (+7d) | 2.21d → 0d | baseline start 2018-03-07 → 2018-06-15; baseline finish 2018-04-03 → 2018-07-12 |
| 171 | Diagrama de Despliegue | 2018-03-07 → 2018-03-14 (+7d) | 2018-03-13 → 2018-03-20 (+7d) | 16.71d → 14.5d | baseline start 2018-03-07 → 2018-06-15; baseline finish 2018-03-13 → 2018-06-21 |
| 172 | Diagramas de Estado | 2018-03-07 → 2018-03-14 (+7d) | 2018-03-12 → 2018-03-19 (+7d) | 17.21d → 15d | baseline start 2018-03-07 → 2018-06-15; baseline finish 2018-03-12 → 2018-06-20 |
| 173 | **Diseño de Paquetes** | 2018-04-03 → 2018-04-10 (+7d) | 2018-04-05 → 2018-04-12 (+7d) | 4.71d → 2.5d | baseline start 2018-04-03 → 2018-07-12; baseline finish 2018-04-05 → 2018-07-17 |
| 174 | Paquetes de Diseño | 2018-04-03 → 2018-04-10 (+7d) | 2018-04-05 → 2018-04-12 (+7d) | 4.71d → 2.5d | baseline start 2018-04-03 → 2018-07-12; baseline finish 2018-04-05 → 2018-07-17 |
| 175 | **Diseño de Datos** | 2018-04-03 → 2018-04-10 (+7d) | 2018-04-09 → 2018-04-16 (+7d) | 2.21d → 0d | baseline start 2018-04-03 → 2018-07-12; baseline finish 2018-04-09 → 2018-07-18 |
| 176 | Diseño de la BD | 2018-04-03 → 2018-04-10 (+7d) | 2018-04-09 → 2018-04-16 (+7d) | 2.21d → 0d | baseline start 2018-04-03 → 2018-07-12; baseline finish 2018-04-09 → 2018-07-18 |
| 177 | **Refinar el Diseño** | 2018-03-12 → 2018-03-19 (+7d) | 2018-04-12 → 2018-04-19 (+7d) | 2.21d → 0d | baseline start 2018-03-12 → 2018-06-20; baseline finish 2018-04-12 → 2018-07-23 |
| 178 | Refinar Diagramas de Clases de Diseño | 2018-03-26 → 2018-04-02 (+7d) | 2018-03-28 → 2018-04-04 (+7d) | 9.71d → 7.5d | baseline start 2018-03-26 → 2018-07-04; baseline finish 2018-03-28 → 2018-07-06 |
| 179 | Refinar Diagramas de Colaboración | 2018-04-03 → 2018-04-10 (+7d) | 2018-04-04 → 2018-04-11 (+7d) | 6.21d → 4d | baseline start 2018-04-03 → 2018-07-12; baseline finish 2018-04-04 → 2018-07-13 |
| 180 | Refinar Diagrama de Despliegue | 2018-03-13 → 2018-03-21 (+8d) | 2018-03-14 → 2018-03-21 (+7d) | 16.71d → 14.5d | baseline start 2018-03-13 → 2018-06-22; baseline finish 2018-03-14 → 2018-06-22 |
| 181 | Refinar Diagramas de Estado | 2018-03-12 → 2018-03-19 (+7d) | 2018-03-13 → 2018-03-20 (+7d) | 17.21d → 15d | baseline start 2018-03-12 → 2018-06-20; baseline finish 2018-03-13 → 2018-06-21 |
| 182 | Refinar BD | 2018-04-09 → 2018-04-16 (+7d) | 2018-04-12 → 2018-04-19 (+7d) | 2.21d → 0d | baseline start 2018-04-09 → 2018-07-18; baseline finish 2018-04-12 → 2018-07-23 |
| 183 | Refinar Paquetes de Diseño | 2018-04-05 → 2018-04-13 (+8d) | 2018-04-06 → 2018-04-13 (+7d) | 4.71d → 2.5d | baseline start 2018-04-05 → 2018-07-17; baseline finish 2018-04-06 → 2018-07-17 |
| 184 | **Workflow de Implementación y Pruebas** | 2018-04-12 → 2018-04-19 (+7d) | 2018-05-21 → 2018-05-28 (+7d) | 2.21d → 0d | baseline start 2018-04-12 → 2018-07-23; baseline finish 2018-05-21 → 2018-08-29 |
| 185 | Desarrollo de estructura de aplicación | 2018-04-18 → 2018-04-25 (+7d) | 2018-05-17 → 2018-05-24 (+7d) | 2.21d → 0d | baseline start 2018-04-18 → 2018-07-27; baseline finish 2018-05-17 → 2018-08-28 |
| 186 | Planeación de la integración de Sistemas | 2018-04-13 → 2018-04-20 (+7d) | 2018-04-18 → 2018-04-25 (+7d) | 2.21d → 0d | baseline start 2018-04-13 → 2018-07-25; baseline finish 2018-04-18 → 2018-07-27 |
| 187 | Plan de Pruebas | 2018-04-12 → 2018-04-19 (+7d) | 2018-04-13 → 2018-04-20 (+7d) | 2.21d → 0d | baseline start 2018-04-12 → 2018-07-23; baseline finish 2018-04-13 → 2018-07-24 |
| 188 | Integración de Sistemas | 2018-05-17 → 2018-05-25 (+8d) | 2018-05-21 → 2018-05-28 (+7d) | 2.21d → 0d | baseline start 2018-05-17 → 2018-08-28; baseline finish 2018-05-21 → 2018-08-29 |
| 189 | Ejecución de Pruebas | 2018-05-17 → 2018-05-25 (+8d) | 2018-05-21 → 2018-05-28 (+7d) | 2.21d → 0d | baseline start 2018-05-17 → 2018-08-28; baseline finish 2018-05-21 → 2018-08-29 |
| 190 | **Fase de Construcción** | 2018-05-21 → 2018-05-28 (+7d) | 2018-11-30 → 2018-12-07 (+7d) | 2.21d → 0d | baseline start 2018-05-21 → 2018-08-29; baseline finish 2018-11-30 → 2019-03-13 |
| 191 | **Iteración 4** | 2018-05-21 → 2018-05-28 (+7d) | 2018-10-17 → 2018-10-25 (+8d) | 2.21d → 0d | baseline start 2018-05-21 → 2018-08-29; baseline finish 2018-10-17 → 2019-01-28 |
| 192 | **Workflow de Requisitos** | 2018-05-21 → 2018-05-28 (+7d) | 2018-06-08 → 2018-06-15 (+7d) | 2.21d → 0d | baseline start 2018-05-21 → 2018-08-29; baseline finish 2018-06-08 → 2018-09-18 |
| 193 | **Analizar el Problema** | 2018-05-21 → 2018-05-28 (+7d) | 2018-05-22 → 2018-05-29 (+7d) | 11.71d → 9.5d | baseline start 2018-05-21 → 2018-08-29; baseline finish 2018-05-22 → 2018-08-30 |
| 194 | Glorario de Términos | 2018-05-21 → 2018-05-28 (+7d) | 2018-05-22 → 2018-05-29 (+7d) | 11.71d → 9.5d | baseline start 2018-05-21 → 2018-08-29; baseline finish 2018-05-22 → 2018-08-30 |
| 195 | **Definición del Sistema** | 2018-05-21 → 2018-05-28 (+7d) | 2018-05-31 → 2018-06-07 (+7d) | 2.21d → 0d | baseline start 2018-05-21 → 2018-08-29; baseline finish 2018-05-31 → 2018-09-11 |
| 196 | Detallar Casos de Uso | 2018-05-21 → 2018-05-28 (+7d) | 2018-05-30 → 2018-06-06 (+7d) | 2.21d → 0d | baseline start 2018-05-21 → 2018-08-29; baseline finish 2018-05-30 → 2018-09-07 |
| 197 | Prototipar Casos de Uso | 2018-05-21 → 2018-05-28 (+7d) | 2018-05-31 → 2018-06-07 (+7d) | 6.21d → 4d | baseline start 2018-05-21 → 2018-08-29; baseline finish 2018-05-31 → 2018-09-11 |
| 198 | **Definición de Alcance** | 2018-05-21 → 2018-05-28 (+7d) | 2018-05-22 → 2018-05-29 (+7d) | 11.71d → 9.5d | baseline start 2018-05-21 → 2018-08-29; baseline finish 2018-05-22 → 2018-08-30 |
| 199 | Priorizar Casos de Uso | 2018-05-21 → 2018-05-28 (+7d) | 2018-05-22 → 2018-05-29 (+7d) | 11.71d → 9.5d | baseline start 2018-05-21 → 2018-08-29; baseline finish 2018-05-22 → 2018-08-30 |
| 200 | **Refinar la Definición del Sistema** | 2018-05-21 → 2018-05-28 (+7d) | 2018-06-08 → 2018-06-15 (+7d) | 2.21d → 0d | baseline start 2018-05-21 → 2018-08-29; baseline finish 2018-06-08 → 2018-09-18 |
| 201 | Refinar Casos de Uso | 2018-05-30 → 2018-06-06 (+7d) | 2018-06-08 → 2018-06-15 (+7d) | 2.21d → 0d | baseline start 2018-05-30 → 2018-09-07; baseline finish 2018-06-08 → 2018-09-18 |
| 202 | Refinar Modelo de Caso de Uso | 2018-05-21 → 2018-05-28 (+7d) | 2018-06-04 → 2018-06-11 (+7d) | 4.62d → 2.42d | baseline start 2018-05-21 → 2018-08-29; baseline finish 2018-06-04 → 2018-09-12 |
| 203 | Administración de Cambios de Requisitos | 2018-06-04 → 2018-06-11 (+7d) | 2018-06-05 → 2018-06-12 (+7d) | 4.62d → 2.42d | baseline start 2018-06-04 → 2018-09-12; baseline finish 2018-06-05 → 2018-09-13 |
| 204 | **Workflow de Análisis** | 2018-06-08 → 2018-06-15 (+7d) | 2018-07-24 → 2018-07-31 (+7d) | 2.21d → 0d | baseline start 2018-06-08 → 2018-09-19; baseline finish 2018-07-24 → 2018-11-01 |
| 205 | **Análisis del Comportamiento** | 2018-06-08 → 2018-06-15 (+7d) | 2018-07-24 → 2018-07-31 (+7d) | 2.21d → 0d | baseline start 2018-06-08 → 2018-09-19; baseline finish 2018-07-24 → 2018-11-01 |
| 206 | **Análisis de la Arquitectura** | 2018-06-08 → 2018-06-15 (+7d) | 2018-06-22 → 2018-06-29 (+7d) | 2.21d → 0d | baseline start 2018-06-08 → 2018-09-19; baseline finish 2018-06-22 → 2018-10-02 |
| 207 | Identifica Clases de Análisis | 2018-06-08 → 2018-06-15 (+7d) | 2018-06-19 → 2018-06-26 (+7d) | 2.21d → 0d | baseline start 2018-06-08 → 2018-09-19; baseline finish 2018-06-19 → 2018-09-27 |
| 208 | Identificar Paquetes de Análisis | 2018-06-19 → 2018-06-27 (+8d) | 2018-06-22 → 2018-06-29 (+7d) | 17.54d → 15.33d | baseline start 2018-06-19 → 2018-09-28; baseline finish 2018-06-22 → 2018-10-02 |
| 209 | **Análisis de Casos de Uso** | 2018-06-18 → 2018-06-25 (+7d) | 2018-07-13 → 2018-07-20 (+7d) | 2.21d → 0d | baseline start 2018-06-18 → 2018-09-26; baseline finish 2018-07-13 → 2018-10-23 |
| 210 | Diagramas de Clases de Análisis | 2018-06-18 → 2018-06-25 (+7d) | 2018-07-06 → 2018-07-13 (+7d) | 5.54d → 3.33d | baseline start 2018-06-18 → 2018-09-26; baseline finish 2018-07-06 → 2018-10-16 |
| 211 | Diagramas de Colaboración | 2018-06-18 → 2018-06-25 (+7d) | 2018-07-13 → 2018-07-20 (+7d) | 2.21d → 0d | baseline start 2018-06-18 → 2018-09-26; baseline finish 2018-07-13 → 2018-10-23 |

| ID | Task | Start | Finish | Total float | Other |
| --- | --- | --- | --- | --- | --- |
| 212 | **Análisis de Paquetes** | 2018-07-13 → 2018-07-20 (+7d) | 2018-07-16 → 2018-07-24 (+8d) | 4.21d → 2d | baseline start 2018-07-13 → 2018-10-23; baseline finish 2018-07-16 → 2018-10-25 |
| 213 | Paquetes de Análisis | 2018-07-13 → 2018-07-20 (+7d) | 2018-07-16 → 2018-07-24 (+8d) | 4.21d → 2d | baseline start 2018-07-13 → 2018-10-23; baseline finish 2018-07-16 → 2018-10-25 |
| 214 | **Análisis de Datos** | 2018-07-13 → 2018-07-20 (+7d) | 2018-07-19 → 2018-07-26 (+7d) | 2.21d → 0d | baseline start 2018-07-13 → 2018-10-23; baseline finish 2018-07-19 → 2018-10-30 |
| 215 | Análisis de la BD | 2018-07-13 → 2018-07-20 (+7d) | 2018-07-19 → 2018-07-26 (+7d) | 2.21d → 0d | baseline start 2018-07-13 → 2018-10-23; baseline finish 2018-07-19 → 2018-10-30 |
| 216 | **Refinar el Análisis** | 2018-07-10 → 2018-07-17 (+7d) | 2018-07-24 → 2018-07-31 (+7d) | 2.21d → 0d | baseline start 2018-07-10 → 2018-10-18; baseline finish 2018-07-24 → 2018-11-01 |
| 217 | Refinar Diagramas de Clases de Análisis | 2018-07-10 → 2018-07-17 (+7d) | 2018-07-12 → 2018-07-19 (+7d) | 7.88d → 5.67d | baseline start 2018-07-10 → 2018-10-18; baseline finish 2018-07-12 → 2018-10-22 |
| 218 | Refinar Diagramas de Colaboración | 2018-07-16 → 2018-07-24 (+8d) | 2018-07-23 → 2018-07-30 (+7d) | 2.88d → 0.67d | baseline start 2018-07-16 → 2018-10-25; baseline finish 2018-07-23 → 2018-10-31 |
| 219 | Refinar BD | 2018-07-20 → 2018-07-30 (+10d) | 2018-07-24 → 2018-07-31 (+7d) | 2.21d → 0d | baseline start 2018-07-20 → 2018-10-31; baseline finish 2018-07-24 → 2018-11-01 |
| 220 | Refinar Paquetes de Análisis | 2018-07-18 → 2018-07-25 (+7d) | 2018-07-19 → 2018-07-26 (+7d) | 4.21d → 2d | baseline start 2018-07-18 → 2018-10-26; baseline finish 2018-07-19 → 2018-10-30 |
| 221 | **Workflow de Diseño** | 2018-07-24 → 2018-07-31 (+7d) | 2018-09-10 → 2018-09-18 (+8d) | 28.46d → 27.75d | baseline start 2018-07-24 → 2018-11-01; baseline finish 2018-09-10 → 2018-12-20 |
| 222 | **Diseño de la Arquitectura** | 2018-07-24 → 2018-07-31 (+7d) | 2018-08-03 → 2018-08-13 (+10d) | 28.46d → 27.75d | baseline start 2018-07-24 → 2018-11-01; baseline finish 2018-08-03 → 2018-11-14 |
| 223 | Identifica Clases de Diseño | 2018-07-24 → 2018-07-31 (+7d) | 2018-08-03 → 2018-08-13 (+10d) | 28.46d → 27.75d | baseline start 2018-07-24 → 2018-11-01; baseline finish 2018-08-03 → 2018-11-14 |
| 224 | Identificar Paquetes de Diseño | 2018-07-24 → 2018-07-31 (+7d) | 2018-07-30 → 2018-08-07 (+8d) | 49.46d → 48.75d | baseline start 2018-07-24 → 2018-11-01; baseline finish 2018-07-30 → 2018-11-08 |
| 225 | **Diseño de Casos de Uso** | 2018-08-03 → 2018-08-13 (+10d) | 2018-08-30 → 2018-09-06 (+7d) | 28.46d → 27.75d | baseline start 2018-08-03 → 2018-11-14; baseline finish 2018-08-30 → 2018-12-11 |
| 226 | Diagramas de Clases de Diseño | 2018-08-03 → 2018-08-13 (+10d) | 2018-08-22 → 2018-08-30 (+8d) | 32.46d → 31.75d | baseline start 2018-08-03 → 2018-11-14; baseline finish 2018-08-22 → 2018-12-03 |
| 227 | Diagramas de Colaboración | 2018-08-03 → 2018-08-13 (+10d) | 2018-08-30 → 2018-09-06 (+7d) | 28.46d → 27.75d | baseline start 2018-08-03 → 2018-11-14; baseline finish 2018-08-30 → 2018-12-11 |
| 228 | Diagrama de Despliegue | 2018-08-03 → 2018-08-13 (+10d) | 2018-08-10 → 2018-08-17 (+7d) | 42.96d → 42.25d | baseline start 2018-08-03 → 2018-11-14; baseline finish 2018-08-10 → 2018-11-20 |
| 229 | Diagramas de Estado | 2018-08-03 → 2018-08-13 (+10d) | 2018-08-08 → 2018-08-16 (+8d) | 43.46d → 42.75d | baseline start 2018-08-03 → 2018-11-14; baseline finish 2018-08-08 → 2018-11-19 |
| 230 | **Diseño de Paquetes** | 2018-08-30 → 2018-09-06 (+7d) | 2018-09-04 → 2018-09-11 (+7d) | 30.96d → 30.25d | baseline start 2018-08-30 → 2018-12-11; baseline finish 2018-09-04 → 2018-12-13 |
| 231 | Paquetes de Diseño | 2018-08-30 → 2018-09-06 (+7d) | 2018-09-04 → 2018-09-11 (+7d) | 30.96d → 30.25d | baseline start 2018-08-30 → 2018-12-11; baseline finish 2018-09-04 → 2018-12-13 |
| 232 | **Diseño de Datos** | 2018-08-30 → 2018-09-06 (+7d) | 2018-09-05 → 2018-09-13 (+8d) | 28.46d → 27.75d | baseline start 2018-08-30 → 2018-12-11; baseline finish 2018-09-05 → 2018-12-17 |
| 233 | Diseño de la BD | 2018-08-30 → 2018-09-06 (+7d) | 2018-09-05 → 2018-09-13 (+8d) | 28.46d → 27.75d | baseline start 2018-08-30 → 2018-12-11; baseline finish 2018-09-05 → 2018-12-17 |
| 234 | **Refinar el Diseño** | 2018-08-08 → 2018-08-16 (+8d) | 2018-09-10 → 2018-09-18 (+8d) | 28.46d → 27.75d | baseline start 2018-08-08 → 2018-11-19; baseline finish 2018-09-10 → 2018-12-20 |
| 235 | Refinar Diagramas de Clases de Diseño | 2018-08-22 → 2018-08-30 (+8d) | 2018-08-24 → 2018-09-03 (+10d) | 35.96d → 35.25d | baseline start 2018-08-22 → 2018-12-03; baseline finish 2018-08-24 → 2018-12-05 |
| 236 | Refinar Diagramas de Colaboración | 2018-08-30 → 2018-09-06 (+7d) | 2018-08-31 → 2018-09-10 (+10d) | 32.46d → 31.75d | baseline start 2018-08-30 → 2018-12-11; baseline finish 2018-08-31 → 2018-12-12 |
| 237 | Refinar Diagrama de Despliegue | 2018-08-10 → 2018-08-17 (+7d) | 2018-08-10 → 2018-08-20 (+10d) | 42.96d → 42.25d | baseline start 2018-08-10 → 2018-11-20; baseline finish 2018-08-10 → 2018-11-21 |
| 238 | Refinar Diagramas de Estado | 2018-08-08 → 2018-08-16 (+8d) | 2018-08-10 → 2018-08-17 (+7d) | 43.46d → 42.75d | baseline start 2018-08-08 → 2018-11-19; baseline finish 2018-08-10 → 2018-11-20 |
| 239 | Refinar BD | 2018-09-05 → 2018-09-13 (+8d) | 2018-09-10 → 2018-09-18 (+8d) | 28.46d → 27.75d | baseline start 2018-09-05 → 2018-12-17; baseline finish 2018-09-10 → 2018-12-20 |
| 240 | Refinar Paquetes de Diseño | 2018-09-04 → 2018-09-11 (+7d) | 2018-09-05 → 2018-09-12 (+7d) | 30.96d → 30.25d | baseline start 2018-09-04 → 2018-12-13; baseline finish 2018-09-05 → 2018-12-14 |
| 241 | **Workflow de Implementación y Pruebas** | 2018-09-10 → 2018-09-18 (+8d) | 2018-10-17 → 2018-10-25 (+8d) | 28.46d → 27.75d | baseline start 2018-09-10 → 2018-12-20; baseline finish 2018-10-17 → 2019-01-28 |
| 242 | Desarrollo de estructura de aplicación | 2018-09-14 → 2018-09-24 (+10d) | 2018-10-16 → 2018-10-23 (+7d) | 28.46d → 27.75d | baseline start 2018-09-14 → 2018-12-26; baseline finish 2018-10-16 → 2019-01-24 |
| 243 | Planeación de la integración de Sistemas | 2018-09-12 → 2018-09-19 (+7d) | 2018-09-14 → 2018-09-24 (+10d) | 28.46d → 27.75d | baseline start 2018-09-12 → 2018-12-21; baseline finish 2018-09-14 → 2018-12-26 |
| 244 | Plan de Pruebas | 2018-09-10 → 2018-09-18 (+8d) | 2018-09-12 → 2018-09-19 (+7d) | 28.46d → 27.75d | baseline start 2018-09-10 → 2018-12-20; baseline finish 2018-09-12 → 2018-12-21 |
| 245 | Integración de Sistemas | 2018-10-16 → 2018-10-23 (+7d) | 2018-10-17 → 2018-10-25 (+8d) | 28.46d → 27.75d | baseline start 2018-10-16 → 2019-01-24; baseline finish 2018-10-17 → 2019-01-28 |
| 246 | Ejecución de Pruebas | 2018-10-16 → 2018-10-23 (+7d) | 2018-10-17 → 2018-10-25 (+8d) | 28.46d → 27.75d | baseline start 2018-10-16 → 2019-01-24; baseline finish 2018-10-17 → 2019-01-28 |
| 247 | **Iteración 5** | 2018-07-24 → 2018-07-31 (+7d) | 2018-11-30 → 2018-12-07 (+7d) | 2.21d → 0d | baseline start 2018-07-24 → 2018-11-01; baseline finish 2018-11-30 → 2019-03-13 |
| 248 | **Workflow de Análisis** | 2018-07-24 → 2018-07-31 (+7d) | 2018-09-06 → 2018-09-13 (+7d) | 2.21d → 0d | baseline start 2018-07-24 → 2018-11-01; baseline finish 2018-09-06 → 2018-12-17 |
| 249 | **Análisis del Comportamiento** | 2018-07-24 → 2018-07-31 (+7d) | 2018-09-06 → 2018-09-13 (+7d) | 2.21d → 0d | baseline start 2018-07-24 → 2018-11-01; baseline finish 2018-09-06 → 2018-12-17 |
| 250 | **Análisis de la Arquitectura** | 2018-07-24 → 2018-07-31 (+7d) | 2018-08-07 → 2018-08-14 (+7d) | 2.21d → 0d | baseline start 2018-07-24 → 2018-11-01; baseline finish 2018-08-07 → 2018-11-15 |
| 251 | Identifica Clases de Análisis | 2018-07-24 → 2018-07-31 (+7d) | 2018-08-02 → 2018-08-09 (+7d) | 2.21d → 0d | baseline start 2018-07-24 → 2018-11-01; baseline finish 2018-08-02 → 2018-11-13 |
| 252 | Identificar Paquetes de Análisis | 2018-08-02 → 2018-08-09 (+7d) | 2018-08-07 → 2018-08-14 (+7d) | 17.54d → 15.33d | baseline start 2018-08-02 → 2018-11-13; baseline finish 2018-08-07 → 2018-11-15 |
| 253 | **Análisis de Casos de Uso** | 2018-08-01 → 2018-08-08 (+7d) | 2018-08-28 → 2018-09-04 (+7d) | 2.21d → 0d | baseline start 2018-08-01 → 2018-11-09; baseline finish 2018-08-28 → 2018-12-06 |
| 254 | Diagramas de Clases de Análisis | 2018-08-01 → 2018-08-08 (+7d) | 2018-08-21 → 2018-08-28 (+7d) | 5.54d → 3.33d | baseline start 2018-08-01 → 2018-11-09; baseline finish 2018-08-21 → 2018-11-29 |
| 255 | Diagramas de Colaboración | 2018-08-01 → 2018-08-08 (+7d) | 2018-08-28 → 2018-09-04 (+7d) | 2.21d → 0d | baseline start 2018-08-01 → 2018-11-09; baseline finish 2018-08-28 → 2018-12-06 |
| 256 | **Análisis de Paquetes** | 2018-08-28 → 2018-09-04 (+7d) | 2018-08-29 → 2018-09-05 (+7d) | 4.21d → 2d | baseline start 2018-08-28 → 2018-12-06; baseline finish 2018-08-29 → 2018-12-07 |
| 257 | Paquetes de Análisis | 2018-08-28 → 2018-09-04 (+7d) | 2018-08-29 → 2018-09-05 (+7d) | 4.21d → 2d | baseline start 2018-08-28 → 2018-12-06; baseline finish 2018-08-29 → 2018-12-07 |
| 258 | **Análisis de Datos** | 2018-08-28 → 2018-09-04 (+7d) | 2018-09-03 → 2018-09-10 (+7d) | 2.21d → 0d | baseline start 2018-08-28 → 2018-12-06; baseline finish 2018-09-03 → 2018-12-12 |
| 259 | Análisis de la BD | 2018-08-28 → 2018-09-04 (+7d) | 2018-09-03 → 2018-09-10 (+7d) | 2.21d → 0d | baseline start 2018-08-28 → 2018-12-06; baseline finish 2018-09-03 → 2018-12-12 |
| 260 | **Refinar el Análisis** | 2018-08-22 → 2018-08-30 (+8d) | 2018-09-06 → 2018-09-13 (+7d) | 2.21d → 0d | baseline start 2018-08-22 → 2018-12-03; baseline finish 2018-09-06 → 2018-12-17 |
| 261 | Refinar Diagramas de Clases de Análisis | 2018-08-22 → 2018-08-30 (+8d) | 2018-08-27 → 2018-09-03 (+7d) | 7.88d → 5.67d | baseline start 2018-08-22 → 2018-12-03; baseline finish 2018-08-27 → 2018-12-05 |
| 262 | Refinar Diagramas de Colaboración | 2018-08-29 → 2018-09-05 (+7d) | 2018-09-05 → 2018-09-12 (+7d) | 2.88d → 0.67d | baseline start 2018-08-29 → 2018-12-07; baseline finish 2018-09-05 → 2018-12-14 |
| 263 | Refinar BD | 2018-09-05 → 2018-09-12 (+7d) | 2018-09-06 → 2018-09-13 (+7d) | 2.21d → 0d | baseline start 2018-09-05 → 2018-12-14; baseline finish 2018-09-06 → 2018-12-17 |
| 264 | Refinar Paquetes de Análisis | 2018-08-31 → 2018-09-07 (+7d) | 2018-09-03 → 2018-09-10 (+7d) | 4.21d → 2d | baseline start 2018-08-31 → 2018-12-11; baseline finish 2018-09-03 → 2018-12-12 |
| 265 | **Workflow de Diseño** | 2018-09-06 → 2018-09-13 (+7d) | 2018-10-24 → 2018-10-31 (+7d) | 2.21d → 0d | baseline start 2018-09-06 → 2018-12-17; baseline finish 2018-10-24 → 2019-02-01 |
| 266 | **Diseño de la Arquitectura** | 2018-09-06 → 2018-09-13 (+7d) | 2018-09-19 → 2018-09-26 (+7d) | 2.21d → 0d | baseline start 2018-09-06 → 2018-12-17; baseline finish 2018-09-19 → 2018-12-28 |
| 267 | Identifica Clases de Diseño | 2018-09-06 → 2018-09-13 (+7d) | 2018-09-19 → 2018-09-26 (+7d) | 2.21d → 0d | baseline start 2018-09-06 → 2018-12-17; baseline finish 2018-09-19 → 2018-12-28 |
| 268 | Identificar Paquetes de Diseño | 2018-09-06 → 2018-09-13 (+7d) | 2018-09-12 → 2018-09-19 (+7d) | 23.21d → 21d | baseline start 2018-09-06 → 2018-12-17; baseline finish 2018-09-12 → 2018-12-21 |
| 269 | **Diseño de Casos de Uso** | 2018-09-19 → 2018-09-26 (+7d) | 2018-10-15 → 2018-10-22 (+7d) | 2.21d → 0d | baseline start 2018-09-19 → 2018-12-28; baseline finish 2018-10-15 → 2019-01-23 |
| 270 | Diagramas de Clases de Diseño | 2018-09-19 → 2018-09-26 (+7d) | 2018-10-05 → 2018-10-12 (+7d) | 6.21d → 4d | baseline start 2018-09-19 → 2018-12-28; baseline finish 2018-10-05 → 2019-01-16 |
| 271 | Diagramas de Colaboración | 2018-09-19 → 2018-09-26 (+7d) | 2018-10-15 → 2018-10-22 (+7d) | 2.21d → 0d | baseline start 2018-09-19 → 2018-12-28; baseline finish 2018-10-15 → 2019-01-23 |
| 272 | Diagrama de Despliegue | 2018-09-19 → 2018-09-26 (+7d) | 2018-09-25 → 2018-10-02 (+7d) | 16.71d → 14.5d | baseline start 2018-09-19 → 2018-12-28; baseline finish 2018-09-25 → 2019-01-03 |
| 273 | Diagramas de Estado | 2018-09-19 → 2018-09-26 (+7d) | 2018-09-21 → 2018-09-28 (+7d) | 17.21d → 15d | baseline start 2018-09-19 → 2018-12-28; baseline finish 2018-09-21 → 2019-01-02 |
| 274 | **Diseño de Paquetes** | 2018-10-15 → 2018-10-22 (+7d) | 2018-10-18 → 2018-10-25 (+7d) | 4.71d → 2.5d | baseline start 2018-10-15 → 2019-01-23; baseline finish 2018-10-18 → 2019-01-28 |
| 275 | Paquetes de Diseño | 2018-10-15 → 2018-10-22 (+7d) | 2018-10-18 → 2018-10-25 (+7d) | 4.71d → 2.5d | baseline start 2018-10-15 → 2019-01-23; baseline finish 2018-10-18 → 2019-01-28 |
| 276 | **Diseño de Datos** | 2018-10-15 → 2018-10-22 (+7d) | 2018-10-19 → 2018-10-26 (+7d) | 2.21d → 0d | baseline start 2018-10-15 → 2019-01-23; baseline finish 2018-10-19 → 2019-01-30 |
| 277 | Diseño de la BD | 2018-10-15 → 2018-10-22 (+7d) | 2018-10-19 → 2018-10-26 (+7d) | 2.21d → 0d | baseline start 2018-10-15 → 2019-01-23; baseline finish 2018-10-19 → 2019-01-30 |
| 278 | **Refinar el Diseño** | 2018-09-21 → 2018-09-28 (+7d) | 2018-10-24 → 2018-10-31 (+7d) | 2.21d → 0d | baseline start 2018-09-21 → 2019-01-02; baseline finish 2018-10-24 → 2019-02-01 |
| 279 | Refinar Diagramas de Clases de Diseño | 2018-10-05 → 2018-10-12 (+7d) | 2018-10-10 → 2018-10-17 (+7d) | 9.71d → 7.5d | baseline start 2018-10-05 → 2019-01-16; baseline finish 2018-10-10 → 2019-01-18 |
| 280 | Refinar Diagramas de Colaboración | 2018-10-15 → 2018-10-22 (+7d) | 2018-10-17 → 2018-10-24 (+7d) | 6.21d → 4d | baseline start 2018-10-15 → 2019-01-23; baseline finish 2018-10-17 → 2019-01-25 |
| 281 | Refinar Diagrama de Despliegue | 2018-09-25 → 2018-10-02 (+7d) | 2018-09-26 → 2018-10-03 (+7d) | 16.71d → 14.5d | baseline start 2018-09-25 → 2019-01-03; baseline finish 2018-09-26 → 2019-01-04 |

| ID | Task | Start | Finish | Duration | Total float | Other |
| --- | --- | --- | --- | --- | --- | --- |
| 282 | Refinar Diagramas de Estado | 2018-09-21 → 2018-09-28 (+7d) | 2018-09-25 → 2018-10-02 (+7d) |  | 17.21d → 15d | baseline start 2018-09-21 → 2019-01-02; baseline finish 2018-09-25 → 2019-01-03 |
| 283 | Refinar BD | 2018-10-19 → 2018-10-26 (+7d) | 2018-10-24 → 2018-10-31 (+7d) |  | 2.21d → 0d | baseline start 2018-10-19 → 2019-01-30; baseline finish 2018-10-24 → 2019-02-01 |
| 284 | Refinar Paquetes de Diseño | 2018-10-18 → 2018-10-25 (+7d) | 2018-10-19 → 2018-10-26 (+7d) |  | 4.71d → 2.5d | baseline start 2018-10-18 → 2019-01-28; baseline finish 2018-10-19 → 2019-01-29 |
| 285 | **Workflow de Implementación y Pruebas** | 2018-10-24 → 2018-10-31 (+7d) | 2018-11-30 → 2018-12-07 (+7d) |  | 2.21d → 0d | baseline start 2018-10-24 → 2019-02-01; baseline finish 2018-11-30 → 2019-03-13 |
| 286 | Desarrollo de estructura de aplicación | 2018-10-31 → 2018-11-07 (+7d) | 2018-11-29 → 2018-12-06 (+7d) |  | 2.21d → 0d | baseline start 2018-10-31 → 2019-02-08; baseline finish 2018-11-29 → 2019-03-11 |
| 287 | Planeación de la integración de Sistemas | 2018-10-26 → 2018-11-02 (+7d) | 2018-10-31 → 2018-11-07 (+7d) |  | 2.21d → 0d | baseline start 2018-10-26 → 2019-02-05; baseline finish 2018-10-31 → 2019-02-08 |
| 288 | Plan de Pruebas | 2018-10-24 → 2018-10-31 (+7d) | 2018-10-26 → 2018-11-02 (+7d) |  | 2.21d → 0d | baseline start 2018-10-24 → 2019-02-01; baseline finish 2018-10-26 → 2019-02-05 |
| 289 | Integración de Sistemas | 2018-11-29 → 2018-12-06 (+7d) | 2018-11-30 → 2018-12-07 (+7d) |  | 2.21d → 0d | baseline start 2018-11-29 → 2019-03-11; baseline finish 2018-11-30 → 2019-03-13 |
| 290 | Ejecución de Pruebas | 2018-11-29 → 2018-12-06 (+7d) | 2018-11-30 → 2018-12-07 (+7d) |  | 2.21d → 0d | baseline start 2018-11-29 → 2019-03-11; baseline finish 2018-11-30 → 2019-03-13 |
| 291 | **Fase de Transición** | 2018-11-30 → 2018-12-07 (+7d) | 2018-12-13 → 2018-12-19 (+6d) | 6.12d → 5.42d |  | baseline start 2018-11-30 → 2019-03-13; baseline finish 2018-12-13 → 2019-03-26 |
| 292 | Instalación del Software | 2018-12-05 → 2018-12-07 (+2d) | 2018-12-06 → 2018-12-10 (+4d) |  | 3.17d → 4.67d | baseline start 2018-12-05 → 2019-03-22; baseline finish 2018-12-06 → 2019-03-25 |
| 293 | Migración | 2018-12-05 → 2018-12-07 (+2d) | 2018-12-13 → 2018-12-17 (+4d) |  | 0d → 1.42d | baseline start 2018-12-05 → 2019-03-13; baseline finish 2018-12-13 → 2019-03-19 |
| 294 | Capacitación | 2018-11-30 → 2018-12-07 (+7d) | 2018-12-05 → 2018-12-19 (+14d) |  | 3.88d → 0d | baseline start 2018-11-30 → 2019-03-19; baseline finish 2018-12-05 → 2019-03-22 |
| 295 | Comprobación de Aceptación | 2018-12-05 → 2018-12-07 (+2d) | 2018-12-07 → 2018-12-11 (+4d) |  | 2.58d → 4.08d | baseline start 2018-12-05 → 2019-03-25; baseline finish 2018-12-07 → 2019-03-26 |

## Version 8 (saved 2018-04-18, file CUATRO_Practica_(Final).mpp)

Note of the change: Final seccion 3 Parte 2

Last finish stays 2018-12-19.

Changed:

| ID | Task | Duration |
| --- | --- | --- |
| 291 | **Fase de Transición** | 5.42d → 5.42d? |
